# Resdential Building - Baseline Schedule

Schedule from Primavera P6, 2016-01-20 to 2017-11-09, data date 2014-04-14, costs in USD.

## Calendars

- Corporate Calendar: Mon-Thu 08:00-16:00; Fri off; Sat-Sun 08:00-16:00. Exceptions (off unless hours are given): 2016-05-05, 2016-07-06 to 2016-07-07, 2016-09-10 to 2016-09-12, 2016-10-02, 2016-11-30, 2016-12-03, 2016-12-11, 2017-01-01, 2017-04-22, 2017-06-27 to 2017-06-28, 2017-08-29 to 2017-08-31.
- The Employer Calendar: Mon-Thu 08:00-16:00; Fri-Sat off; Sun 08:00-16:00. Exceptions (off unless hours are given): 2016-05-05, 2016-07-06 to 2016-07-07, 2016-09-10 to 2016-09-12, 2016-10-02, 2016-11-30, 2016-12-03, 2016-12-11, 2017-01-01, 2017-04-22, 2017-06-27 to 2017-06-28, 2017-08-29 to 2017-08-31.
- 7-Day work: Mon-Sun 08:00-16:00.
- DM/Authority Calendar: Mon-Thu 08:00-16:00; Fri-Sat off; Sun 08:00-16:00. Exceptions (off unless hours are given): 2016-05-05, 2016-07-06 to 2016-07-07, 2016-09-10 to 2016-09-12, 2016-10-02, 2016-11-30, 2016-12-03, 2016-12-11, 2017-01-01, 2017-04-22, 2017-06-27 to 2017-06-28, 2017-08-29 to 2017-08-31.
- Calendar Days: Mon-Sun 08:00-16:00.

## Resources

| Resource | Group | Unit | Rate | Notes |
| --- | --- | --- | --- | --- |
| COST | equipment |  | 1 | ï»¿ |
| Helper | labor |  |  | ï»¿ |
| Aluminium Labor | labor |  |  | ï»¿ |
| Painter | labor |  |  | ï»¿ |
| Mason | labor |  |  | ? |
| Steel Works Labor | labor |  |  | ï»¿ |
| Paint | material | M2 |  | ï»¿ |
| PLUMBER | labor |  |  | ï»¿ |
| Water Proofing Labor | labor |  |  | ï»¿ |
| ELECTRICIAN | labor |  |  | ï»¿ |
| Block | material | M2 |  | ? |
| Finishings Carpenter | labor |  |  | ï»¿ |
| Doors Carpenter | labor |  |  | ï»¿ |
| Signage Labor | labor |  |  | ï»¿ |
| Shutter Carpenter | labor |  |  | ï»¿ |
| Form Work | material | M2 |  | ï»¿ |
| Steel Fixer | labor |  |  | ï»¿ |
| Steel Rebars | material | Kg |  | ï»¿ |
| AC TECHNICIAN | labor |  |  | ï»¿ |
| DUCTMAN | labor |  |  | ï»¿ |
| PIPE FITTER | labor |  |  | ï»¿ |
| Thermal Insulation Labor | labor |  |  | ï»¿ |
| Sub-Frames | material | No |  | ï»¿ |
| Plastering | material | M2 |  | ? |
| False Ceiling Fixer | labor |  |  | ï»¿ |
| Wooden Wardrobes Carpenter | labor |  |  | ï»¿ |
| Apartment Tiles | material | M2 |  | ï»¿ |
| Water Proofing | material | M2 |  | ï»¿ |
| Wet Area Tiles | material | M2 |  | ï»¿ |
| False Ceiling | material | M2 |  | ï»¿ |
| Balconies Floor Tiles | material | M2 |  | ï»¿ |
| Mirrors Labor | labor |  |  | ï»¿ |
| Glass Enclosure Labor | labor |  |  | ï»¿ |
| Kitchen Cabinet Carpenter | labor |  |  | ï»¿ |
| Vanity Counters Labor | labor |  |  | ï»¿ |
| Kerbstone Labor | labor |  |  | ï»¿ |
| Interlock Labor | labor |  |  | ï»¿ |
| Car Park Accessories Labor | labor |  |  | ï»¿ |
| Block Form Work | material | M2 |  | ï»¿ |
| Gypsum Board | material | M2 |  | ï»¿ |

## Schedule

| ID | WBS | Activity | Type | Duration | Start | Finish | Predecessors | Total float | Free float | Constraint | Calendar | Resources | Cost | TYPE OF WORK L4 |
| --- | --- | --- | --- | --- | --- | --- | --- | --- | --- | --- | --- | --- | --- | --- |
|  | 1.1 | **General** |  |  | 2016-01-20 | 2017-11-09 |  |  |  |  |  |  |  |  |
|  | 1.1.2 | **Contractual Milestones** |  |  | 2016-01-20 | 2017-11-09 |  |  |  |  |  |  |  |  |
| GRKDS1010 |  | Project Commencement | milestone | 0d | 2016-01-20 | 2016-01-20 |  | 0d |  |  | 7-Day work |  |  |  |
| GRKDS1033 |  | TOC | milestone | 0d | 2017-11-09 | 2017-11-09 | GRIMS1070, GRIMS1080, HODOCCL10, HODOCMP20, HODOCCV10, HODOCMP10, ATDEW1180, CNF04FN51, CNF05FN51, CNF06FN51, CNF07FN51, CNF08FN51, CNF09FN51, CNF10FN51, CNF11FN51, CNF12FN51, CNF13FN51, CNF14FN51, CNF15FN51, CNF16FN51, CNF17FN48, CNF18FN48, CNF19FN48, CNGF0FN73, CNP01FN70, CNP02FN22, CNP03FN22, GRKDS1020, GRKDS1030, HODOCCV11, GRKDS1000 FF, GRKDS1032 FF, CNGF0FN23, CNGF0FN29, ATDCD1030, ENCMSPR53, CNEXWLV52, GRIMS1030 FS+30d, GRIMS1040 FS+30d, CNEXWLO22 FS+30d, CNEXWLO28 FS+28d, CNEXWLO39 FS+26d, CNEXWLO55 FS+24d, CNEXWLO68 FS+22d, CNEXWLO77 FS+20d, CNEXWLO86 FS+18d, CNEXWLO92 FS+16d, CNEXWLO93 FS+14d, CNEXWLO98 FS+12d, CNEXWLO103 FS+10d, CNEXWLO104 FS+8d, CNEXWLO107 FS+6d, CNEXWLO110 FS+4d, CNEXWLO115 FS+2d, CNEXWLO116, CNEXWLV57, CNFCTE117, CNGF0FN16, CNGF0FN57, CNGF0FN84, CNGF0FN40, CNGF0FN83, CNEXWLV54, CNEXWLV51, CNEXWLV53, CNGF0FN43, CNGF0FN49, CNGF0FN39, CNEXWLV58, CNFCWE117, CNGF0FN48, CNGF0FN82, CNGF0FN42, CNROFUR17, CNEXWLS20 FS+20d, CNEXWLS17 FS+20d, CNEXWLS10 FS+20d, CNGF0FN33, CNGF0FN36, CNGF0FN38, ATDEW1240, CNEXWLS16, CNGF0MP61, GREQPMP28, GREQPMP16, CNGF0MP73, GREQPMP23, GREQPMP14, CNROFMP15, AT0DM1030, ATDEW1150, GREQPMP22, GREQPMP18, GREQPMP20, GREQPMP13, GREQPMP15, GREQPMP21, GREQPMP10, GREQPMP11, AT0SP1130, GREQPMP12, GRKDS1040, ATDEW1190, GRKDS1070, GRKDS2000 FF, CNF19FN93, CNF18FN93, CNF17FN93, CNF16FN93, CNF15FN93, CNF14FN93, CNF13FN93, CNF12FN93, CNF11FN93, CNF10FN93, CNF09FN93, CNF08FN93, CNF07FN93, CNF06FN93, CNF05FN93, CNF04FN52, CNFCWE190 | 0d |  | mandatory finish 2017-11-09 | 7-Day work |  |  |  |
|  | 1.1.1 | **Project Duration** |  |  | 2016-01-20 | 2017-11-09 |  |  |  |  |  |  |  |  |
| GRKDS1000 |  | Completion of Whole Works (Hammock) | level of effort | 660d | 2016-01-20 | 2017-11-09 | GRKDS1010 SS | 0d |  |  | 7-Day work |  |  | B1-GNR |
| GRKDS2000 |  | DCD Certificate (Hammock) | level of effort | 43d | 2017-09-28 | 2017-11-09 | GRKDS1050 | 0d |  |  | 7-Day work |  |  |  |
|  | 1.1.3 | **Interim Milestones** |  |  | 2016-04-12 | 2017-10-18 |  |  |  |  |  |  |  |  |
| GRIMS1000 |  | Erection of Tower Crane | milestone | 0d | 2016-04-12 | 2016-04-12 | CNSUB1160 | 17d |  |  | 7-Day work |  |  |  |
| GRKDS1020 |  | Sub-Structure Completion | milestone | 0d | 2016-04-25 | 2016-04-25 | CNSUB1180 | 6d | 0d |  | 7-Day work |  |  |  |
| GRIMS1010 |  | Hoist Erection | milestone | 0d | 2016-06-29 | 2016-06-29 | CNP03CW20 | 23d |  |  | 7-Day work |  |  |  |
| GRIMS1020 |  | Erection of Temporary Garbage Chute | milestone | 0d | 2016-09-18 | 2016-09-18 | CNF04FN27 | 0d |  |  | 7-Day work |  |  |  |
| GRKDS1030 |  | Skeleton Completion | milestone | 0d | 2017-03-30 | 2017-03-30 | CNROFCW40, GRKDS1020, GRMOB1010 FS+8d | 6d | 0d |  |  |  |  |  |
| GRIMS1030 |  | Construction Usage Lift | milestone | 0d | 2017-06-21 | 2017-06-21 | CNSPECS11, GRIMS1050 | 10d | 0d |  | 7-Day work |  |  |  |
| GRIMS1040 |  | Removal of Tower Crane | milestone | 0d | 2017-06-21 | 2017-06-21 | GRIMS1050, CNSBMU10, CNSPECS11, GREQPMP11, GREQPMP12, GREQPMP10 | 10d | 0d |  | 7-Day work |  |  |  |
| GRIMS1050 |  | Removal of Hoist | milestone | 0d | 2017-06-21 | 2017-06-21 | CNSPECS11 | 10d | 0d |  | 7-Day work |  |  |  |
| GRIMS1060 |  | Removal of Temporary Garbage Chute | milestone | 0d | 2017-08-24 | 2017-08-24 | CNF19FN37, CNF19FN27, CNF19FN24 | 17d |  |  | 7-Day work |  |  |  |
| GRKDS1040 |  | Completion of Sub-Station Electrical Installation | milestone | 0d | 2017-09-07 | 2017-09-07 | ATDEW1190 | 13d | 3d |  | 7-Day work |  |  |  |
| GRIMS1070 |  | Connection of Water Supply | milestone | 0d | 2017-09-17 | 2017-09-17 | ATDCD1030 FS+7d, ATDEW1240 | 53d |  |  | 7-Day work |  |  |  |
| GRIMS1080 |  | Connection of Drainage Network | milestone | 0d | 2017-09-17 | 2017-09-17 | AT0DM1030 | 53d |  |  | 7-Day work |  |  |  |
| GRKDS1032 |  | Access to FF&E | milestone | 0d | 2017-09-20 | 2017-09-20 | HODOCFR10 | 50d |  |  | 7-Day work |  |  |  |
| GRKDS1050 |  | DCD Completion Certificate | milestone | 0d | 2017-09-27 | 2017-09-27 | ATDCD1023 FS+3d | 0d |  |  | 7-Day work |  |  |  |
| GRKDS1070 |  | BCC | milestone | 0d | 2017-10-18 | 2017-10-18 | ATDCD1042 FS+3d | 22d |  |  | 7-Day work |  |  |  |
|  | 1.1.4 | **Mobilization** |  |  | 2016-01-20 | 2016-02-23 |  |  |  |  |  |  |  |  |
| GRMOB1010 |  | Mobilization |  | 30d | 2016-01-20 | 2016-02-23 | GRKDS1010 SS | 42d |  |  |  | COST [1610000 h]; Helper [2400 h] | 1,610,000 | B1-GNR |

| ID | WBS | Activity | Type | Duration | Start | Finish | Predecessors | Total float | Free float | Calendar |
| --- | --- | --- | --- | --- | --- | --- | --- | --- | --- | --- |
|  | 1.3 | **Engineering & Procurement** |  |  | 2016-02-08 | 2017-07-31 |  |  |  |  |
|  | 1.1.2 | **PS Items** |  |  | 2016-02-08 | 2017-07-19 |  |  |  |  |
| ENCMSRA50 |  | Concrete Mix Design for slabs and columns |  | 14d | 2016-03-02 | 2016-03-21 | ENCMSPP50 | 35d |  | The Employer Calendar |
| ENCMSRA51 |  | Block |  | 14d | 2016-05-01 | 2016-05-19 | ENCMSPP51 | 22d | 0d | The Employer Calendar |
| ENCMSRA52 |  | Epoxy Primer Paint |  | 14d | 2016-05-30 | 2016-06-16 | ENCMSPP52 | 15d | 0d | The Employer Calendar |
| ENCMSRA53 |  | Wall Painting for Apartments |  | 14d | 2016-06-19 | 2016-07-10 | ENCMSPP53 | 24d | 0d | The Employer Calendar |
| ENCMSRA54 |  | Gypsum Board for Ceiling |  | 14d | 2016-08-21 | 2016-09-07 | ENCMSPP54 | 11d | 0d | The Employer Calendar |
| ENCMSRA57 |  | Emulsion Paint for Balconies Ceiling |  | 14d | 2016-08-21 | 2016-09-07 | ENCMSPP57 | 33d | 0d | The Employer Calendar |
| ENCMSRA55 |  | False Ceiling for Wet Areas |  | 14d | 2016-09-14 | 2016-10-04 | ENCMSPP55 | 44d | 0d | The Employer Calendar |
| ENCMSRA56 |  | Water Proofing for Wet Areas |  | 14d | 2016-09-22 | 2016-10-12 | ENCMSPP56 | 50d | 0d | The Employer Calendar |
| EN0PSMT68 |  | Garbage Chute System |  | 14d | 2017-03-12 | 2017-03-29 | EN0PSMT36 | 22d | 0d | The Employer Calendar |
| ENCMSRA58 |  | Parking Paint |  | 14d | 2017-04-17 | 2017-05-04 | ENCMSPP58 | 13d | 0d | The Employer Calendar |
| ENCMSRA59 |  | Car Park Accessories |  | 14d | 2017-06-12 | 2017-07-03 | ENCMSPP59 | 13d | 0d | The Employer Calendar |
|  | 1 | **Nominations** |  |  | 2016-02-08 | 2017-03-30 |  |  |  |  |
| EN0PSNM23 |  | MEP Works | milestone | 0d | 2016-02-08 | 2016-02-08 | CNSUB1020 | 22d |  | The Employer Calendar |
| EN0PSNM16 |  | Conveying System | milestone | 0d | 2016-04-13 | 2016-04-13 | CNSUB1170 | 8d |  | The Employer Calendar |
| EN0PSNM12 |  | Aluminum and Glazing Works | milestone | 0d | 2016-05-24 | 2016-05-24 | CNP01CW20, GRKDS1020 | 22d | 0d | The Employer Calendar |
| EN0PSNM29 |  | ID Selection for Corridor Finishes | milestone | 0d | 2016-06-29 | 2016-06-29 | CNP03CW20 | 47d | 0d | The Employer Calendar |
| EN0PSNM74 |  | Sanitary Ware | milestone | 0d | 2016-08-17 | 2016-08-17 | CNF06CW20 | 60d | 0d | The Employer Calendar |
| EN0PSNM11 |  | ID Works | milestone | 0d | 2016-08-18 | 2016-08-18 | CNP02CW55 FS+50d | 43d | 0d | The Employer Calendar |
| EN0PSNM14 |  | Carpentry & Joinery | milestone | 0d | 2016-09-20 | 2016-09-20 | CNF08CW20 | 11d | 0d | The Employer Calendar |
| EN0PSNM18 |  | Ironmongeries | milestone | 0d | 2016-11-28 | 2016-11-28 | CNF12CW50 | 29d | 0d | The Employer Calendar |
| EN0PSNM13 |  | Steel Works | milestone | 0d | 2017-01-25 | 2017-01-25 | CNF16CW20 | 33d | 0d | The Employer Calendar |
| EN0PSNM19 |  | Swimming Pool | milestone | 0d | 2017-02-15 | 2017-02-15 | CNF17CW18 | 54d | 0d | The Employer Calendar |
| EN0PSNM15 |  | Landscaping Works | milestone | 0d | 2017-02-22 | 2017-02-22 | CNF18CW20 | 12d | 0d | The Employer Calendar |
| EN0PSNM22 |  | Main Kitchen Equipment | milestone | 0d | 2017-02-22 | 2017-02-22 | CNF18CW20 | 20d | 0d | The Employer Calendar |
| EN0PSNM10 |  | Facade Lighting System | milestone | 0d | 2017-03-30 | 2017-03-30 | CNROFCW40 | 51d | 0d | The Employer Calendar |

| ID | WBS | Activity | Duration | Start | Finish | Predecessors | Total float | Free float |
| --- | --- | --- | --- | --- | --- | --- | --- | --- |
|  | 2 | **Shop Drawings** |  | 2016-04-05 | 2017-07-03 |  |  |  |
|  | 2 | **Submittals** |  | 2016-04-05 | 2017-06-11 |  |  |  |
|  | 1 | **MEP** |  | 2016-04-05 | 2017-05-07 |  |  |  |
|  | 1 | **General** |  | 2016-04-13 | 2016-12-10 |  |  |  |
| EN0PSPP90 |  | Ground Floor Coordination Drawings | 14d | 2016-04-13 | 2016-04-28 | CNSUB1160, EN0PSNM23 | 48d | 1d |
| EN0PSPP91 |  | Podium Floor Coordination Drawings | 14d | 2016-04-13 | 2016-04-28 | CNSUB1160, EN0PSNM23 | 58d | 1d |
| EN0PSPP89 |  | Typical Floor Coordination Drawings | 14d | 2016-08-03 | 2016-08-18 | CNF05CW20, EN0PSNM23 | 10d | 1d |
| EN0PSPP100 |  | LV Cables And Wires | 14d | 2016-11-22 | 2016-12-10 | CNF12CW20, EN0PSNM23 | 130d | 0d |
| EN0PSPP101 |  | Access Control System (High Level) | 14d | 2016-11-22 | 2016-12-10 | CNF12CW20, EN0PSNM23 | 106d | 0d |
| EN0PSPP102 |  | Access Control System (Final Fix) | 14d | 2016-11-22 | 2016-12-10 | CNF12CW20, EN0PSNM23 | 92d | 0d |
| EN0PSPP92 |  | Roof Floor Coordination Drawings | 14d | 2016-11-22 | 2016-12-10 | CNF12CW20, EN0PSNM23 | 130d | 0d |
| EN0PSPP96 |  | Bus Bar System | 14d | 2016-11-22 | 2016-12-10 | CNF12CW20, EN0PSNM23 | 89d | 0d |
| EN0PSPP97 |  | Central Battery System ( High Level) | 14d | 2016-11-22 | 2016-12-10 | CNF12CW20, EN0PSNM23 | 130d | 0d |
| EN0PSPP98 |  | Central Battery System ( Final Fix) | 14d | 2016-11-22 | 2016-12-10 | CNF12CW20, EN0PSNM23 | 95d | 0d |
| EN0PSPP99 |  | Air Craft Warning Light | 14d | 2016-11-22 | 2016-12-10 | CNF12CW20, EN0PSNM23 | 130d | 0d |
|  | 1.2 | **HVAC** |  | 2016-04-26 | 2017-03-11 |  |  |  |
| EN0PSPP83 |  | Ground Floor Plan HVAC Layout | 14d | 2016-04-26 | 2016-05-12 | GRKDS1020, EN0PSNM23 | 37d | 1d |
| EN0PSPP84 |  | Podium Floor Plan HVAC Layout | 14d | 2016-04-26 | 2016-05-12 | GRKDS1020, EN0PSNM23 | 47d | 1d |
| EN0PSPP85 |  | Typical Floor Plan HVAC Layout | 14d | 2016-08-03 | 2016-08-18 | CNF05CW20, EN0PSNM23 | 10d | 1d |
| EN0PSPP88 |  | ETS & Chilled Water Pump Room Layout | 14d | 2016-12-26 | 2017-01-11 | EN0PSNM23, AT0SP1040, CNF14CW20 | 10d | 0d |
| EN0PSPP86 |  | Roof Floor Plan HVAC Layout | 14d | 2017-02-23 | 2017-03-11 | CNF12CW50, EN0PSNM23, CNF18CW20 | 54d | 0d |
| EN0PSPP87 |  | Upper Roof Floor Plan HVAC Layout | 14d | 2017-02-23 | 2017-03-11 | CNF12CW50, EN0PSNM23, CNF18CW20 | 54d | 0d |
|  | 1.3 | **Electrical** |  | 2016-04-13 | 2016-10-30 |  |  |  |
| EN0PSPP47 |  | Ground Floor Plan Lighting Layout | 14d | 2016-04-13 | 2016-04-28 | CNSUB1160, EN0PSNM23 | 48d | 1d |
| EN0PSPP52 |  | Ground Floor Plan Structured Cabling Layout | 14d | 2016-04-13 | 2016-04-28 | CNSUB1160, EN0PSNM23 | 48d | 1d |
| EN0PSPP57 |  | Ground Floor Plan Fire Alarm Layout | 14d | 2016-04-13 | 2016-04-28 | CNSUB1160, EN0PSNM23 | 48d | 1d |
| EN0PSPP62 |  | Ground Floor Plan Emergency Lighting Layout | 14d | 2016-04-13 | 2016-04-28 | CNSUB1160, EN0PSNM23 | 48d | 1d |
| EN0PSPP67 |  | Ground Floor Plan CCTV Layout | 14d | 2016-04-13 | 2016-04-28 | CNSUB1160, EN0PSNM23 | 48d | 1d |
| EN0PSPP93 |  | Ground Floor Plan Power Layout | 14d | 2016-04-13 | 2016-04-28 | CNSUB1160, EN0PSNM23 | 48d | 1d |
| EN0PSPP48 |  | Podium Floor Plan Lighting Layout | 14d | 2016-05-25 | 2016-06-09 | CNP01CW20, EN0PSNM23 | 23d | 1d |
| EN0PSPP53 |  | Podium Plan Structured Cabling Layout | 14d | 2016-05-25 | 2016-06-09 | CNP01CW20, EN0PSNM23 | 23d | 1d |
| EN0PSPP58 |  | Podium Floor Plan Fire Alarm Layout | 14d | 2016-05-25 | 2016-06-09 | CNP01CW20, EN0PSNM23 | 23d | 1d |
| EN0PSPP63 |  | Podium Floor Plan Emergency Lighting Layout | 14d | 2016-05-25 | 2016-06-09 | CNP01CW20, EN0PSNM23 | 23d | 1d |
| EN0PSPP68 |  | Podium Floor Plan CCTV Layout | 14d | 2016-05-25 | 2016-06-09 | CNP01CW20, EN0PSNM23 | 23d | 1d |
| EN0PSPP94 |  | Podium Floor Plan Power Layout | 14d | 2016-05-25 | 2016-06-09 | CNP01CW20, EN0PSNM23 | 23d | 1d |
| EN0PSPP41 |  | Typical Floor Plan CCTV Layout | 14d | 2016-06-30 | 2016-07-18 | CNP03CW20, EN0PSNM23 | 37d | 0d |
| EN0PSPP44 |  | Typical Floor Plan power Layout | 14d | 2016-06-30 | 2016-07-18 | CNP03CW20, EN0PSNM23 | 37d | 0d |
| EN0PSPP49 |  | Typical Floor Plan Lighting Layout | 14d | 2016-06-30 | 2016-07-18 | CNP03CW20, EN0PSNM23 | 37d | 0d |
| EN0PSPP54 |  | Typical Floor Plan Structured Cabling Layout | 14d | 2016-06-30 | 2016-07-18 | CNP03CW20, EN0PSNM23 | 37d | 0d |
| EN0PSPP59 |  | Typical Floor Plan Fire Alarm Layout | 14d | 2016-06-30 | 2016-07-18 | CNP03CW20, EN0PSNM23 | 37d | 0d |
| EN0PSPP64 |  | Typical Floor Plan Emergency Lighting Layout | 14d | 2016-06-30 | 2016-07-18 | CNP03CW20, EN0PSNM23 | 37d | 0d |
| EN0PSPP42 |  | Roof Floor Plan CCTV Layout | 14d | 2016-10-15 | 2016-10-30 | CNF09CW50, EN0PSNM23 | 44d | 0d |
| EN0PSPP43 |  | Upper Roof Floor Plan CCTV Layout | 14d | 2016-10-15 | 2016-10-30 | CNF09CW50, EN0PSNM23 | 44d | 0d |
| EN0PSPP45 |  | Roof Floor Plan Power Layout | 14d | 2016-10-15 | 2016-10-30 | CNF09CW50, EN0PSNM23 | 56d | 0d |
| EN0PSPP46 |  | Upper Roof Floor Plan Power Layout | 14d | 2016-10-15 | 2016-10-30 | CNF09CW50, EN0PSNM23 | 56d | 0d |
| EN0PSPP50 |  | Roof Floor Plan Lighting Layout | 14d | 2016-10-15 | 2016-10-30 | CNF09CW50, EN0PSNM23 | 56d | 0d |
| EN0PSPP51 |  | Upper Roof Floor Plan Lighting Layout | 14d | 2016-10-15 | 2016-10-30 | CNF09CW50, EN0PSNM23 | 56d | 0d |
| EN0PSPP55 |  | Roof Floor Plan Structured Cabling Layout | 14d | 2016-10-15 | 2016-10-30 | CNF09CW50, EN0PSNM23 | 44d | 0d |
| EN0PSPP60 |  | Roof Floor Plan Fire Alarm Layout | 14d | 2016-10-15 | 2016-10-30 | CNF09CW50, EN0PSNM23 | 48d | 0d |
| EN0PSPP65 |  | Roof Floor Plan Emergency Lighting Layout | 14d | 2016-10-15 | 2016-10-30 | CNF09CW50, EN0PSNM23 | 56d | 0d |

| ID | WBS | Activity | Duration | Start | Finish | Predecessors | Total float | Free float |
| --- | --- | --- | --- | --- | --- | --- | --- | --- |
|  | 1.4 | **Plumbing** |  | 2016-04-05 | 2017-03-11 |  |  |  |
| EN0PSPP73 |  | Ground Floor Drainage Layout | 14d | 2016-04-05 | 2016-04-20 | CNSUB1095, ATDEW1010, EN0PSNM23 | 55d | 0d |
| EN0PSPP78 |  | Ground Floor-Water Supply Layout | 14d | 2016-04-05 | 2016-04-20 | CNSUB1095, EN0PSNM23, ATDEW1010 | 55d | 0d |
| EN0PSPP74 |  | Podium Floor Drainage Layout | 14d | 2016-05-14 | 2016-05-29 | CNGF0CW17, ATDEW1010, EN0PSNM23 | 33d | 0d |
| EN0PSPP79 |  | Podium Floor Water Supply Layout | 14d | 2016-05-14 | 2016-05-29 | CNGF0CW17, ATDEW1010, EN0PSNM23 | 33d | 0d |
| EN0PSPP75 |  | Typical Floor Drainage Layout | 14d | 2016-06-30 | 2016-07-18 | CNP03CW20, ATDEW1010, EN0PSNM23 | 37d | 0d |
| EN0PSPP80 |  | Typical Floor Water Supply Layout | 14d | 2016-06-30 | 2016-07-18 | CNP03CW20, ATDEW1010, EN0PSNM23 | 37d | 0d |
| EN0PSPP76 |  | Roof Floor Drainage Layout | 14d | 2017-02-23 | 2017-03-11 | CNF14CW20, ATDEW1010, EN0PSNM23, CNF18CW20 | 54d | 0d |
| EN0PSPP77 |  | Upper Roof Floor Drainage Layout | 14d | 2017-02-23 | 2017-03-11 | CNF14CW20, EN0PSNM23, ATDEW1010, CNF18CW20 | 54d | 0d |
| EN0PSPP81 |  | Roof Floor Water Supply Layout | 14d | 2017-02-23 | 2017-03-11 | CNF14CW20, EN0PSNM23, ATDEW1010, CNF18CW20 | 54d | 0d |
| EN0PSPP82 |  | Upper Roof Floor Water Supply Layout | 14d | 2017-02-23 | 2017-03-11 | CNF14CW20, ATDEW1010, EN0PSNM23, CNF18CW20 | 54d | 0d |
|  | 1.5 | **Fire Fighting** |  | 2016-04-13 | 2016-10-08 |  |  |  |
| EN0PSPP69 |  | Ground Floor- Fire Fighting Layout | 14d | 2016-04-13 | 2016-04-28 | CNSUB1160, EN0PSNM23 | 48d | 1d |
| EN0PSPP70 |  | Typical Floor Fire Fighting Layout | 14d | 2016-06-30 | 2016-07-18 | CNP03CW20, EN0PSNM23 | 37d | 0d |
| EN0PSPP71 |  | Roof Floor Fire Fighting Layout | 14d | 2016-09-21 | 2016-10-08 | CNF08CW20, EN0PSNM23 | 67d | 0d |
| EN0PSPP72 |  | Upper Roof Floor Fire Fighting Layout | 14d | 2016-09-21 | 2016-10-08 | CNF08CW20, EN0PSNM23 | 67d | 0d |
|  | 8 | **Fire Alarm** |  | 2016-04-13 | 2016-10-08 |  |  |  |
| EN0PSPP01 |  | Ground Floor- Fire Alarm Layout | 14d | 2016-04-13 | 2016-04-28 | CNSUB1160, EN0PSNM23 | 48d | 1d |
| EN0PSPP04 |  | Typical Floor Fire Alarm Layout | 14d | 2016-06-30 | 2016-07-18 | CNP03CW20, EN0PSNM23 | 37d | 0d |
| EN0PSPP02 |  | Upper Roof Floor Fire Alarm Layout | 14d | 2016-09-21 | 2016-10-08 | CNF08CW20, EN0PSNM23 | 67d | 0d |
| EN0PSPP03 |  | Roof Floor Fire Alarm Layout | 14d | 2016-09-21 | 2016-10-08 | CNF08CW20, EN0PSNM23 | 67d | 0d |
|  | 1.1.6.1.4.9 | **Facade Ligting System** |  | 2017-04-20 | 2017-05-07 |  |  |  |
| EN0PSPP10 |  | Shop Drawing For Facade Lighting | 14d | 2017-04-20 | 2017-05-07 | EN0PSNM10 FS+14d | 61d | 0d |
|  | 1.1.6.1.4.2 | **Aluminum and Glazing Works** |  | 2016-05-25 | 2017-04-16 |  |  |  |
| EN0PSPP12 |  | Aluminum Louver Doors | 14d | 2016-05-25 | 2016-06-09 | EN0PSNM12, GRKDS1020 | 26d | 1d |
| EN0PSPP40 |  | Shop Drawing For External Aluminum Cladding | 14d | 2016-06-13 | 2016-06-28 | EN0PSNM12, CNP02CW20 | 32d | 0d |
| EN0PSPP15 |  | Shop Drawing For Balcony Handrails | 14d | 2016-06-14 | 2016-06-29 | EN0PSNM12 FF, EN0PSNM12 FS+14d | 52d | 0d |
| EN0PSPP11 |  | Aluminum Doors | 14d | 2016-06-20 | 2016-07-05 | EN0PSNM12 FS+14d, CNP02CW55 | 31d | 1d |
| EN0PSPP13 |  | Shop Drawing For Glass Doors | 14d | 2016-12-26 | 2017-01-11 | EN0PSNM12 FS+14d, CNF14CW20 | 18d | 0d |
| EN0PSPP14 |  | Shop Drawing For Revolving Door | 14d | 2017-04-01 | 2017-04-16 | EN0PSNM12 FS+14d, GRKDS1030 | 32d | 0d |

| ID | WBS | Activity | Duration | Start | Finish | Predecessors | Total float | Free float |
| --- | --- | --- | --- | --- | --- | --- | --- | --- |
|  | 1.1.6.1.4.4 | **Carpentry and Jointry Works** |  | 2016-10-12 | 2017-05-18 |  |  |  |
| EN0PSPP16 |  | Shop Drawing For Wardrobes | 14d | 2016-10-12 | 2016-10-27 | EN0PSNM14 FS+14d | 23d | 1d |
| EN0PSPP17 |  | Shop Drawing For Kitchen Cabinets | 14d | 2016-10-12 | 2016-10-27 | EN0PSNM14 FS+14d | 20d | 1d |
| EN0PSPP19 |  | Shop Drawing For Timber Doors | 14d | 2016-10-12 | 2016-10-27 | EN0PSNM14 FS+14d | 13d | 1d |
| EN0PSPP18 |  | Shop Drawing For Vanity Counters | 14d | 2016-11-22 | 2016-12-10 | EN0PSNM14 FS+14d, CNF12CW20 | 35d | 0d |
| EN0PSPP24 |  | Shop Drawing For Mirrors | 14d | 2017-01-26 | 2017-02-11 | EN0PSNM14 FS+14d, CNF16CW20 | 38d | 0d |
| EN0PSPP95 |  | Shop Drawing For Reception Counter | 14d | 2017-05-03 | 2017-05-18 | EN0PSNM11 FS+14d, CNGF0FN17 | 23d | 1d |
|  | 1.1.6.1.4.5 | **Landscaping Works** |  | 2017-03-15 | 2017-03-30 |  |  |  |
| EN0PSPP20 |  | Shop Drawing For Hard Landscaping Works-Paving At G Floor | 14d | 2017-03-15 | 2017-03-30 | EN0PSNM15 FS+14d | 14d | 1d |
| EN0PSPP21 |  | Shop Drawing For Hard Landscaping Works-Paving At 4th Floor | 14d | 2017-03-15 | 2017-03-30 | EN0PSNM15 FS+14d | 14d | 1d |
| EN0PSPP22 |  | Shop Drawing For Planter Wall Coping & Facing Stones | 14d | 2017-03-15 | 2017-03-30 | EN0PSNM15 FS+14d | 39d | 1d |
| EN0PSPP23 |  | Shop Drawing For The Soft Scaping Works | 14d | 2017-03-15 | 2017-03-30 | EN0PSNM15 FS+14d | 38d | 1d |
|  | 1.1.6.1.4.3 | **Conveying System** |  | 2016-09-21 | 2016-10-08 |  |  |  |
| EN0PSPP25 |  | Elevator | 14d | 2016-09-21 | 2016-10-08 | EN0PSNM16 FS+14d, CNF08CW20 | 8d | 0d |
|  | 1.1.6.1.4.8 | **ID Works** |  | 2016-07-23 | 2017-04-16 |  |  |  |
| EN0PSPP200 |  | Shop Drawing For Typical Corridor Ceiling | 14d | 2016-07-23 | 2016-08-07 | EN0PSNM29 FS+14d | 56d | 0d |
| EN0PSPP201 |  | Shop Drawing For Typical Corridor Walls | 14d | 2016-07-23 | 2016-08-07 | EN0PSNM29 FS+14d | 85d | 0d |
| EN0PSPP32 |  | Shop Drawing For Typical Corridor Flooring | 14d | 2016-08-18 | 2016-09-03 | EN0PSNM29 FS+14d, CNF06CW20 | 83d | 0d |
| EN0PSPP27 |  | Shop Drawing For Gym Flooring | 14d | 2016-09-08 | 2016-09-27 | EN0PSNM11 FS+14d | 51d | 0d |
| EN0PSPP31 |  | Entrance Canopy | 14d | 2017-02-23 | 2017-03-11 | EN0PSNM11 FS+14d, CNF18CW20 | 28d | 0d |
| EN0PSPP28 |  | Shop Drawing For Gym Equipments | 14d | 2017-03-16 | 2017-04-01 | EN0PSNM11 FS+14d, CNF19CW50 | 36d | 0d |
| EN0PSPP29 |  | Shop Drawing For Steam Rooms | 14d | 2017-04-01 | 2017-04-16 | EN0PSNM11 FS+14d, GRKDS1030 | 35d | 0d |
| EN0PSPP30 |  | Shop Drawing For Sauna Rooms | 14d | 2017-04-01 | 2017-04-16 | EN0PSNM11 FS+14d, GRKDS1030 | 35d | 0d |
|  | 2 | **Steel Doors** |  | 2017-02-15 | 2017-03-02 |  |  |  |
| EN0PSPP33 |  | Shop Drawing For Steel Doors | 14d | 2017-02-15 | 2017-03-02 | EN0PSNM13 FS+14d | 40d | 1d |

| ID | WBS | Activity | Duration | Start | Finish | Predecessors | Total float | Free float | Calendar |
| --- | --- | --- | --- | --- | --- | --- | --- | --- | --- |
|  | 3 | **Swimming Pool** |  | 2017-03-08 | 2017-03-23 |  |  |  |  |
| EN0PSPP34 |  | Shop Drawing For Swimming Pool | 14d | 2017-03-08 | 2017-03-23 | EN0PSNM19 FS+14d | 64d | 1d |  |
|  | 5 | **Pavement Parking Paint** |  | 2017-04-01 | 2017-04-16 |  |  |  |  |
| EN0PSPP36 |  | Shop Drawing For Parking Paint | 14d | 2017-04-01 | 2017-04-16 | GRKDS1030 | 14d | 0d |  |
|  | 7 | **Car park accessories layout** |  | 2017-05-27 | 2017-06-11 |  |  |  |  |
| EN0PSPP38 |  | Shop Drawing For Car Park Accessories | 14d | 2017-05-27 | 2017-06-11 | CNP01FN100 | 16d | 0d |  |
|  | 6 | **Main Kitchen** |  | 2017-03-15 | 2017-03-30 |  |  |  |  |
| EN0PSPP37 |  | Shop Drawing For Main Kitchen | 14d | 2017-03-15 | 2017-03-30 | EN0PSNM22 FS+14d | 72d | 1d |  |
|  | 1 | **Review and Approval** |  | 2016-04-21 | 2017-07-03 |  |  |  |  |
|  | 1 | **MEP** |  | 2016-04-21 | 2017-05-25 |  |  |  |  |
|  | 1 | **General** |  | 2016-05-01 | 2016-12-29 |  |  |  |  |
| EN0PSRA81 |  | Ground Floor Coordination Drawings | 14d | 2016-05-01 | 2016-05-19 | EN0PSPP90 | 39d | 36d | The Employer Calendar |
| EN0PSRA82 |  | Podium Floor Coordination Drawings | 14d | 2016-05-01 | 2016-05-19 | EN0PSPP91 | 47d | 43d | The Employer Calendar |
| EN0PSRA80 |  | Typical Floor Coordination Drawings | 14d | 2016-08-21 | 2016-09-07 | EN0PSPP89 | 8d | 1d | The Employer Calendar |
| EN0PSPP103 |  | Bus Bar System | 14d | 2016-12-12 | 2016-12-29 | EN0PSPP96 | 74d | 0d | The Employer Calendar |
| EN0PSPP104 |  | Central Battery System ( High Level) | 14d | 2016-12-12 | 2016-12-29 | EN0PSPP97 | 109d | 0d | The Employer Calendar |
| EN0PSPP105 |  | Central Battery System ( Final Fix) | 14d | 2016-12-12 | 2016-12-29 | EN0PSPP98 | 79d | 0d | The Employer Calendar |
| EN0PSPP106 |  | Air Craft Warning Light | 14d | 2016-12-12 | 2016-12-29 | EN0PSPP99 | 109d | 0d | The Employer Calendar |
| EN0PSPP107 |  | LV Cables And Wires | 14d | 2016-12-12 | 2016-12-29 | EN0PSPP100 | 109d | 0d | The Employer Calendar |
| EN0PSPP108 |  | Access Control System (High Level) | 14d | 2016-12-12 | 2016-12-29 | EN0PSPP101 | 88d | 0d | The Employer Calendar |
| EN0PSPP109 |  | Access Control System (Final Fix) | 14d | 2016-12-12 | 2016-12-29 | EN0PSPP102 | 77d | 0d | The Employer Calendar |
| EN0PSRA83 |  | Roof Floor Coordination Drawings | 14d | 2016-12-12 | 2016-12-29 | EN0PSPP92 | 109d | 74d | The Employer Calendar |
|  | 1.2 | **HVAC** |  | 2016-05-15 | 2017-03-29 |  |  |  |  |
| EN0PSRA74 |  | Ground Floor Plan HVAC Layout | 14d | 2016-05-15 | 2016-06-01 | EN0PSPP83 | 30d | 27d | The Employer Calendar |
| EN0PSRA75 |  | Podium Floor Plan HVAC Layout | 14d | 2016-05-15 | 2016-06-01 | EN0PSPP84 | 38d | 34d | The Employer Calendar |
| EN0PSRA76 |  | Typical Floor Plan HVAC Layout | 14d | 2016-08-21 | 2016-09-07 | EN0PSPP85 | 8d | 1d | The Employer Calendar |
| EN0PSRA79 |  | ETS & Chilled Water Pump Room Layout | 14d | 2017-01-12 | 2017-01-31 | EN0PSPP88 | 8d | 0d | The Employer Calendar |
| EN0PSRA77 |  | Roof Floor Plan HVAC Layout | 14d | 2017-03-12 | 2017-03-29 | EN0PSPP86 | 46d | 11d | The Employer Calendar |
| EN0PSRA78 |  | Upper Roof Floor Plan HVAC Layout | 14d | 2017-03-12 | 2017-03-29 | EN0PSPP87 | 46d | 11d | The Employer Calendar |

| ID | WBS | Activity | Duration | Start | Finish | Predecessors | Total float | Free float | Calendar |
| --- | --- | --- | --- | --- | --- | --- | --- | --- | --- |
|  | 1.3 | **Electrical** |  | 2016-05-01 | 2016-11-17 |  |  |  |  |
| EN0PSRA47 |  | Ground Floor Plan Lighting Layout | 14d | 2016-05-01 | 2016-05-19 | EN0PSPP47 | 39d | 36d | The Employer Calendar |
| EN0PSRA52 |  | Ground Floor Plan Structured Cabling Layout | 14d | 2016-05-01 | 2016-05-19 | EN0PSPP52 | 39d | 36d | The Employer Calendar |
| EN0PSRA56 |  | Ground Floor Plan Fire Alarm Layout | 14d | 2016-05-01 | 2016-05-19 | EN0PSPP57 | 39d | 36d | The Employer Calendar |
| EN0PSRA60 |  | Ground Floor Plan Emergency Lighting Layout | 14d | 2016-05-01 | 2016-05-19 | EN0PSPP62 | 39d | 36d | The Employer Calendar |
| EN0PSRA64 |  | Ground Floor Plan CCTV Layout | 14d | 2016-05-01 | 2016-05-19 | EN0PSPP67 | 39d | 36d | The Employer Calendar |
| EN0PSRA84 |  | Ground Floor Plan Power Layout | 14d | 2016-05-01 | 2016-05-19 | EN0PSPP93 | 39d | 36d | The Employer Calendar |
| EN0PSRA48 |  | Podium Floor Plan Lighting Layout | 14d | 2016-06-12 | 2016-06-29 | EN0PSPP48 | 18d | 14d | The Employer Calendar |
| EN0PSRA53 |  | Podium Plan Structured Cabling Layout | 14d | 2016-06-12 | 2016-06-29 | EN0PSPP53 | 18d | 14d | The Employer Calendar |
| EN0PSRA57 |  | Podium Floor Plan Fire Alarm Layout | 14d | 2016-06-12 | 2016-06-29 | EN0PSPP58 | 18d | 14d | The Employer Calendar |
| EN0PSRA61 |  | Podium Floor Plan Emergency Lighting Layout | 14d | 2016-06-12 | 2016-06-29 | EN0PSPP63 | 18d | 14d | The Employer Calendar |
| EN0PSRA65 |  | Podium Floor Plan CCTV Layout | 14d | 2016-06-12 | 2016-06-29 | EN0PSPP68 | 18d | 14d | The Employer Calendar |
| EN0PSRA85 |  | Podium Floor Plan Power Layout | 14d | 2016-06-12 | 2016-06-29 | EN0PSPP94 | 18d | 14d | The Employer Calendar |
| EN0PSRA41 |  | Typical Floor Plan CCTV Layout | 14d | 2016-07-19 | 2016-08-07 | EN0PSPP41 | 31d | 24d | The Employer Calendar |
| EN0PSRA44 |  | Typical Floor Plan power Layout | 14d | 2016-07-19 | 2016-08-07 | EN0PSPP44 | 31d | 24d | The Employer Calendar |
| EN0PSRA49 |  | Typical Floor Plan Lighting Layout | 14d | 2016-07-19 | 2016-08-07 | EN0PSPP49 | 31d | 24d | The Employer Calendar |
| EN0PSRA54 |  | Typical Floor Plan Structured Cabling Layout | 14d | 2016-07-19 | 2016-08-07 | EN0PSPP54 | 31d | 24d | The Employer Calendar |
| EN0PSRA58 |  | Typical Floor Plan Fire Alarm Layout | 14d | 2016-07-19 | 2016-08-07 | EN0PSPP59 | 31d | 24d | The Employer Calendar |
| EN0PSRA62 |  | Typical Floor Plan Emergency Lighting Layout | 14d | 2016-07-19 | 2016-08-07 | EN0PSPP64 | 31d | 24d | The Employer Calendar |
| EN0PSRA42 |  | Roof Floor Plan CCTV Layout | 14d | 2016-10-31 | 2016-11-17 | EN0PSPP42 | 37d | 0d | The Employer Calendar |
| EN0PSRA43 |  | Upper Roof Floor Plan CCTV Layout | 14d | 2016-10-31 | 2016-11-17 | EN0PSPP43 | 37d | 0d | The Employer Calendar |
| EN0PSRA45 |  | Roof Floor Plan Power Layout | 14d | 2016-10-31 | 2016-11-17 | EN0PSPP45 | 47d | 0d | The Employer Calendar |
| EN0PSRA46 |  | Upper Roof Floor Plan Power Layout | 14d | 2016-10-31 | 2016-11-17 | EN0PSPP46 | 47d | 0d | The Employer Calendar |
| EN0PSRA50 |  | Roof Floor Plan Lighting Layout | 14d | 2016-10-31 | 2016-11-17 | EN0PSPP50 | 47d | 0d | The Employer Calendar |
| EN0PSRA51 |  | Upper Roof Floor Plan Lighting Layout | 14d | 2016-10-31 | 2016-11-17 | EN0PSPP51 | 47d | 0d | The Employer Calendar |
| EN0PSRA55 |  | Roof Floor Plan Structured Cabling Layout | 14d | 2016-10-31 | 2016-11-17 | EN0PSPP55 | 37d | 0d | The Employer Calendar |
| EN0PSRA59 |  | Roof Floor Plan Fire Alarm Layout | 14d | 2016-10-31 | 2016-11-17 | EN0PSPP60 | 41d | 0d | The Employer Calendar |
| EN0PSRA63 |  | Roof Floor Plan Emergency Lighting Layout | 14d | 2016-10-31 | 2016-11-17 | EN0PSPP65 | 47d | 0d | The Employer Calendar |

| ID | WBS | Activity | Duration | Start | Finish | Predecessors | Total float | Free float | Calendar |
| --- | --- | --- | --- | --- | --- | --- | --- | --- | --- |
|  | 1.4 | **Plumbing** |  | 2016-04-21 | 2017-03-29 |  |  |  |  |
| EN0PSRA68 |  | Ground Floor Drainage Layout | 14d | 2016-04-21 | 2016-05-11 | EN0PSPP73 | 45d | 42d | The Employer Calendar |
| EN0PSRA72 |  | Ground Floor-Water Supply Layout | 14d | 2016-04-21 | 2016-05-11 | EN0PSPP78 | 45d | 42d | The Employer Calendar |
| EN0PSRA69 |  | Podium Floor Drainage Layout | 14d | 2016-05-30 | 2016-06-16 | EN0PSPP74 | 27d | 23d | The Employer Calendar |
| EN0PSRA88 |  | Podium Floor Water Supply Layout | 14d | 2016-05-30 | 2016-06-16 | EN0PSPP79 | 27d | 23d | The Employer Calendar |
| EN0PSRA70 |  | Typical Floor Drainage Layout | 14d | 2016-07-19 | 2016-08-07 | EN0PSPP75 | 31d | 24d | The Employer Calendar |
| EN0PSRA73 |  | Typical Floor Water Supply Layout | 14d | 2016-07-19 | 2016-08-07 | EN0PSPP80 | 31d | 24d | The Employer Calendar |
| EN0PSRA71 |  | Roof Floor Drainage Layout | 14d | 2017-03-12 | 2017-03-29 | EN0PSPP76 | 46d | 11d | The Employer Calendar |
| EN0PSRA87 |  | Upper Roof Floor Drainage Layout | 14d | 2017-03-12 | 2017-03-29 | EN0PSPP77 | 46d | 11d | The Employer Calendar |
| EN0PSRA89 |  | Roof Floor Water Supply Layout | 14d | 2017-03-12 | 2017-03-29 | EN0PSRA73, EN0PSPP81 | 46d | 11d | The Employer Calendar |
| EN0PSRA91 |  | Upper Roof Floor Water Supply Layout | 14d | 2017-03-12 | 2017-03-29 | EN0PSPP82 | 46d | 11d | The Employer Calendar |
|  | 1.5 | **Fire Fighting** |  | 2016-05-01 | 2016-10-26 |  |  |  |  |
| EN0PSRA66 |  | Ground Floor- Fire Fighting Layout | 14d | 2016-05-01 | 2016-05-19 | EN0PSPP69 | 39d | 36d | The Employer Calendar |
| EN0PSRA67 |  | Typical Floor Fire Fighting Layout | 14d | 2016-07-19 | 2016-08-07 | EN0PSPP70 | 31d | 24d | The Employer Calendar |
| EN0PSRA86 |  | Roof Floor Fire Fighting Layout | 14d | 2016-10-09 | 2016-10-26 | EN0PSRA67, EN0PSPP71 | 57d | 16d | The Employer Calendar |
| EN0PSRA90 |  | Upper Roof Floor Fire Fighting Layout | 14d | 2016-10-09 | 2016-10-26 | EN0PSPP72 | 57d | 16d | The Employer Calendar |
|  | 8 | **Fire Alarm** |  | 2016-05-01 | 2016-10-26 |  |  |  |  |
| EN0PSRA01 |  | Ground Floor- Fire Alarm Layout | 14d | 2016-05-01 | 2016-05-19 | EN0PSPP01 | 39d | 36d | The Employer Calendar |
| EN0PSRA02 |  | Typical Floor Fire Alarm Layout | 14d | 2016-07-19 | 2016-08-07 | EN0PSPP04 | 31d | 24d | The Employer Calendar |
| EN0PSRA03 |  | Roof Floor Fire Alarm Layout | 14d | 2016-10-09 | 2016-10-26 | EN0PSPP03 | 57d | 16d | The Employer Calendar |
| EN0PSRA04 |  | Upper Roof Floor Fire Alarm Layout | 14d | 2016-10-09 | 2016-10-26 | EN0PSPP02 | 57d | 16d | The Employer Calendar |
|  | 1.1.6.1.4.9 | **Facade Ligting System** |  | 2017-05-08 | 2017-05-25 |  |  |  |  |
| EN0PSRA10 |  | Shop Drawing For Facade Lighting | 14d | 2017-05-08 | 2017-05-25 | EN0PSPP10 | 51d | 0d | The Employer Calendar |
|  | 1.1.6.1.4.2 | **Aluminum and Glazing Works** |  | 2016-06-12 | 2017-05-04 |  |  |  |  |
| EN0PSRA12 |  | Aluminum Louver Doors | 14d | 2016-06-12 | 2016-06-29 | EN0PSPP12 | 21d | 0d | The Employer Calendar |
| EN0PSRA37 |  | Shop Drawing For External Aluminum Cladding | 14d | 2016-06-29 | 2016-07-20 | EN0PSPP40 | 26d | 0d | The Employer Calendar |
| EN0PSRA14 |  | Shop Drawing For Balcony Handrails | 14d | 2016-06-30 | 2016-07-21 | EN0PSPP15 | 43d | 11d | The Employer Calendar |
| EN0PSRA11 |  | Aluminium Doors | 14d | 2016-07-10 | 2016-07-27 | EN0PSPP11 | 25d | 0d | The Employer Calendar |
| EN0PSRA13 |  | Shop Drawing For Glass Doors | 14d | 2017-01-12 | 2017-01-31 | EN0PSPP13 | 15d | 0d | The Employer Calendar |
| EN0PSRA39 |  | Shop Drawing For Revolving Door | 14d | 2017-04-17 | 2017-05-04 | EN0PSPP14 | 28d | 0d | The Employer Calendar |

| ID | WBS | Activity | Duration | Start | Finish | Predecessors | Total float | Free float | Calendar |
| --- | --- | --- | --- | --- | --- | --- | --- | --- | --- |
|  | 1.1.6.1.4.3 | **Conveying System** |  | 2016-10-09 | 2016-10-26 |  |  |  |  |
| EN0PSRA21 |  | Elevator | 14d | 2016-10-09 | 2016-10-26 | EN0PSPP25 | 7d | 0d | The Employer Calendar |
|  | 1.1.6.1.4.4 | **Carpentry and Jointry Works** |  | 2016-10-30 | 2017-03-01 |  |  |  |  |
| EN0PSRA15 |  | Shop Drawing For Timber Doors | 14d | 2016-10-30 | 2016-11-16 | EN0PSPP19 | 10d | 0d | The Employer Calendar |
| EN0PSRA36 |  | Shop Drawing For Kitchen Cabinets | 14d | 2016-10-30 | 2016-11-16 | EN0PSPP17 | 16d | 0d | The Employer Calendar |
| EN0PSRA38 |  | Shop Drawing For Wardrobes | 14d | 2016-10-30 | 2016-11-16 | EN0PSPP16 | 19d | 0d | The Employer Calendar |
| EN0PSRA40 |  | Shop Drawing For Vanity Counters | 14d | 2016-12-12 | 2016-12-29 | EN0PSPP18 | 29d | 0d | The Employer Calendar |
| EN0PSRA20 |  | Shop Drawing For Mirrors | 14d | 2017-02-12 | 2017-03-01 | EN0PSPP24 | 32d | 0d | The Employer Calendar |
|  | 1.1.6.1.4.5 | **Landscaping Works** |  | 2017-04-02 | 2017-04-19 |  |  |  |  |
| EN0PSRA16 |  | Shop Drawing For Hard Landscaping Works-Paving At G Floor | 14d | 2017-04-02 | 2017-04-19 | EN0PSPP20 | 11d | 0d | The Employer Calendar |
| EN0PSRA17 |  | Shop Drawing For Hard Landscaping Works-Paving At 4th Floor | 14d | 2017-04-02 | 2017-04-19 | EN0PSPP21 | 11d | 0d | The Employer Calendar |
| EN0PSRA18 |  | Shop Drawing For Planter Wall Coping & Facing Stones | 14d | 2017-04-02 | 2017-04-19 | EN0PSPP22 | 33d | 0d | The Employer Calendar |
| EN0PSRA19 |  | Shop Drawing For The Soft Scaping Works | 14d | 2017-04-02 | 2017-04-19 | EN0PSPP23 | 32d | 0d | The Employer Calendar |
|  | 1.1.6.1.4.8 | **ID Works** |  | 2016-08-08 | 2017-06-07 |  |  |  |  |
| EN0PSRA200 |  | Shop Drawing For Typical Corridor Ceiling | 14d | 2016-08-08 | 2016-08-25 | EN0PSPP200 | 47d | 0d | The Employer Calendar |
| EN0PSRA201 |  | Shop Drawing For Typical Corridor Walls | 14d | 2016-08-08 | 2016-08-25 | EN0PSPP201 | 71d | 19d | The Employer Calendar |
| EN0PSRA28 |  | Shop Drawing For Typical Corridor Flooring | 14d | 2016-09-04 | 2016-09-25 | EN0PSPP32 | 70d | 0d | The Employer Calendar |
| EN0PSRA23 |  | Shop Drawing For Gym Flooring | 14d | 2016-09-28 | 2016-10-18 | EN0PSPP27 | 42d | 0d | The Employer Calendar |
| EN0PSRA27 |  | Entrance Canopy | 14d | 2017-03-12 | 2017-03-29 | EN0PSPP31 | 24d | 0d | The Employer Calendar |
| EN0PSRA24 |  | Shop Drawing For Gym Equipments | 14d | 2017-04-02 | 2017-04-19 | EN0PSPP28 | 31d | 0d | The Employer Calendar |
| EN0PSRA25 |  | Shop Drawing For Steam Rooms | 14d | 2017-04-17 | 2017-05-04 | EN0PSPP29 | 30d | 0d | The Employer Calendar |
| EN0PSRA26 |  | Shop Drawing For Sauna Rooms | 14d | 2017-04-17 | 2017-05-04 | EN0PSPP30 | 30d | 0d | The Employer Calendar |
| EN0PSRA92 |  | Shop Drawing For Reception Counter | 14d | 2017-05-21 | 2017-06-07 | EN0PSPP95 | 19d | 0d | The Employer Calendar |
|  | 1.1.6.1.4.10 | **Mirrors** |  |  |  |  |  |  |  |
|  | 2 | **Steel Doors** |  | 2017-03-05 | 2017-03-22 |  |  |  |  |
| EN0PSRA29 |  | Shop Drawing For Steel Doors | 14d | 2017-03-05 | 2017-03-22 | EN0PSPP33 | 33d | 0d | The Employer Calendar |

| ID | WBS | Activity | Duration | Start | Finish | Predecessors | Total float | Free float | Calendar |
| --- | --- | --- | --- | --- | --- | --- | --- | --- | --- |
|  | 3 | **Swimming Pool** |  | 2017-03-26 | 2017-04-12 |  |  |  |  |
| EN0PSRA30 |  | Shop Drawing For Swimming Pool | 14d | 2017-03-26 | 2017-04-12 | EN0PSPP34 | 54d | 0d | The Employer Calendar |
|  | 5 | **Pavement Parking Paint** |  | 2017-04-17 | 2017-05-04 |  |  |  |  |
| EN0PSRA32 |  | Shop Drawing For Parking Paint | 14d | 2017-04-17 | 2017-05-04 | EN0PSPP36 | 13d | 0d | The Employer Calendar |
|  | 7 | **Car park accessories layout** |  | 2017-06-12 | 2017-07-03 |  |  |  |  |
| EN0PSRA34 |  | Shop Drawing For Car Park Accessories | 14d | 2017-06-12 | 2017-07-03 | EN0PSPP38 | 13d | 0d | The Employer Calendar |
|  | 6 | **Main Kitchen** |  | 2017-04-02 | 2017-04-19 |  |  |  |  |
| EN0PSRA33 |  | Shop Drawing For Main Kitchen | 14d | 2017-04-02 | 2017-04-19 | EN0PSPP37 | 60d | 42d | The Employer Calendar |
|  | 3 | **Materials** |  | 2016-04-26 | 2017-06-07 |  |  |  |  |
|  | 2 | **Submittals** |  | 2016-04-26 | 2017-05-18 |  |  |  |  |
|  | 1 | **MEP** |  | 2016-04-26 | 2016-10-08 |  |  |  |  |
| EN0PSMT42 |  | LPG System | 14d | 2016-04-26 | 2016-05-12 | EN0PSNM23, GRKDS1020 | 41d | 1d |  |
| EN0PSMT40 |  | Water Heaters | 14d | 2016-05-21 | 2016-06-05 | EN0PSNM23, CNP01CW10 | 15d | 0d |  |
| EN0PSMT41 |  | Panel Boards | 14d | 2016-09-21 | 2016-10-08 | CNF08CW20, EN0PSNM23 | 75d | 0d |  |
| EN0PSMT43 |  | Pumps | 14d | 2016-09-21 | 2016-10-08 | CNF08CW20, EN0PSNM23 | 164d | 0d |  |
| EN0PSPP110 |  | Bus Bar System | 14d | 2016-09-21 | 2016-10-08 | CNF08CW20, EN0PSNM23 | 141d | 0d |  |
| EN0PSPP111 |  | Central Battery System ( High Level) | 14d | 2016-09-21 | 2016-10-08 | CNF08CW20, EN0PSNM23 | 182d | 0d |  |
| EN0PSPP112 |  | Central Battery System ( Final Fix) | 14d | 2016-09-21 | 2016-10-08 | CNF08CW20, EN0PSNM23 | 147d | 0d |  |
| EN0PSPP113 |  | Air Craft Warning Light | 14d | 2016-09-21 | 2016-10-08 | CNF08CW20, EN0PSNM23 | 182d | 0d |  |
| EN0PSPP114 |  | LV Cables And Wires | 14d | 2016-09-21 | 2016-10-08 | CNF08CW20, EN0PSNM23 | 182d | 0d |  |
| EN0PSPP115 |  | Access Control System (High Level) | 14d | 2016-09-21 | 2016-10-08 | CNF08CW20, EN0PSNM23 | 158d | 0d |  |
| EN0PSPP116 |  | Access Control System (Final Fix) | 14d | 2016-09-21 | 2016-10-08 | CNF08CW20, EN0PSNM23 | 144d | 0d |  |
| EN0PSPP1201 |  | GRP Tank | 14d | 2016-09-21 | 2016-10-08 | CNF08CW20 | 234d | 0d |  |
|  | 1.1.6.1.4.2 | **Aluminum and Glazing Works** |  | 2016-05-25 | 2017-04-16 |  |  |  |  |
| EN0PSMT15 |  | External Aluminum Cladding | 14d | 2016-05-25 | 2016-06-09 | EN0PSNM12 FF, EN0PSNM12 | 48d | 1d |  |
| EN0PSMT11 |  | Aluminium Louver Doors | 14d | 2016-06-14 | 2016-06-29 | EN0PSNM12 FS+14d | 58d | 0d |  |
| EN0PSMT10 |  | Aluminium Doors | 14d | 2016-06-20 | 2016-07-05 | EN0PSNM12 FS+14d, CNP02CW55 | 31d | 1d |  |
| EN0PSMT16 |  | Balcony Handrails | 14d | 2016-06-30 | 2016-07-18 | EN0PSNM12 FS+14d, CNP03CW20 | 38d | 0d |  |
| EN0PSMT12 |  | Glass Doors | 14d | 2016-12-26 | 2017-01-11 | EN0PSNM12 FS+14d, CNF14CW20 | 18d | 0d |  |
| EN0PSMT13 |  | Revolving Door | 14d | 2017-04-01 | 2017-04-16 | GRKDS1030, EN0PSNM12 FS+14d | 32d | 0d |  |

| ID | WBS | Activity | Duration | Start | Finish | Predecessors | Total float | Free float |
| --- | --- | --- | --- | --- | --- | --- | --- | --- |
|  | 1.1.6.1.4.3 | **Conveying System** |  | 2016-09-21 | 2016-10-08 |  |  |  |
| EN0PSMT27 |  | Elevator | 14d | 2016-09-21 | 2016-10-08 | EN0PSNM16 FS+14d, CNF08CW20 | 8d | 0d |
|  | 1.1.6.1.4.4 | **Carpentry and Jointry Works** |  | 2016-10-12 | 2017-02-11 |  |  |  |
| EN0PSMT17 |  | Wardrobes | 14d | 2016-10-12 | 2016-10-27 | EN0PSNM14 FS+14d | 23d | 1d |
| EN0PSMT18 |  | Kitchen Cabinets | 14d | 2016-10-12 | 2016-10-27 | EN0PSNM14 FS+14d | 20d | 1d |
| EN0PSMT21 |  | Timber Doors | 14d | 2016-10-12 | 2016-10-27 | EN0PSNM14 FS+14d | 13d | 1d |
| EN0PSMT19 |  | Vanity Counters | 14d | 2016-11-22 | 2016-12-10 | EN0PSNM14 FS+14d, CNF12CW20 | 35d | 0d |
| EN0PSMT26 |  | Mirrors | 14d | 2017-01-26 | 2017-02-11 | EN0PSNM14 FS+14d, CNF16CW20 | 38d | 0d |
|  | 1.1.6.1.4.5 | **Landscaping Works** |  | 2017-03-15 | 2017-03-30 |  |  |  |
| EN0PSMT22 |  | Hard Landscaping Works-Paving At G Floor | 14d | 2017-03-15 | 2017-03-30 | EN0PSNM15 FS+14d | 14d | 1d |
| EN0PSMT23 |  | Hard Landscaping Works-Paving At 4th Floor | 14d | 2017-03-15 | 2017-03-30 | EN0PSNM15 FS+14d | 14d | 1d |
| EN0PSMT24 |  | Planter Wall Coping & Facing Stones | 14d | 2017-03-15 | 2017-03-30 | EN0PSNM15 FS+14d | 39d | 1d |
| EN0PSMT25 |  | The Soft Scaping Works | 14d | 2017-03-15 | 2017-03-30 | EN0PSNM15 FS+14d | 38d | 1d |
|  | 1.1.6.1.4.8 | **ID Works** |  | 2016-07-23 | 2017-05-18 |  |  |  |
| EN0PSMT200 |  | Typical Corridor Ceiling | 14d | 2016-07-23 | 2016-08-07 | EN0PSNM29 FS+14d | 56d | 0d |
| EN0PSMT201 |  | Typical Corridor Walls | 14d | 2016-08-18 | 2016-09-03 | EN0PSNM29 FS+14d, CNF06CW20 | 62d | 0d |
| EN0PSMT33 |  | Typical Corridor Flooring | 14d | 2016-08-18 | 2016-09-03 | EN0PSNM29 FS+14d, CNF06CW20 | 83d | 0d |
| EN0PSMT28 |  | Gym Flooring | 14d | 2016-09-08 | 2016-09-27 | EN0PSNM11 FS+14d | 51d | 0d |
| EN0PSMT32 |  | Entrance Canopy | 14d | 2017-02-23 | 2017-03-11 | EN0PSNM11 FS+14d, CNF18CW20 | 28d | 0d |
| EN0PSMT29 |  | Gym Equipments | 14d | 2017-03-16 | 2017-04-01 | EN0PSNM11 FS+14d, CNF19CW50 | 36d | 0d |
| EN0PSMT30 |  | Steam Rooms | 14d | 2017-04-01 | 2017-04-16 | EN0PSNM11 FS+14d, GRKDS1030 | 35d | 0d |
| EN0PSMT31 |  | Sauna Rooms | 14d | 2017-04-01 | 2017-04-16 | EN0PSNM11 FS+14d, GRKDS1030 | 35d | 0d |
| EN0PSMT20 |  | Reception Counter | 14d | 2017-05-03 | 2017-05-18 | EN0PSNM11 FS+14d, CNGF0FN17 | 23d | 1d |
|  | 1.1.6.1.4.10 | **Mirrors** |  |  |  |  |  |  |
|  | 2 | **Steel Doors** |  | 2017-02-15 | 2017-03-02 |  |  |  |
| EN0PSMT34 |  | Steel Doors | 14d | 2017-02-15 | 2017-03-02 | EN0PSNM13 FS+14d | 40d | 1d |

| ID | WBS | Activity | Duration | Start | Finish | Predecessors | Total float | Free float | Calendar |
| --- | --- | --- | --- | --- | --- | --- | --- | --- | --- |
|  | 7 | **Ironmongeries** |  | 2016-11-29 | 2016-12-18 |  |  |  |  |
| EN0PSMT202 |  | Ironmongeries | 14d | 2016-11-29 | 2016-12-18 | EN0PSNM18 | 34d | 0d |  |
|  | 3 | **Swimming Pool** |  | 2017-03-08 | 2017-03-23 |  |  |  |  |
| EN0PSMT35 |  | Swimming Pool | 14d | 2017-03-08 | 2017-03-23 | EN0PSNM19 FS+14d | 64d | 1d |  |
|  | 6 | **Main Kitchen** |  | 2017-03-15 | 2017-03-30 |  |  |  |  |
| EN0PSMT38 |  | Main Kitchen Equipment | 14d | 2017-03-15 | 2017-03-30 | EN0PSNM22 FS+14d | 24d | 1d |  |
|  | 5 | **Bathtubs** |  | 2016-08-18 | 2016-09-03 |  |  |  |  |
| EN0PSMT203 |  | Bathtubs | 14d | 2016-08-18 | 2016-09-03 | EN0PSNM74 | 72d | 0d |  |
|  | 8 | **Sanitary Ware** |  | 2016-12-26 | 2017-01-11 |  |  |  |  |
| EN0PSMT205 |  | Sanitary Ware | 14d | 2016-12-26 | 2017-01-11 | EN0PSNM74, CNF14CW20 | 11d | 0d |  |
|  | 1 | **Review and Approval** |  | 2016-05-15 | 2017-06-07 |  |  |  |  |
|  | 1 | **MEP** |  | 2016-05-15 | 2016-10-26 |  |  |  |  |
| EN0PSMT46 |  | LPG System | 14d | 2016-05-15 | 2016-06-01 | EN0PSMT42 | 34d | 0d | The Employer Calendar |
| EN0PSMT44 |  | Water Heaters | 14d | 2016-06-06 | 2016-06-23 | EN0PSMT40 | 13d | 0d | The Employer Calendar |
| EN0PSMT45 |  | Panel Boards | 14d | 2016-10-09 | 2016-10-26 | EN0PSMT41 | 63d | 0d | The Employer Calendar |
| EN0PSMT47 |  | Pumps | 14d | 2016-10-09 | 2016-10-26 | EN0PSMT43 | 138d | 0d | The Employer Calendar |
| EN0PSPP117 |  | Bus Bar System | 14d | 2016-10-09 | 2016-10-26 | EN0PSPP110 | 118d | 44d | The Employer Calendar |
| EN0PSPP118 |  | Central Battery System ( High Level) | 14d | 2016-10-09 | 2016-10-26 | EN0PSPP111 | 153d | 44d | The Employer Calendar |
| EN0PSPP119 |  | Central Battery System ( Final Fix) | 14d | 2016-10-09 | 2016-10-26 | EN0PSPP112 | 123d | 44d | The Employer Calendar |
| EN0PSPP120 |  | Air Craft Warning Light | 14d | 2016-10-09 | 2016-10-26 | EN0PSPP113 | 153d | 44d | The Employer Calendar |
| EN0PSPP121 |  | LV Cables And Wires | 14d | 2016-10-09 | 2016-10-26 | EN0PSPP114 | 153d | 44d | The Employer Calendar |
| EN0PSPP122 |  | Access Control System (High Level) | 14d | 2016-10-09 | 2016-10-26 | EN0PSPP115 | 132d | 44d | The Employer Calendar |
| EN0PSPP123 |  | Access Control System (Final Fix) | 14d | 2016-10-09 | 2016-10-26 | EN0PSPP116 | 121d | 44d | The Employer Calendar |
| EN0PSPP125 |  | GRP Tank | 14d | 2016-10-09 | 2016-10-26 | EN0PSPP1201 | 196d | 0d | The Employer Calendar |

| ID | WBS | Activity | Duration | Start | Finish | Predecessors | Total float | Free float | Calendar |
| --- | --- | --- | --- | --- | --- | --- | --- | --- | --- |
|  | 1.1.6.1.4.2 | **Aluminum and Glazing Works** |  | 2016-06-12 | 2017-05-04 |  |  |  |  |
| EN0PSMT74 |  | External Aluminium Cladding | 14d | 2016-06-12 | 2016-06-29 | EN0PSMT15 | 39d | 13d | The Employer Calendar |
| EN0PSMT49 |  | Aluminium Louver Doors | 14d | 2016-06-30 | 2016-07-21 | EN0PSMT11 | 48d | 26d | The Employer Calendar |
| EN0PSMT48 |  | Aluminium Doors | 14d | 2016-07-10 | 2016-07-27 | EN0PSMT10 | 25d | 0d | The Employer Calendar |
| EN0PSMT51 |  | Balcony Handrails | 14d | 2016-07-19 | 2016-08-07 | EN0PSMT16 | 32d | 0d | The Employer Calendar |
| EN0PSMT50 |  | Glass Doors | 14d | 2017-01-12 | 2017-01-31 | EN0PSMT12 | 15d | 0d | The Employer Calendar |
| EN0PSMT76 |  | Revolving Door | 14d | 2017-04-17 | 2017-05-04 | EN0PSMT13 | 28d | 0d | The Employer Calendar |
|  | 1.1.6.1.4.3 | **Conveying System** |  | 2016-10-09 | 2016-10-26 |  |  |  |  |
| EN0PSMT59 |  | Elevator | 14d | 2016-10-09 | 2016-10-26 | EN0PSMT27 | 7d | 0d | The Employer Calendar |
|  | 1.1.6.1.4.4 | **Carpentry, Jointry and Works** |  | 2016-10-30 | 2017-03-01 |  |  |  |  |
| EN0PSMT53 |  | Timber Doors | 14d | 2016-10-30 | 2016-11-16 | EN0PSMT21 | 10d | 0d | The Employer Calendar |
| EN0PSMT73 |  | Kitchen Cabinets | 14d | 2016-10-30 | 2016-11-16 | EN0PSMT18 | 16d | 0d | The Employer Calendar |
| EN0PSMT75 |  | Wardrobes | 14d | 2016-10-30 | 2016-11-16 | EN0PSMT17 | 19d | 0d | The Employer Calendar |
| EN0PSMT77 |  | Vanity Counters | 14d | 2016-12-12 | 2016-12-29 | EN0PSMT19 | 29d | 0d | The Employer Calendar |
| EN0PSMT58 |  | Mirrors | 14d | 2017-02-12 | 2017-03-01 | EN0PSMT26 | 32d | 0d | The Employer Calendar |
|  | 1.1.6.1.4.5 | **Landscaping Works** |  | 2017-04-02 | 2017-04-19 |  |  |  |  |
| EN0PSMT54 |  | Hard Landscaping Works-Paving At G Floor | 14d | 2017-04-02 | 2017-04-19 | EN0PSMT22 | 11d | 0d | The Employer Calendar |
| EN0PSMT55 |  | Hard Landscaping Works-Paving At 4th Floor | 14d | 2017-04-02 | 2017-04-19 | EN0PSMT23 | 11d | 0d | The Employer Calendar |
| EN0PSMT56 |  | Planter Wall Coping & Facing Stones | 14d | 2017-04-02 | 2017-04-19 | EN0PSMT24 | 33d | 0d | The Employer Calendar |
| EN0PSMT57 |  | The Soft Scaping Works | 14d | 2017-04-02 | 2017-04-19 | EN0PSMT25 | 32d | 0d | The Employer Calendar |
|  | 1.1.6.1.4.8 | **ID Works** |  | 2016-08-08 | 2017-06-07 |  |  |  |  |
| EN0PSMT206 |  | Typical Corridor Ceiling | 14d | 2016-08-08 | 2016-08-25 | EN0PSMT200 | 47d | 0d | The Employer Calendar |
| EN0PSMT207 |  | Typical Corridor Walls | 14d | 2016-09-04 | 2016-09-25 | EN0PSMT201 | 52d | 0d | The Employer Calendar |
| EN0PSMT65 |  | Typical Corridor Flooring | 14d | 2016-09-04 | 2016-09-25 | EN0PSMT33 | 70d | 0d | The Employer Calendar |
| EN0PSMT60 |  | Gym Flooring | 14d | 2016-09-28 | 2016-10-18 | EN0PSMT28 | 42d | 0d | The Employer Calendar |
| EN0PSMT64 |  | Entrance Canopy | 14d | 2017-03-12 | 2017-03-29 | EN0PSMT32 | 24d | 0d | The Employer Calendar |
| EN0PSMT61 |  | Gym Equipments | 14d | 2017-04-02 | 2017-04-19 | EN0PSMT29 | 31d | 0d | The Employer Calendar |
| EN0PSMT62 |  | Steam Rooms | 14d | 2017-04-17 | 2017-05-04 | EN0PSMT30 | 30d | 0d | The Employer Calendar |
| EN0PSMT63 |  | Sauna Rooms | 14d | 2017-04-17 | 2017-05-04 | EN0PSMT31 | 30d | 0d | The Employer Calendar |
| EN0PSMT52 |  | Reception Counter | 14d | 2017-05-21 | 2017-06-07 | EN0PSMT20 | 19d | 0d | The Employer Calendar |

| ID | WBS | Activity | Duration | Start | Finish | Predecessors | Total float | Free float | Calendar |
| --- | --- | --- | --- | --- | --- | --- | --- | --- | --- |
|  | 1.1.6.1.4.10 | **Mirrors** |  |  |  |  |  |  |  |
|  | 2 | **Steel Doors** |  | 2017-03-05 | 2017-03-22 |  |  |  |  |
| EN0PSMT66 |  | Steel Doors | 14d | 2017-03-05 | 2017-03-22 | EN0PSMT34 | 33d | 0d | The Employer Calendar |
|  | 10 | **Ironmongeries** |  | 2016-12-19 | 2017-01-04 |  |  |  |  |
| EN0PSMT210 |  | Ironmongeries | 14d | 2016-12-19 | 2017-01-04 | EN0PSMT202 | 34d | 0d |  |
|  | 3 | **Swimming Pool** |  | 2017-03-26 | 2017-04-12 |  |  |  |  |
| EN0PSMT67 |  | Swimming Pool | 14d | 2017-03-26 | 2017-04-12 | EN0PSMT35 | 54d | 0d | The Employer Calendar |
|  | 6 | **Main Kitchen** |  | 2017-04-02 | 2017-04-19 |  |  |  |  |
| EN0PSMT70 |  | Main Kitchen Equipment | 14d | 2017-04-02 | 2017-04-19 | EN0PSMT38 | 20d | 0d | The Employer Calendar |
|  | 9 | **Bathtubs** |  | 2016-09-04 | 2016-09-25 |  |  |  |  |
| EN0PSMT71 |  | Bathtubs | 14d | 2016-09-04 | 2016-09-25 | EN0PSMT203 | 61d | 0d | The Employer Calendar |
|  | 8 | **Sanitary Ware** |  | 2017-01-12 | 2017-01-31 |  |  |  |  |
| EN0PSMT90 |  | Sanitary Ware | 14d | 2017-01-12 | 2017-01-31 | EN0PSMT205 | 9d | 0d | The Employer Calendar |
|  | 4 | **Procurement** |  | 2016-05-25 | 2017-07-19 |  |  |  |  |
|  | 4 | **MEP** |  | 2016-05-25 | 2017-07-19 |  |  |  |  |
| ENPRC1013 |  | FCU | 80d | 2016-05-25 | 2016-08-12 | CNP01CW20, EN0PSNM23 | 31d | 3d | 7-Day work |
| EN0PSPR11 |  | LPG Pipes & Fittings | 45d | 2016-06-02 | 2016-07-16 | ATDEW1010, EN0PSMT46 | 51d | 23d | 7-Day work |
| ENPRC1002 |  | Water Heater | 100d | 2016-06-24 | 2016-10-01 | EN0PSMT44 | 22d | 10d | 7-Day work |
| ENPRC1003 |  | Pumps | 120d | 2016-10-27 | 2017-02-23 | ATDEW1010, EN0PSMT47 | 198d | 58d | 7-Day work |
| ENPRC1004 |  | GRP Water Tank | 45d | 2016-10-27 | 2016-12-10 | EN0PSPP125, ATDEW1010 | 282d | 181d | 7-Day work |
| ENPRC1016 |  | Panel Boards | 120d | 2016-10-27 | 2017-02-23 | ATDEW1080, ATDCD1020, EN0PSMT45 | 93d | 36d | 7-Day work |
| EN0PSPR40 |  | Fire Alarm System (High Level) | 115d | 2016-11-18 | 2017-03-12 | ATDEW1080, EN0PSRA56, EN0PSRA57, EN0PSRA58, EN0PSRA59, EN0PSRA66, EN0PSRA67, EN0PSRA86, EN0PSRA90, EN0PSRA01, EN0PSRA02, EN0PSRA03, EN0PSRA04 | 62d | 5d | 7-Day work |
| EN0PSPR43 |  | CCTV System (High Level) | 120d | 2016-11-18 | 2017-03-17 | ATDEW1080, EN0PSRA42, EN0PSRA43, EN0PSRA52, EN0PSRA53, EN0PSRA54, EN0PSRA55, EN0PSRA64, EN0PSRA65 | 57d | 4d | 7-Day work |
| EN0PSPR44 |  | CCTV System (Final Fix) | 120d | 2016-11-18 | 2017-03-17 | ATDEW1080, EN0PSRA42, EN0PSRA43, EN0PSRA52, EN0PSRA53, EN0PSRA54, EN0PSRA55, EN0PSRA64, EN0PSRA65 | 57d | 4d | 7-Day work |
| ENPRC1014 |  | Light Fittings | 120d | 2016-11-18 | 2017-03-17 | ATDEW1080, EN0PSRA44, EN0PSRA46, EN0PSRA47, EN0PSRA48, EN0PSRA49, EN0PSRA50, EN0PSRA51, EN0PSRA45, EN0PSRA60, EN0PSRA61, EN0PSRA62, EN0PSRA63, EN0PSRA84, EN0PSRA85 | 71d | 14d | 7-Day work |
| ENPRC1010 |  | FAHU | 150d | 2016-11-22 | 2017-04-20 | EN0PSNM23, CNF12CW20 | 52d | 4d | 7-Day work |
| EN0PSPR39 |  | Bus Bar System | 120d | 2016-12-30 | 2017-04-28 | ATDEW1080, EN0PSPP103, EN0PSPP117 | 105d | 0d | 7-Day work |
| EN0PSPR41 |  | Central Battery System ( High Level) | 70d | 2016-12-30 | 2017-03-09 | EN0PSPP118, ATDEW1080, EN0PSPP104 | 155d | 44d | 7-Day work |
| EN0PSPR42 |  | Central Battery System ( Final Fix) | 112d | 2016-12-30 | 2017-04-20 | ATDEW1080, EN0PSPP105, EN0PSPP119 | 113d | 2d | 7-Day work |
| EN0PSPR46 |  | Air Craft Warning Light | 70d | 2016-12-30 | 2017-03-09 | ATDEW1080, EN0PSPP106, EN0PSPP120 | 155d | 78d | 7-Day work |
| EN0PSPR48 |  | LV Cables And Wires | 70d | 2016-12-30 | 2017-03-09 | ATDEW1080, EN0PSPP107, EN0PSPP121 | 155d | 44d | 7-Day work |
| EN0PSPR49 |  | Access Control System (High Level) | 100d | 2016-12-30 | 2017-04-08 | ATDEW1080, EN0PSPP108, EN0PSPP122 | 125d | 15d | 7-Day work |
| EN0PSPR50 |  | Access Control System (Final Fix) | 115d | 2016-12-30 | 2017-04-23 | ATDEW1080, EN0PSPP109, EN0PSPP123 | 110d | 0d | 7-Day work |
| ENPRC1012 |  | Fans | 115d | 2017-01-11 | 2017-05-05 | CNF15CW20, EN0PSNM23 | 37d | 0d | 7-Day work |
| ENPRC1005 |  | Sanitary Ware & Accessories | 60d | 2017-02-01 | 2017-04-01 | EN0PSMT90, ATDEW1010 | 13d | 0d | 7-Day work |
| ENPRC1011 |  | Chilled Water Pumps | 125d | 2017-02-01 | 2017-06-05 | EN0PSNM23, EN0PSRA79 | 12d | 0d | 7-Day work |
| ENPRC1015 |  | LV Switchgear System | 140d | 2017-03-02 | 2017-07-19 | ATDEW1080, CNGF0FN16 | 28d | 0d | 7-Day work |
| EN0PSPR12 |  | LPG Tank & Accessories | 85d | 2017-03-31 | 2017-06-23 | GRKDS1030, ATDEW1010, EN0PSMT46 | 45d | 0d | 7-Day work |

| ID | WBS | Activity | Duration | Start | Finish | Predecessors | Total float | Free float | Calendar |
| --- | --- | --- | --- | --- | --- | --- | --- | --- | --- |
|  | 1.1.6.1.4.2 | **Aluminum and Glazing Works** |  | 2016-06-30 | 2017-07-03 |  |  |  |  |
| EN0PSPR14 |  | Aluminium Louver Doors | 60d | 2016-06-30 | 2016-08-28 | EN0PSRA12 | 33d | 0d | 7-Day work |
| EN0PSPR36 |  | Aluminium Cladding Panels | 60d | 2016-07-21 | 2016-09-18 | EN0PSMT74, EN0PSRA37 | 36d |  | 7-Day work |
| EN0PSPR13 |  | Aluminium Doors | 120d | 2016-07-28 | 2016-11-24 | EN0PSMT48, EN0PSRA11 | 35d | 13d | 7-Day work |
| EN0PSPR16 |  | Balcony Handrails | 90d | 2016-08-08 | 2016-11-05 | EN0PSMT51, EN0PSRA14 | 47d | 19d | 7-Day work |
| EN0PSPR15 |  | Glass Enclosure | 90d | 2017-02-01 | 2017-05-01 | EN0PSMT50, EN0PSRA13 | 21d | 7d | 7-Day work |
| EN0PSPR51 |  | Revolving Door | 60d | 2017-05-05 | 2017-07-03 | EN0PSMT76, EN0PSRA39 | 40d | 6d | 7-Day work |
|  | 1.1.6.1.4.3 | **Conveying System** |  | 2016-10-27 | 2017-04-24 |  |  |  |  |
| EN0PSPR24 |  | Elevator | 180d | 2016-10-27 | 2017-04-24 | EN0PSMT59, EN0PSRA21 | 11d | 4d | 7-Day work |
|  | 1.1.6.1.4.4 | **Carpentry, Jointry and Works** |  | 2016-11-17 | 2017-05-15 |  |  |  |  |
| EN0PSPR18 |  | Timber Doors | 180d | 2016-11-17 | 2017-05-15 | EN0PSMT53, EN0PSRA15 | 15d | 10d | 7-Day work |
| EN0PSPR37 |  | Kitchen Cabinets | 120d | 2016-11-17 | 2017-03-16 | EN0PSMT73, EN0PSRA36 | 26d | 21d | 7-Day work |
| EN0PSPR38 |  | Wardrobes | 120d | 2016-11-17 | 2017-03-16 | EN0PSMT75, EN0PSRA38 | 30d | 21d | 7-Day work |
| EN0PSPR52 |  | Vanity Counters | 90d | 2016-12-30 | 2017-03-29 | EN0PSMT77, EN0PSRA40 | 43d | 8d | 7-Day work |
|  | 1.1.6.1.4.5 | **Landscaping Works** |  | 2017-04-20 | 2017-06-28 |  |  |  |  |
| EN0PSPR19 |  | Hard Landscaping Works-Paving At G Floor | 30d | 2017-04-20 | 2017-05-19 | EN0PSMT54, EN0PSRA16 | 16d | 9d | 7-Day work |
| EN0PSPR20 |  | Hard Landscaping Works-Paving At 4th Floor | 30d | 2017-04-20 | 2017-05-19 | EN0PSMT55, EN0PSRA17 | 16d | 9d | 7-Day work |
| EN0PSPR21 |  | Planter Wall Coping & Facing Stones | 70d | 2017-04-20 | 2017-06-28 | EN0PSMT56, EN0PSRA18 | 47d | 40d | 7-Day work |
| EN0PSPR22 |  | The Soft Scaping Works | 45d | 2017-04-20 | 2017-06-03 | EN0PSMT57, EN0PSRA19 | 46d | 39d | 7-Day work |
|  | 1.1.6.1.4.8 | **ID Works** |  | 2016-08-26 | 2017-07-07 |  |  |  |  |
| EN0PSPR200 |  | Typical Corridor Ceiling | 90d | 2016-08-26 | 2016-11-23 | EN0PSMT206, EN0PSRA200 | 71d | 17d | 7-Day work |
| EN0PSPR201 |  | Typical Corridor Wall | 90d | 2016-09-26 | 2016-12-24 | EN0PSRA201, EN0PSMT207 | 74d | 15d | 7-Day work |
| EN0PSPR30 |  | Typical Corridor Flooring | 90d | 2016-09-26 | 2016-12-24 | EN0PSMT65, EN0PSRA28 | 102d | 14d | 7-Day work |
| EN0PSPR25 |  | Gym Flooring | 60d | 2016-10-19 | 2016-12-17 | EN0PSMT60, EN0PSRA23 | 62d | 0d | 7-Day work |
| EN0PSPR10 |  | Kitchen Equipments | 30d | 2017-02-23 | 2017-03-24 | EN0PSNM11 FS+14d, CNF18CW20 | 40d | 12d | 7-Day work |
| EN0PSPR29 |  | Entrance Canopy | 90d | 2017-03-30 | 2017-06-27 | EN0PSMT64, EN0PSRA27 | 34d | 0d | 7-Day work |
| EN0PSPR26 |  | Gym Equipments | 60d | 2017-04-20 | 2017-06-18 | EN0PSMT61, EN0PSRA24 | 43d | 0d | 7-Day work |
| EN0PSPR27 |  | Steam Rooms | 45d | 2017-05-05 | 2017-06-18 | EN0PSMT62, EN0PSRA25 | 43d | 0d | 7-Day work |
| EN0PSPR28 |  | Sauna Rooms | 45d | 2017-05-05 | 2017-06-18 | EN0PSMT63, EN0PSRA26 | 43d | 0d | 7-Day work |
| EN0PSPR17 |  | Reception Counter | 30d | 2017-06-08 | 2017-07-07 | EN0PSMT52, EN0PSRA92 | 30d | 1d | 7-Day work |

| ID | WBS | Activity | Type | Duration | Start | Finish | Predecessors | Total float | Free float | Calendar |
| --- | --- | --- | --- | --- | --- | --- | --- | --- | --- | --- |
|  | 1.1.6.1.4.10 | **Mirrors** |  |  | 2017-03-02 | 2017-04-30 |  |  |  |  |
| EN0PSPR23 |  | Mirrors |  | 60d | 2017-03-02 | 2017-04-30 | EN0PSMT58, EN0PSRA20 | 46d | 16d | 7-Day work |
|  | 2 | **Steel Doors** |  |  | 2017-03-23 | 2017-05-21 |  |  |  |  |
| EN0PSPR31 |  | Steel Doors |  | 60d | 2017-03-23 | 2017-05-21 | EN0PSMT66, EN0PSRA29 | 47d | 24d | 7-Day work |
|  | 1 | **Ironmongeries** |  |  | 2017-01-05 | 2017-02-18 |  |  |  |  |
| EN0PSPR202 |  | Ironmongeries |  | 45d | 2017-01-05 | 2017-02-18 | EN0PSMT210 | 40d | 6d | 7-Day work |
|  | 3 | **Swimming Pool** |  |  | 2017-04-13 | 2017-05-12 |  |  |  |  |
| EN0PSPR32 |  | Swimming Pool |  | 30d | 2017-04-13 | 2017-05-12 | EN0PSMT67, EN0PSRA30 | 79d | 16d | 7-Day work |
|  | 5 | **Bathtubs** |  |  | 2016-09-26 | 2016-11-09 |  |  |  |  |
| EN0PSPR204 |  | Bathtubs |  | 45d | 2016-09-26 | 2016-11-09 | EN0PSMT71 | 89d | 12d | 7-Day work |
|  | 7 | **Main Kitchen Equipment** |  |  | 2017-04-20 | 2017-06-18 |  |  |  |  |
| ENPRC1008 |  | Public Kitchen Equipments |  | 60d | 2017-04-20 | 2017-06-18 | EN0PSMT70, EN0PSPR10 FS+14d | 28d | 0d | 7-Day work |
|  | 1.1.3 | **PC Rate Items** |  |  | 2016-05-24 | 2017-06-04 |  |  |  |  |
|  | 1 | **Selections** |  |  | 2016-05-24 | 2017-01-02 |  |  |  |  |
| EN0PCNM15 |  | Ceramic Tiles for Balconies | milestone | 0d | 2016-05-24 | 2016-05-24 | CNP01CW20, CNSUB1160 | 38d | 0d | The Employer Calendar |
| EN0PCNM17 |  | Ceramic Tiles for Bathrooms | milestone | 0d | 2016-05-24 | 2016-05-24 | CNP01CW20, CNSUB1080 | 52d | 0d | The Employer Calendar |
| EN0PCNM90 |  | Ceramic Tiles for Kitchen | milestone | 0d | 2016-05-24 | 2016-05-24 | CNP01CW20 | 52d | 0d | The Employer Calendar |
| EN0PCNM16 |  | Ceramic Tiles for Apartments | milestone | 0d | 2016-06-12 | 2016-06-12 | CNP02CW20 | 24d | 0d | The Employer Calendar |
| EN0PCNM14 |  | Thresholds | milestone | 0d | 2016-09-20 | 2016-09-20 | CNF08CW20 | 29d | 0d | The Employer Calendar |
| EN0PCNM11 |  | Ceramic Tiles for Garbage Room | milestone | 0d | 2016-11-21 | 2016-11-21 | CNF12CW20 | 66d | 0d | The Employer Calendar |
| EN0PSNM101 |  | Marble for Entrance | milestone | 0d | 2016-11-21 | 2016-11-21 | CNF12CW20 | 45d | 0d | The Employer Calendar |
| EN0PSNM100 |  | Granite for Landscape | milestone | 0d | 2017-01-02 | 2017-01-02 | CNF14CW50 | 10d | 0d | The Employer Calendar |
|  | 3 | **Shop Drawings** |  |  | 2016-06-14 | 2017-01-19 |  |  |  |  |
|  | 1 | **Submittals** |  |  | 2016-06-14 | 2016-12-29 |  |  |  |  |
| EN0PCPP190 |  | Ceramic Tiles for Bathrooms |  | 14d | 2016-06-14 | 2016-06-29 | EN0PCNM17 FS+14d | 63d | 0d |  |
| EN0PCPP191 |  | Ceramic Tiles for Kitchen |  | 14d | 2016-06-14 | 2016-06-29 | EN0PCNM90 FS+14d | 63d | 0d |  |
| EN0PCPP201 |  | Ceramic Tiles for Balconies |  | 14d | 2016-06-14 | 2016-06-29 | EN0PCNM15 FS+14d | 46d | 0d |  |
| EN0PCPP200 |  | Ceramic Tiles for Apartments |  | 14d | 2016-07-02 | 2016-07-19 | EN0PCNM16 FS+14d | 30d | 0d |  |
| EN0PCPP202 |  | Thresholds |  | 14d | 2016-10-12 | 2016-10-27 | EN0PCNM14 FS+14d | 35d | 1d |  |
| EN0PCPP203 |  | Ceramic Tile for Garbage Room |  | 14d | 2016-12-14 | 2016-12-29 | EN0PCNM11 FS+14d | 80d | 1d |  |

| ID | WBS | Activity | Duration | Start | Finish | Predecessors | Total float | Free float | Calendar |
| --- | --- | --- | --- | --- | --- | --- | --- | --- | --- |
|  | 2 | **Review and Approval** |  | 2016-06-30 | 2017-01-19 |  |  |  |  |
| EN0PCRA201 |  | Ceramic Tiles for Bathrooms | 14d | 2016-06-30 | 2016-07-21 | EN0PCPP190 | 52d | 0d | The Employer Calendar |
| EN0PCRA202 |  | Ceramic Tiles for Balconies | 14d | 2016-06-30 | 2016-07-21 | EN0PCPP201 | 38d | 0d | The Employer Calendar |
| EN0PCRA205 |  | Ceramic Tiles for Kitchen | 14d | 2016-06-30 | 2016-07-21 | EN0PCPP191 | 52d | 0d | The Employer Calendar |
| EN0PCRA200 |  | Ceramic Tiles for Apartments | 14d | 2016-07-20 | 2016-08-08 | EN0PCPP200 | 25d | 0d | The Employer Calendar |
| EN0PCRA203 |  | Thresholds | 14d | 2016-10-30 | 2016-11-16 | EN0PCPP202 | 29d | 0d | The Employer Calendar |
| EN0PCRA204 |  | Ceramic Tile for Garbage Room | 14d | 2017-01-02 | 2017-01-19 | EN0PCPP203 | 66d | 0d | The Employer Calendar |
|  | 2 | **Materials** |  | 2016-06-14 | 2017-02-04 |  |  |  |  |
|  | 1 | **Submittals** |  | 2016-06-14 | 2017-01-18 |  |  |  |  |
| EN0PCPP15 |  | Ceramic Tiles for Balconies | 14d | 2016-06-14 | 2016-06-29 | EN0PCNM15 FS+14d | 46d | 0d |  |
| EN0PCPP17 |  | Ceramic Tiles for Bathrooms | 14d | 2016-06-14 | 2016-06-29 | EN0PCNM17 FS+14d | 63d | 0d |  |
| EN0PCPP90 |  | Ceramic Tiles for Kitchen | 14d | 2016-06-14 | 2016-06-29 | EN0PCNM90 FS+14d | 63d | 0d |  |
| EN0PCPP16 |  | Ceramic Tiles for Apartments | 14d | 2016-07-02 | 2016-07-19 | EN0PCNM16 FS+14d | 30d | 0d |  |
| EN0PCPP14 |  | Thresholds | 14d | 2016-10-12 | 2016-10-27 | EN0PCNM14 FS+14d | 35d | 1d |  |
| EN0PSMT95 |  | Marble for Entrance | 14d | 2016-11-22 | 2016-12-10 | EN0PSNM101 | 54d | 0d |  |
| EN0PCPP11 |  | Ceramic Tile for Garbage Room | 14d | 2016-12-14 | 2016-12-29 | EN0PCNM11 FS+14d | 80d | 1d |  |
| EN0PSMT99 |  | Granite for Landscape | 14d | 2017-01-03 | 2017-01-18 | EN0PSNM100 | 12d | 0d |  |
|  | 2 | **Review and Approval** |  | 2016-06-30 | 2017-02-04 |  |  |  |  |
| EN0PCRA15 |  | Ceramic Tiles for Balconies | 14d | 2016-06-30 | 2016-07-21 | EN0PCPP15 | 38d | 0d | The Employer Calendar |
| EN0PCRA17 |  | Ceramic Tiles for bathrooms | 14d | 2016-06-30 | 2016-07-21 | EN0PCPP17 | 52d | 0d | The Employer Calendar |
| EN0PCRA90 |  | Ceramic Tiles for Kitchen | 14d | 2016-06-30 | 2016-07-21 | EN0PCPP90 | 52d | 0d | The Employer Calendar |
| EN0PCRA16 |  | Ceramic Tiles for Apartments | 14d | 2016-07-20 | 2016-08-08 | EN0PCPP16 | 25d | 0d | The Employer Calendar |
| EN0PCRA14 |  | Thresholds | 14d | 2016-10-30 | 2016-11-16 | EN0PCPP14 | 29d | 0d | The Employer Calendar |
| EN0PSMT102 |  | Marble for Entrance | 14d | 2016-12-12 | 2016-12-27 | EN0PSMT95 | 54d | 0d |  |
| EN0PCRA11 |  | Ceramic Tile for Garbage Room | 14d | 2017-01-02 | 2017-01-19 | EN0PCPP11 | 66d | 0d | The Employer Calendar |
| EN0PSMT100 |  | Granite for Landscape | 14d | 2017-01-19 | 2017-02-04 | EN0PSMT99 | 12d | 0d |  |

| ID | WBS | Activity | Type | Duration | Start | Finish | Predecessors | Total float | Free float | Calendar |
| --- | --- | --- | --- | --- | --- | --- | --- | --- | --- | --- |
|  | 1.1.3 | **Procurement** |  |  | 2016-07-22 | 2017-06-04 |  |  |  |  |
| EN0PCPR13 |  | Ceramic Tiles for Balconies |  | 120d | 2016-07-22 | 2016-11-18 | EN0PCRA202, EN0PCRA15 | 57d | 29d | 7-Day work |
| EN0PCPR15 |  | Ceramic Tiles for Bathrooms |  | 120d | 2016-07-22 | 2016-11-18 | EN0PCRA17, EN0PCRA201 | 77d | 19d | 7-Day work |
| EN0PCPR90 |  | Ceramic Tiles for Kitchen |  | 120d | 2016-07-22 | 2016-11-18 | EN0PCRA90, EN0PCRA205 | 77d | 19d | 7-Day work |
| EN0PCPR14 |  | Ceramic Tiles for Apartments |  | 120d | 2016-08-09 | 2016-12-06 | EN0PCRA200, EN0PCRA16 | 37d | 32d | 7-Day work |
| EN0PCPR12 |  | Thresholds |  | 90d | 2016-11-17 | 2017-02-14 | EN0PCRA203, EN0PCRA14 | 44d | 10d | 7-Day work |
| EN0PCPR280 |  | Marble for Entrance |  | 120d | 2016-12-28 | 2017-05-18 | EN0PSMT102 | 54d | 11d |  |
| EN0PCPR11 |  | Ceramic Tile for Garbage Room |  | 120d | 2017-01-20 | 2017-05-19 | EN0PCRA204, EN0PCRA11 | 94d | 15d | 7-Day work |
| EN0PSPR100 |  | Granite for Landscape |  | 120d | 2017-02-05 | 2017-06-04 | EN0PSMT100 | 14d | 0d | 7-Day work |
|  | 2 | **Rate-Based Items** |  |  | 2017-01-25 | 2017-03-31 |  |  |  |  |
|  | 1 | **Nominations** |  |  | 2017-01-25 | 2017-01-25 |  |  |  |  |
| ENRBINM00 |  | BMU | milestone | 0d | 2017-01-25 | 2017-01-25 | CNF16CW20 | 37d | 0d | The Employer Calendar |
|  | 2 | **Shop Drawings** |  |  | 2017-01-26 | 2017-03-01 |  |  |  |  |
|  | 1 | **Submittals** |  |  | 2017-01-26 | 2017-02-11 |  |  |  |  |
| ENRBIPP10 |  | BMU |  | 14d | 2017-01-26 | 2017-02-11 | ENRBINM00 | 45d | 0d |  |
|  | 2 | **Review and Approval** |  |  | 2017-02-12 | 2017-03-01 |  |  |  |  |
| ENRBIRA10 |  | BMU |  | 14d | 2017-02-12 | 2017-03-01 | ENRBIPP10 | 38d | 0d | The Employer Calendar |
|  | 3 | **Materials** |  |  | 2017-01-26 | 2017-03-01 |  |  |  |  |
|  | 1 | **Submittals** |  |  | 2017-01-26 | 2017-02-11 |  |  |  |  |
| ENRBIPP30 |  | BMU |  | 14d | 2017-01-26 | 2017-02-11 | ENRBINM00 | 45d | 0d |  |
|  | 2 | **Review and Approval** |  |  | 2017-02-12 | 2017-03-01 |  |  |  |  |
| ENRBIPP40 |  | BMU |  | 14d | 2017-02-12 | 2017-03-01 | ENRBIPP30 | 38d | 0d | The Employer Calendar |
|  | 4 | **Procurement** |  |  | 2017-03-02 | 2017-03-31 |  |  |  |  |
| ENRBIPR10 |  | BMU |  | 30d | 2017-03-02 | 2017-03-31 | ENRBIPP40, ENRBIRA10 | 54d | 0d | Calendar Days |

| ID | WBS | Activity | Duration | Start | Finish | Predecessors | Total float | Free float | Calendar | Resources | Cost | TYPE OF WORK L4 |
| --- | --- | --- | --- | --- | --- | --- | --- | --- | --- | --- | --- | --- |
|  | 1 | **Contractor Main Scope** |  | 2016-02-15 | 2017-07-31 |  |  |  |  |  |  |  |
|  | 3 | **Shop Drawings** |  | 2016-04-02 | 2016-10-04 |  |  |  |  |  |  |  |
|  | 1 | **Submittals** |  | 2016-04-02 | 2016-09-13 |  |  |  |  |  |  |  |
| ENCMSPP10 |  | Post-Tension Slab | 14d | 2016-04-02 | 2016-04-17 | CNSUB1080 | 5d | 0d |  |  |  |  |
| ENCMSPP20 |  | Block Works | 14d | 2016-04-13 | 2016-04-28 | CNSUB1160 | 27d | 1d |  |  |  |  |
| ENCMSPP150 |  | False Ceiling for Wet Areas | 14d | 2016-08-25 | 2016-09-13 | CNF06CW50 | 53d | 0d |  |  |  |  |
|  | 2 | **Review and Approval** |  | 2016-04-18 | 2016-10-04 |  |  |  |  |  |  |  |
| ENCMSRA10 |  | Post-Tension Slab | 14d | 2016-04-18 | 2016-05-08 | ENCMSPP10 | 4d |  | The Employer Calendar | COST [20000 h] | 20,000 | B1-GNR |
| ENCMSRA20 |  | Block Works | 14d | 2016-05-01 | 2016-05-19 | ENCMSPP20 | 22d | 0d | The Employer Calendar | COST [15000 h] | 15,000 | B1-GNR |
| ENCMSRA150 |  | False Ceiling for Wet Areas | 14d | 2016-09-14 | 2016-10-04 | ENCMSPP150 | 44d | 0d | The Employer Calendar | COST [15000 h] | 15,000 | B1-GNR |
|  | 1 | **Materials** |  | 2016-02-15 | 2017-06-11 |  |  |  |  |  |  |  |
|  | 1 | **Submittals** |  | 2016-02-15 | 2017-06-11 |  |  |  |  |  |  |  |
| ENCMSPP50 |  | Concrete Mix Design for slabs and columns | 14d | 2016-02-15 | 2016-03-01 | CNSUB1040 | 42d | 0d |  |  |  |  |
| ENCMSPP51 |  | Block | 14d | 2016-04-13 | 2016-04-28 | CNSUB1160 | 27d | 1d |  |  |  |  |
| ENCMSPP52 |  | Epoxy Primer Paint | 14d | 2016-05-14 | 2016-05-29 | CNGF0CW17 | 18d | 0d |  |  |  |  |
| ENCMSPP53 |  | Wall Painting for Apartments | 14d | 2016-06-02 | 2016-06-18 | CNP01CW55 | 29d | 0d |  |  |  |  |
| ENCMSPP54 |  | Gypsum Board for Ceiling | 14d | 2016-08-03 | 2016-08-18 | CNF05CW20 | 14d | 1d |  |  |  |  |
| ENCMSPP57 |  | Emulsion Paint for Balconies Ceiling | 14d | 2016-08-03 | 2016-08-18 | CNF05CW20 | 40d | 1d |  |  |  |  |
| ENCMSPP55 |  | False Ceiling for Wet Areas | 14d | 2016-08-25 | 2016-09-13 | CNF06CW50 | 53d | 0d |  |  |  |  |
| ENCMSPP56 |  | Water Proofing for Wet Areas | 14d | 2016-09-03 | 2016-09-21 | CNF07CW20 | 60d | 0d |  |  |  |  |
| EN0PSMT36 |  | Garbage Chute System | 14d | 2017-02-23 | 2017-03-11 | CNF18CW20 | 26d | 0d |  |  |  |  |
| ENCMSPP58 |  | Parking Paint | 14d | 2017-04-01 | 2017-04-16 | GRKDS1030 | 14d | 0d |  |  |  |  |
| ENCMSPP59 |  | Car Park Accessories | 14d | 2017-05-27 | 2017-06-11 | CNP01FN100, CNP01FN55 | 16d | 0d |  |  |  |  |
|  | 2 | **Review and Approval** |  |  |  |  |  |  |  |  |  |  |
|  | 2 | **Procurement** |  | 2016-05-20 | 2017-07-31 |  |  |  |  |  |  |  |
| ENCMSPR51 |  | Block | 14d | 2016-05-20 | 2016-06-02 | ENCMSRA20, ENCMSRA51 | 32d | 27d | 7-Day work |  |  |  |
| ENCMSPR52 |  | Epoxy Primer Paint | 20d | 2016-06-17 | 2016-07-06 | ENCMSRA52 | 25d | 20d | 7-Day work |  |  |  |
| ENCMSPR53 |  | Wall Painting for Apartments | 14d | 2016-07-11 | 2016-07-24 | ENCMSRA53 | 34d | 22d | 7-Day work |  |  |  |
| ENCMSPR54 |  | Gypsum Board for Ceiling | 20d | 2016-09-08 | 2016-09-27 | ENCMSRA54 | 19d | 14d | 7-Day work |  |  |  |
| ENCMSPR57 |  | Emulsion Paint for Balconies Ceiling | 14d | 2016-09-08 | 2016-09-21 | ENCMSRA57 | 52d | 24d | 7-Day work |  |  |  |
| ENCMSPR55 |  | False Ceiling for Wet Areas | 14d | 2016-10-05 | 2016-10-18 | ENCMSRA150, ENCMSRA55 | 63d | 4d | 7-Day work |  |  |  |
| ENCMSPR56 |  | Water Proofing for Wet Areas | 14d | 2016-10-13 | 2016-10-26 | ENCMSRA56 | 74d | 13d | 7-Day work |  |  |  |
| ENPRC1006 |  | Garbage Chute System | 45d | 2017-03-30 | 2017-05-13 | EN0PSMT68 | 32d | 0d | 7-Day work |  |  |  |
| ENCMSPR58 |  | Parking Paint | 14d | 2017-05-05 | 2017-05-18 | ENCMSRA58, EN0PSRA32 | 19d | 1d | 7-Day work |  |  |  |
| ENPRC1007 |  | Garbage Trolleys | 30d | 2017-05-29 | 2017-06-27 | EN0PSMT68, CNGF0FN44 | 36d | 6d | 7-Day work |  |  |  |
| ENCMSPR59 |  | Car Park Accessories | 14d | 2017-07-04 | 2017-07-17 | ENCMSRA59, EN0PSRA34 | 19d | 0d | 7-Day work |  |  |  |
| ENPRC1009 |  | Parking Convex Mirror | 14d | 2017-07-04 | 2017-07-17 | ENCMSRA59 | 35d | 0d | 7-Day work |  |  |  |
| ENPRC1001 |  | Gate Barrier | 14d | 2017-07-18 | 2017-07-31 | ENCMSPR59 | 34d | 12d | 7-Day work |  |  |  |

| ID | WBS | Activity | Duration | Start | Finish | Predecessors | Total float | Resources | Cost | TYPE OF WORK L4 | ZONE L1 | FLOOR L2 | CATEGORY OF WORK L3 |
| --- | --- | --- | --- | --- | --- | --- | --- | --- | --- | --- | --- | --- | --- |
|  | 1.5 | **Construction** |  | 2016-01-20 | 2017-11-05 |  |  |  |  |  |  |  |  |
|  | 1.5.1.1.1 | **Sub-Structure** |  | 2016-01-20 | 2016-04-25 |  |  |  |  |  |  |  |  |
|  | 1.5.1.1.1.2 | **Pile Caps** |  | 2016-01-20 | 2016-04-25 |  |  |  |  |  |  |  |  |
| CNSUB1000 |  | Excavation | 30d | 2016-01-20 | 2016-02-23 | GRKDS1010 | 0d | COST [500432 h]; Helper [480 h] | 500,431.76 | B2-SWP | SUB |  |  |
| CNSUB1020 |  | Cutting of Pile Heads | 15d | 2016-01-23 | 2016-02-08 | CNSUB1000 SS+2d | 0d | COST [51845 h]; Helper [240 h] | 51,845 | B2-SWP | SUB |  |  |
| CNSUB1040 |  | Backfilling & Compaction Between Pile Caps | 10d | 2016-02-03 | 2016-02-14 | CNSUB1020 SS+10d | 0d | COST [73743 h]; Helper [240 h] | 73,743 | B2-SWP | SUB |  |  |
| CNSUB1010 |  | MC Receives the Certificate of Piles Works Completion from the Piles Subcontractor | 14d | 2016-02-09 | 2016-02-24 | CNSUB1020 | 7d | COST |  | B2-SWP | SUB |  |  |
| CNSUB1050 |  | Cast PCC for Pile Caps | 30d | 2016-02-10 | 2016-03-15 | CNSUB1040 SS+6d | 0d | COST [28275 h]; Helper [2400 h] | 28,275 | URF | SUB |  |  |
| CNSUB1060 |  | Piles Caps and Tie Beams Block Form Work | 26d | 2016-02-15 | 2016-03-15 | CNSUB1050 SS+4d | 0d | COST [282065 h]; Helper [1248 h]; Mason [2288 h]; Block Form Work [3379 M2] | 282,065 | STR | SUB |  |  |
| CNSUB1070 |  | Plastering for Piles Caps and Tie Beams Block Form Work | 28d | 2016-02-21 | 2016-03-23 | CNSUB1060 FF+2d, CNSUB1060 SS+5d | 0d | COST; Helper [896 h]; Mason [1568 h]; Plastering [3379 M2] |  | PLS | SUB |  |  |
| CNSUB1030 |  | Pile Heads Treatment | 21d | 2016-02-27 | 2016-03-21 | CNSUB1070 SS+5d | 0d | COST [339150 h]; Helper [672 h] | 339,150 | B2-SWP | SUB |  |  |
| CNSUB1100 |  | Backfill and Compaction up to Tie Beams Level | 7d | 2016-02-28 | 2016-03-06 | CNSUB1030 SS+1d | 3d | COST [67743 h]; Helper [168 h] | 67,743 | B2-SWP | SUB |  |  |
| CNSUB1080 |  | Water Proofing | 25d | 2016-03-03 | 2016-03-31 | CNSUB1030 SS+5d | 0d | COST [494463 h]; Helper [800 h] | 494,463.3 | WPR | SUB |  |  |
| CNSUB1090 |  | Steel Rebars for Pile Caps and Tie Beams | 25d | 2016-03-05 | 2016-04-02 | CNSUB1080 FF+1d, CNSUB1080 SS+1d, CNSUB1010 | 0d | COST [950453 h]; Steel Fixer [5600 h]; Helper [2800 h]; Steel Rebars [278100 Kg] | 950,453 | RFT | SUB |  |  |
| CNSUB1091 |  | MEP Underground and Earthing Works | 25d | 2016-03-05 | 2016-04-02 | CNSUB1090 FF, CNSUB1090 SS | 0d | COST [89215.8 h]; PLUMBER [200 h]; ELECTRICIAN [200 h] | 89,215.8 | MEW | SUB |  |  |
| CNSUB1095 |  | Cast RCC for Pile Caps and Tie Beams | 22d | 2016-03-10 | 2016-04-04 | CNSUB1091 FF+2d, CNSUB1091 SS+1d, CNSUB1100, CNSUB1090 FF+2d, EN0PSNM23, CNSUB1090 SS+1d | 0d | COST [1102784 h]; Helper [704 h] | 1,102,784 | RFC | SUB |  |  |
| CNSUB1120 |  | Steel Rebars for Neck Columns | 22d | 2016-03-14 | 2016-04-07 | CNSUB1095 FF+2d, CNSUB1095 SS+3d | 0d | COST [200839 h]; Steel Fixer [704 h]; Helper [352 h] | 200,839 | RFT | SUB |  |  |
| CNSUB1130 |  | Form Work for Neck Columns | 22d | 2016-03-16 | 2016-04-10 | CNSUB1120 FF+1d, CNSUB1120 SS+2d | 0d | COST [42050 h]; Shutter Carpenter [352 h]; Helper [176 h]; Form Work [332 M2] | 42,050 | STR | SUB |  |  |
| CNSUB1160 |  | Cast Concrete for Neck Columns | 22d | 2016-03-19 | 2016-04-12 | CNSUB1130 FF+2d, CNSUB1130 SS+1d | 0d | COST [83579 h]; Helper [704 h] | 83,579 | RFC | SUB |  |  |
| CNSUB1170 |  | Waterproofing for Neck Columns | 18d | 2016-03-24 | 2016-04-13 | CNSUB1160 FF+1d, CNSUB1160 SS+3d | 0d | COST [64500 h]; Helper [576 h] | 64,500 | WPR | SUB |  |  |
| CNSUB1175 |  | Construct Water Tank and Pump Room | 8d | 2016-04-02 | 2016-04-10 | CNSUB1120 SS, CNSUB1130 FF | 3d | COST [489572 h]; Helper [256 h] | 489,572 | RFC | SUB |  |  |
| CNSUB1180 |  | Backfilling, Leveling & Compaction Below Slab on Grade & Anti-termite | 10d | 2016-04-14 | 2016-04-25 | AT0SP1040, ATDCD1020, GRMOB1010 FS+1d, EN0PSNM23, CNSUB1170, CNSUB1175, AT0DM1000, AT0SP1050 | 0d | COST [174724 h]; Helper [240 h] | 174,724 | B2-SWP | SUB |  |  |
|  | 2 | **Ground Floor and Podiums** |  | 2016-04-25 | 2017-10-18 |  |  |  |  |  |  |  |  |
|  | 1 | **Ground Floor** |  | 2016-04-25 | 2017-10-18 |  |  |  |  |  |  |  |  |
|  | CONC | **Concrete** |  | 2016-04-25 | 2016-05-12 |  |  |  |  |  |  |  |  |
| CNGF0CW90 |  | Screed and Waterproofing | 2d | 2016-04-25 | 2016-04-26 | CNSUB1180 FF+1d | 0d | COST [666095 h]; Mason [48 h]; Water Proofing [5000 M2] | 666,095 | URF | GFP | GF | CON |
| CNGF0CW10 |  | Steel Mesh For Slab on Grade | 3d | 2016-04-26 | 2016-04-28 | CNSUB1180, EN0PSNM23, EN0PSNM16, ATDEW1021, CNGF0CW90 SS+1d | 0d | COST [77500 h]; Steel Fixer [144 h]; Helper [72 h]; Steel Rebars [5000 Kg] | 77,500 | RFT | GFP | GF | CON |
| CNGF0CW12 |  | Cast Slab on Grade | 2d | 2016-04-30 | 2016-05-01 | GRIMS1000, CNGF0CW10, ATDEW1010, AT0SP1000 | 0d | COST [336310 h] | 336,310 | RFC | GFP | GF | CON |
| CNGF0CW13 |  | Columns and Walls Rebar | 7d | 2016-05-02 | 2016-05-10 | GRIMS1000, GRKDS1020, CNGF0CW12 | 0d | COST [498722 h]; Steel Fixer [2688 h]; Helper [1344 h]; Steel Rebars [132750 Kg] | 498,722 | RFT | GFP | GF | CON |
| CNGF0CW15 |  | Columns and Walls Form Work | 7d | 2016-05-03 | 2016-05-11 | CNGF0CW13 FF+1d, CNGF0CW13 SS+1d | 0d | COST [136600 h]; Shutter Carpenter [1512 h]; Helper [784 h]; Form Work [2782 M2] | 136,600 | STR | GFP | GF | CON |
| CNGF0CW17 |  | Columns Casting | 2d | 2016-05-11 | 2016-05-12 | ENCMSRA50, CNGF0CW15 FF+1d | 0d | COST [218213 h] | 218,213 | RFC | GFP | GF | CON |

| ID | WBS | Activity | Duration | Start | Finish | Predecessors | Total float | Free float | Resources | Cost | TYPE OF WORK L4 | ZONE L1 | FLOOR L2 | CATEGORY OF WORK L3 |
| --- | --- | --- | --- | --- | --- | --- | --- | --- | --- | --- | --- | --- | --- | --- |
|  | 2 | **Finishes** |  | 2016-04-26 | 2017-10-18 |  |  |  |  |  |  |  |  |  |
|  | 1.5.2.1.1.1 | **General** |  | 2017-02-09 | 2017-10-18 |  |  |  |  |  |  |  |  |  |
| CNGF0FN16 |  | Block Works | 18d | 2017-02-09 | 2017-03-01 | CNF17CW12, ENCMSPR51 | 8d | 0d | COST [336159 h]; Helper [1296 h]; Mason [2448 h]; Block [3495 M2] | 336,159 | B4-MAS | GFP | GF | FNS |
| CNGF0FN40 |  | Doors Sub Frames | 5d | 2017-03-02 | 2017-03-07 | CNGF0FN16 | 14d | 6d | Helper [40 h]; Finishings Carpenter [40 h]; COST [330 h]; Sub-Frames [30 No] | 330 | B6-WDR | GFP | GF | FNS |
| CNGF0FN57 |  | Internal Walls Plaster Works | 20d | 2017-03-09 | 2017-04-01 | CNGF0MP18, CNGF0FN40 SS | 8d | 0d | COST [80842 h]; Mason [1440 h]; Plastering [6900 M2] | 80,842 | PLS | GFP | GF | FNS |
| CNGF0FN42 |  | Aluminium Doors | 12d | 2017-04-23 | 2017-05-06 | CNGF0FN36, EN0PSRA11 | 69d | 0d | Aluminium Labor [96 h]; Helper [96 h]; COST [29345 h] | 29,345 | ALD | GFP | GF | FNS |
| CNGF0FN98 |  | Door Frames | 7d | 2017-05-17 | 2017-05-24 | CNGF0FN42, CNGF0FN41, CNGF0FN36, CNGF0FN35 | 60d | 0d | Helper [56 h]; COST [15000 h]; Doors Carpenter [56 h] | 15,000 | DRI | GFP | GF | FNS |
| CNGF0FN43 |  | Door Shutters | 12d | 2017-05-25 | 2017-06-07 | CNGF0FN98, CNGF0FN35, CNGF0FN36, CNGF0FN41, EN0PSPR18 SS+120d | 60d | 0d | Helper [96 h]; COST [80000 h]; Doors Carpenter [96 h] | 80,000 | APD | GFP | GF | FNS |
| CNGF0FN48 |  | Door Ironmongeries | 10d | 2017-05-25 | 2017-06-05 | EN0PSPR202 SS+45d, CNGF0FN43 SS | 78d |  | Finishings Carpenter [80 h]; Helper [80 h]; COST [5000 h] | 5,000 | DRI | GFP | GF | FNS |
| CNGF0FN97 |  | Thresholds | 10d | 2017-05-25 | 2017-06-05 | CNGF0FN43 SS, EN0PCPR12 SS+90d | 68d | 2d | Finishings Carpenter [80 h]; Helper [80 h]; COST [5400 h] | 5,400 | THR | GFP | GF | FNS |
| CNGF0FN99 |  | Internal Signage | 3d | 2017-06-18 | 2017-06-20 | CNGF0FN38 | 8d | 0d | Signage Labor [96 h]; COST [8006 h] | 8,006 | SGN | GFP | GF | FNS |
| CNGF0FN73 |  | Paint Final Coat | 3d | 2017-10-16 | 2017-10-18 | CNP03FN22, GRIMS1050, CNGF0FN33, CNGF0FN46, CNGF0FN48, CNGF0FN47, CNGF0FN24 | 17d | 0d | COST [5000 h]; Painter [744 h]; Paint [5450 M2] | 5,000 | PFC | GFP | GF | FNS |
|  | 1.5.2.1.1.2 | **Parking Area** |  | 2017-04-18 | 2017-08-19 |  |  |  |  |  |  |  |  |  |
| CNGF0FN68 |  | Epoxy Primer Paint For Soffits | 10d | 2017-04-18 | 2017-04-30 | CNGF0FN28, ENCMSPR52 | 61d | 0d | COST [61104 h]; Painter [240 h]; Paint [1120 M2] | 61,104 | EPF | GFP | GF | FNS |
| CNGF0FN69 |  | Anti-Carbonation Paint For Walls | 12d | 2017-05-01 | 2017-05-14 | CNGF0FN68 | 61d | 0d | COST [43040 h]; Painter [576 h]; Paint [1411 M2] | 43,040 | CRB | GFP | GF | FNS |
| CNGF0FN71 |  | Interlock | 10d | 2017-05-10 | 2017-05-21 | CNGF0FN70 FF | 61d | 0d | COST [117072 h]; Interlock Labor [80 h]; Helper [80 h] | 117,072 | CPR | GFP | GF | FNS |
| CNGF0FN70 |  | Kerbstone | 6d | 2017-05-15 | 2017-05-21 | CNGF0FN69 | 61d | 0d | COST [86885 h]; Kerbstone Labor [48 h]; Helper [48 h] | 86,885 | CPR | GFP | GF | FNS |
| CNGF0FN74 |  | Epoxy Primer Paint for Floor | 8d | 2017-05-22 | 2017-05-30 | ENCMSPR52, CNGF0FN71 | 61d | 2d | COST [99425 h]; Painter [320 h]; Paint [1120 M2] | 99,425 | EPF | GFP | GF | FNS |
| CNGF0FN76 |  | Road Marking | 8d | 2017-06-03 | 2017-06-11 | CNGF0FN74, EN0PSRA32, ENCMSPR58 FS+14d | 59d | 43d | Painter [64 h]; COST [25028.1 h] | 25,028.1 | DEC | GFP | GF | FNS |
| CNGF0FN77 |  | Columns & Wall Guards | 8d | 2017-07-25 | 2017-08-02 | CNGF0FN78 SS, CNGF0FN74 | 16d | 0d | Car Park Accessories Labor [256 h]; COST [5000 h] | 5,000 | CPR | GFP | GF | FNS |
| CNGF0FN78 |  | Wheel Stoppers | 7d | 2017-07-25 | 2017-08-01 | CNGF0FN74, ENCMSPR59 FS+7d | 16d | 0d | COST [18752 h] | 18,752 | CPR | GFP | GF | FNS |
| CNGF0FN80 |  | Traffic Signage & Convex Mirrors | 8d | 2017-08-03 | 2017-08-12 | CNGF0FN76, CNGF0FN77, ENPRC1009, CNGF0FN78, ENCMSPR59 FS+7d | 16d | 0d | Signage Labor [64 h]; COST [16109 h] | 16,109 | SGN | GFP | GF | FNS |
| CNGF0FN84 |  | Gate Barriers | 6d | 2017-08-13 | 2017-08-19 | CNGF0FN80, ENCMSPR59 FS+7d, ENPRC1001 | 16d |  | Signage Labor [96 h]; COST [164000 h] | 164,000 | GBR | GFP | GF | FNS |
|  | 1.5.2.1.1.3 | **Common Areas/Service Rooms** |  | 2017-04-02 | 2017-05-01 |  |  |  |  |  |  |  |  |  |
| CNGF0FN15 |  | Ceiling Preparation Coat (Oil Paint) | 7d | 2017-04-02 | 2017-04-09 | ENCMSPR53, CNGF0FN57 | 34d | 0d | COST [5000 h]; Painter [224 h]; Paint [988 M2] | 5,000 | SRW | GFP | GF | FNS |
| CNGF0FN30 |  | Ceiling Pre-Final Coat | 7d | 2017-04-04 | 2017-04-11 | CNGF0FN15 FF+2d | 34d | 0d | COST [6000 h]; Painter [224 h]; Paint [988 M2] | 6,000 | SRW | GFP | GF | FNS |
| CNGF0FN36 |  | Anti-Slip Epoxy Primer Paint for Floor | 8d | 2017-04-12 | 2017-04-20 | ENCMSPR52, CNGF0FN30 | 34d | 0d | COST [35518 h]; Painter [64 h]; Paint [226 M2] | 35,518 | EPF | GFP | GF | FNS |
| CNGF0FN41 |  | Acrylic Emulsion Primer Paint & Stucco for Wall | 8d | 2017-04-23 | 2017-05-01 | CNGF0FN36 | 34d | 5d | COST [31575.6 h]; Painter [320 h]; Paint [972 M2] | 31,575.6 | SRW | GFP | GF | FNS |

| ID | WBS | Activity | Duration | Start | Finish | Predecessors | Total float | Free float | Resources | Cost | TYPE OF WORK L4 | ZONE L1 | FLOOR L2 | CATEGORY OF WORK L3 |
| --- | --- | --- | --- | --- | --- | --- | --- | --- | --- | --- | --- | --- | --- | --- |
|  | 1.5.2.1.1.4 | **Public Toilets** |  | 2017-03-09 | 2017-06-26 |  |  |  |  |  |  |  |  |  |
| CNGF0FN21 |  | Plastering for Walls | 12d | 2017-03-09 | 2017-03-22 | CNGF0MP18, CNGF0FN16 | 16d | 8d | COST [3687.3 h]; Helper [96 h]; Mason [96 h]; Plastering [154 M2] | 3,687.3 | PLS | GFP | GF | FNS |
| CNGF0FN12 |  | Wall Finishes | 8d | 2017-04-02 | 2017-04-10 | CNGF0FN57, CNGF0FN21 | 8d | 0d | COST [24290 h]; Helper [64 h]; Mason [64 h] | 24,290 | IDW | GFP | GF | FNS |
| CNGF0FN34 |  | Ceiling Finishing | 8d | 2017-04-11 | 2017-04-19 | CNGF0FN12 | 23d | 0d | COST [24290 h]; False Ceiling Fixer [64 h] | 24,290 | IDC | GFP | GF | FNS |
| CNGF0FN11 |  | Water Proofing | 10d | 2017-04-20 | 2017-05-02 | ENCMSPR56, CNGF0FN34 | 60d | 0d | COST [14624 h]; Water Proofing [25 M2] | 14,624 | WPR | GFP | GF | FNS |
| CNGF0FN35 |  | Floor Finishes | 12d | 2017-05-03 | 2017-05-16 | CNGF0FN11 | 60d | 0d | COST [37186 h]; Helper [96 h]; Mason [96 h] | 37,186 | IDF | GFP | GF | FNS |
| CNGF0FN46 |  | Sanitary Ware&Accessories | 6d | 2017-06-08 | 2017-06-14 | CNGF0FN47 SS, CNGF0FN43, CNGF0FN35, ENPRC1005 | 60d | 0d | COST [100588 h] | 100,588.24 | SWR | GFP | GF | FNS |
| CNGF0FN47 |  | Vanity Counter | 8d | 2017-06-08 | 2017-06-17 | CNGF0FN35, CNGF0FN43, EN0PSPR52 SS+90d, CNGF0FN34 FS+1d | 60d | 0d | Vanity Counters Labor [64 h]; Helper [64 h]; COST [20000 h] | 20,000 | DRI | GFP | GF | FNS |
| CNGF0FN49 |  | Mirrors & Toilet Accessories | 10d | 2017-06-15 | 2017-06-26 | CNGF0FN46 | 60d |  | COST [20000 h]; Helper [160 h]; Mirrors Labor [80 h] | 20,000 | MRA | GFP | GF | FNS |
|  | 1.5.2.1.1.5 | **Lift Lobby & Corridor** |  | 2017-04-20 | 2017-05-28 |  |  |  |  |  |  |  |  |  |
| CNGF0FN17 |  | Ceiling Finishes | 10d | 2017-04-20 | 2017-05-02 | CNGF0FN34 | 23d | 0d | COST [92000 h]; False Ceiling Fixer [240 h] | 92,000 | IDC | GFP | GF | FNS |
| CNGF0FN18 |  | Ceiling Painting | 4d | 2017-05-03 | 2017-05-07 | CNGF0FN17 | 29d | 0d | COST [1310 h]; Painter [64 h] | 1,310 | SRW | GFP | GF | FNS |
| CNGF0FN37 |  | Wall Finishes | 15d | 2017-05-08 | 2017-05-24 | CNGF0FN18 | 72d | 47d | COST [92000 h]; Helper [240 h]; Mason [480 h] | 92,000 | IDW | GFP | GF | FNS |
| CNGF0FN44 |  | Floor Finishes | 18d | 2017-05-08 | 2017-05-28 | CNGF0FN41, CNGF0FN18 | 29d | 0d | COST [92000 h]; Helper [144 h]; Mason [144 h] | 92,000 | IDF | GFP | GF | FNS |
|  | 1.5.2.1.1.6 | **Admin Area and Stairs** |  | 2017-04-02 | 2017-08-08 |  |  |  |  |  |  |  |  |  |
|  | 1 | **Admin Area** |  | 2017-04-02 | 2017-07-12 |  |  |  |  |  |  |  |  |  |
| CNGF0FN29 |  | Acryllc Primer Paint & Stucco for Service Rooms Walls | 8d | 2017-04-02 | 2017-04-10 | CNGF0FN57 | 61d | 0d | COST [20627.8 h]; Painter [1344 h]; Apartment Tiles [3129 M2] | 20,627.75 | SRW | GFP | GF | FNS |
| CNGF0FN61 |  | Oil Paint For Service Rooms Ceiling | 8d | 2017-04-02 | 2017-04-10 | CNGF0FN57 | 61d | 0d | COST [6424 h]; Painter [576 h]; Paint [988 M2] | 6,424 | SRW | GFP | GF | FNS |
| CNGF0FN28 |  | Ceramic for Service Rooms Floor | 6d | 2017-04-11 | 2017-04-17 | CNGF0FN29, CNGF0FN61 | 61d | 0d | COST [34000 h]; Helper [48 h]; Mason [48 h]; Apartment Tiles [988 M2] | 34,000 | TBH | GFP | GF | FNS |
| CNGF0FN33 |  | Aluminium Door | 8d | 2017-05-07 | 2017-05-15 | CNGF0FN57, CNGF0FN42 | 126d | 116d | COST [8000 h] | 8,000 | ALM | GFP | GF | FNS |
| CNGF0FN24 |  | Ceramic For Garbage Room Floors | 5d | 2017-06-18 | 2017-06-22 | CNGF0FN38, CNGF0FN44, EN0PCPR11 FS+14d | 63d |  | COST [100575 h]; Helper [120 h]; Mason [200 h]; Apartment Tiles [121 M2] | 100,574.6 | TBH | GFP | GF | FNS |
| CNGF0FN22 |  | Alkyd Primer Paint For Garbage Room Walls | 5d | 2017-07-08 | 2017-07-12 | CNGF0FN38, CNGF0FN57, CNGF0FN45 | 48d |  | COST [40000 h]; Painter [80 h]; Paint [252 M2] | 40,000 | SRW | GFP | GF | FNS |
|  | 2 | **Stairs** |  | 2017-07-17 | 2017-08-08 |  |  |  |  |  |  |  |  |  |
| CNGF0FN23 |  | Emulsion Primer Paint & Stucco For Staircase Ceiling | 4d | 2017-07-17 | 2017-07-20 | CNGF0FN57, CNF15FN27 | 25d | 0d | COST [2976 h]; Painter [64 h]; Paint [188 M2] | 2,976 | SRW | GFP | GF | FNS |
| CNGF0FN20 |  | Epoxy Primer Paint For Staircase Walls | 5d | 2017-07-22 | 2017-07-26 | CNGF0FN23, ENCMSPR52, CNGF0FN57, CNGF0FN37 | 25d | 0d | COST [17910 h]; Painter [120 h]; Paint [431 M2] | 17,910 | EPF | GFP | GF | FNS |
| CNGF0FN150 |  | Epoxy Primer Paint For Staircase Floor | 4d | 2017-07-27 | 2017-07-31 | CNGF0FN20 | 25d | 0d | COST [26397 h]; Painter [96 h]; Paint [158 M2] | 26,397 | EPF | GFP | GF | FNS |
| CNGF0FN200 |  | Stair Handrail | 4d | 2017-08-01 | 2017-08-05 | CNGF0FN150 | 25d | 0d | COST [4000 h]; Helper [64 h]; Aluminium Labor [32 h] | 4,000 | B5-MTW | GFP | GF | FNS |
| CNGF0FN201 |  | Steel Doors | 3d | 2017-08-06 | 2017-08-08 | CNGF0FN200 | 25d |  | Steel Works Labor [24 h]; Helper [24 h]; COST [180539 h] | 180,538.75 | STD | GFP | GF | FNS |

| ID | WBS | Activity | Duration | Start | Finish | Predecessors | Total float | Free float | Resources | Cost | TYPE OF WORK L4 | ZONE L1 | FLOOR L2 | CATEGORY OF WORK L3 |
| --- | --- | --- | --- | --- | --- | --- | --- | --- | --- | --- | --- | --- | --- | --- |
|  | 1.5.2.1.1.7 | **Substation and Main Electrical room** |  | 2016-06-30 | 2016-08-25 |  |  |  |  |  |  |  |  |  |
| CNGF0FN53 |  | Block Works | 7d | 2016-06-30 | 2016-07-10 | CNP03CW20, ATDEW1030, ATDEW1020, ENCMSPR51, CNGF0CW12 FS+8d, CNGF0CW11 | 4d | 0d | COST [30000 h]; Helper [112 h]; Mason [168 h]; Block [210 M2] | 30,000 | B4-MAS | GFP | GF | FNS |
| CNGF0FN58 |  | Internal Walls Plaster Works | 6d | 2016-07-19 | 2016-07-25 | CNGF0MP23 | 4d | 0d | COST [6633.85 h]; Helper [96 h]; Mason [144 h]; Plastering [48 M2] | 6,633.85 | PLS | GFP | GF | FNS |
| CNGF0FN64 |  | Epoxy Primer Paint for Walls and Ceiling | 8d | 2016-07-27 | 2016-08-04 | ENCMSPR52, CNGF0FN58 SS+7d | 4d | 0d | COST [11103 h]; Painter [64 h]; Paint [156 M2] | 11,103 | EPF | GFP | GF | FNS |
| CNGF0FN79 |  | Aluminium Door & Louvers | 8d | 2016-08-06 | 2016-08-14 | CNGF0FN64 | 4d | 0d | COST [12000 h] | 12,000 | ALD | GFP | GF | FNS |
| CNGF0FN81 |  | Epoxy Primer Paint for Floor | 7d | 2016-08-15 | 2016-08-22 | ENCMSPR52, CNGF0FN79 | 4d | 0d | COST [32884 h]; Painter [112 h]; Paint [156 M2] | 32,884 | EPF | GFP | GF | FNS |
| CNGF0FN82 |  | Steel Doors | 3d | 2016-08-23 | 2016-08-25 | CNGF0FN81, CNGF0FN79 | 4d | 0d | Steel Works Labor [24 h]; Helper [24 h]; COST [11000 h] | 11,000 | STD | GFP | GF | FNS |
|  | 1.5.2.1.1.71 | **ETS and Pump room** |  | 2016-04-26 | 2016-08-30 |  |  |  |  |  |  |  |  |  |
| CNGF0FN50 |  | Drop Wall Form Work | 6d | 2016-04-26 | 2016-05-02 | CNSUB1180 | 48d | 0d | COST [10000 h] | 10,000 | STR | GFP | GF | FNS |
| CNGF0FN51 |  | Drop Wall Rebar | 5d | 2016-04-30 | 2016-05-04 | CNGF0FN50 FF+2d | 48d | 0d | COST [30000 h] | 30,000 | RFC | GFP | GF | FNS |
| CNGF0FN52 |  | Drop Walls casting | 1d | 2016-05-07 | 2016-05-07 | CNGF0FN51 | 48d | 0d | COST [10000 h] | 10,000 | RFC | GFP | GF | FNS |
| CNGF0CW11 |  | Bituminous Paint For Drop Wall | 2d | 2016-05-08 | 2016-05-09 | CNGF0FN52 | 48d | 44d | COST [1383.8 h] | 1,383.8 | WPR | GFP | GF | CON |
| CNGF0FN54 |  | Block Works | 10d | 2016-07-11 | 2016-07-21 | CNP03CW20, ENCMSPR51, AT0SP1040, CNGF0FN53, CNGF0FN52 | 31d | 0d | COST [30000 h]; Helper [160 h]; Mason [240 h]; Block [250 M2] | 30,000 | B4-MAS | GFP | GF | FNS |
| CNGF0FN56 |  | Walls Cutting & Chasing | 3d | 2016-07-23 | 2016-07-25 | CNGF0FN54 FF+3d | 31d | 0d | COST [6151 h] | 6,151 | MEW | GFP | GF | FNS |
| CNGF0FN59 |  | Internal Plaster Works | 12d | 2016-07-26 | 2016-08-08 | CNGF0MP23, CNGF0FN56 | 31d | 0d | COST [20000 h]; Helper [96 h]; Mason [192 h]; Plastering [378 M2] | 20,000 | PLS | GFP | GF | FNS |
| CNGF0FN27 |  | Epoxy Primer Paint for ETS Ceiling | 5d | 2016-08-09 | 2016-08-14 | CNGF0FN59, ENCMSPR52 | 34d | 0d | COST [153252 h]; Painter [40 h]; Paint [146 M2] | 153,252 | EPF | GFP | GF | FNS |
| CNGF0FN65 |  | Acrylic Emulsion Primer Paint & Stucco for Wall | 10d | 2016-08-09 | 2016-08-20 | CNGF0FN59 | 31d | 0d | COST [20000 h]; Painter [160 h]; Paint [378 M2] | 20,000 | SRW | GFP | GF | FNS |
| CNGF0FN66 |  | Epoxy Primer Paint for Floor | 5d | 2016-08-15 | 2016-08-20 | CNGF0FN27, ENCMSPR52 | 34d | 9d | COST [3700 h]; Painter [40 h]; Paint [146 M2] | 3,700 | EPF | GFP | GF | FNS |
| CNGF0FN26 |  | Oil Paint for Pump Room Ceiling | 3d | 2016-08-21 | 2016-08-23 | CNGF0FN65 | 31d | 6d | COST [2200 h]; Painter [24 h]; Paint [100 M2] | 2,200 | SRW | GFP | GF | FNS |
| CNGF0FN25 |  | Aluminium Louver Doors | 2d | 2016-08-29 | 2016-08-30 | CNGF0FN27, EN0PSMT49, EN0PSPR14 | 25d | 0d | COST [12000 h]; Helper [32 h]; Aluminium Labor [16 h] | 12,000 | ALD | GFP | GF | FNS |
|  | 1.5.2.1.1.8 | **Property Area(Entrance Lobby,ets ) (ID Scope)** |  | 2017-05-01 | 2017-08-08 |  |  |  |  |  |  |  |  |  |
| CNGF0FN72 |  | Ceiling Finishes | 18d | 2017-05-01 | 2017-05-21 | CNGF0MP50 | 8d | 0d | COST [54653 h]; False Ceiling Fixer [432 h] | 54,653 | IDC | GFP | GF | FNS |
| CNGF0FN10 |  | Painting for Ceiling | 8d | 2017-05-22 | 2017-05-30 | CNGF0FN72 | 8d | 0d | Painter [128 h]; COST [20000 h]; Paint [465 M2] | 20,000 | SRW | GFP | GF | FNS |
| CNGF0FN38 |  | Floor Finishes | 15d | 2017-05-31 | 2017-06-17 | CNF14FN40, CNGF0FN72, CNGF0FN10 | 8d | 0d | COST [59045 h]; Helper [120 h]; Mason [240 h] | 59,045 | IDF | GFP | GF | FNS |
| CNGF0FN45 |  | Wall Finishes | 15d | 2017-06-18 | 2017-07-06 | EN0PCPR280 FS+14d, CNGF0FN72, CNGF0FN38, CNGF0FN42 | 43d | 0d | COST [206200 h]; Helper [240 h]; Mason [480 h] | 206,200 | IDW | GFP | GF | FNS |
| CNGF0FN90 |  | Entrance Canopy | 15d | 2017-06-18 | 2017-07-06 | CNGF0FN38, EN0PSRA27 | 53d |  | COST [125545 h] | 125,545 | IDC | GFP | GF | FNS |
| CNGF0FN83 |  | Reception Counter | 10d | 2017-07-29 | 2017-08-08 | CNGF0FN72, CNGF0FN45, CNGF0FN38, EN0PSRA92, EN0PSPR17 FS+20d | 25d |  | COST [30363 h]; Helper [160 h]; Finishings Carpenter [80 h] | 30,363 | IDC | GFP | GF | FNS |

| ID | WBS | Activity | Type | Duration | Start | Finish | Predecessors | Total float | Free float | Resources | Cost | TYPE OF WORK L4 | ZONE L1 | FLOOR L2 | CATEGORY OF WORK L3 |
| --- | --- | --- | --- | --- | --- | --- | --- | --- | --- | --- | --- | --- | --- | --- | --- |
|  | 3 | **MEP** |  |  | 2016-07-11 | 2017-09-07 |  |  |  |  |  |  |  |  |  |
|  | 1.5.2.1.1.1 | **General** |  |  | 2017-02-19 | 2017-09-06 |  |  |  |  |  |  |  |  |  |
|  | 1.1 | **MEP 1st Fix** |  |  | 2017-02-19 | 2017-03-08 |  |  |  |  |  |  |  |  |  |
| CNGF0FN39 |  | Walls Cutting & Chasing |  | 11d | 2017-02-19 | 2017-03-02 | CNGF0FN16 SS+8d | 8d | 0d | COST [6151 h] | 6,151 | MEW | GFP | GF | FNS |
| CNGF0MP14 |  | Civil Clearance To Start 1st Fix | milestone | 0d | 2017-03-04 | 2017-03-04 | EN0PSRA01, EN0PSRA66, EN0PSRA68, EN0PSRA72, EN0PSRA84, EN0PSRA47, EN0PSRA52, EN0PSRA56, EN0PSRA60, EN0PSRA64, EN0PSRA74, EN0PSRA81, CNGF0FN16, CNGF0FN39, CNF04FN28 SS+2d | 8d | 0d |  |  | MEW | GFP | GF | MEP |
| CNGF0MP15 |  | Drainage Pipes ( In Walls) |  | 5d | 2017-03-04 | 2017-03-08 | CNGF0MP14 | 8d | 0d | COST [73755.6 h]; PLUMBER [160 h] | 73,755.6 | MEW | GFP | GF | MEP |
| CNGF0MP16 |  | Water Supply Pipes ( In Walls) |  | 5d | 2017-03-04 | 2017-03-08 | CNGF0MP14 | 8d | 0d | COST [127908 h]; PLUMBER [240 h] | 127,908 | MEW | GFP | GF | MEP |
| CNGF0MP17 |  | Sleeves,Conduites,Gi Box,DB Box In Wall |  | 5d | 2017-03-04 | 2017-03-08 | CNGF0MP14 | 8d | 0d | COST [107112 h]; ELECTRICIAN [600 h] | 107,112.5 | MEW | GFP | GF | MEP |
| CNGF0MP18 |  | MEP Clearance To Start Plaster | milestone | 0d | 2017-03-08 | 2017-03-08 | CNGF0MP15, CNGF0MP16, CNGF0MP17 | 8d | 0d |  |  | MEW | GFP | GF | MEP |
|  | 1.2 | **MEP 2nd Fix** |  |  | 2017-04-01 | 2017-04-30 |  |  |  |  |  |  |  |  |  |
| CNGF0MP25 |  | Civil Clearance To Start 2nd Fix | milestone | 0d | 2017-04-01 | 2017-04-01 | CNGF0FN57 | 15d | 0d |  |  | MEW | GFP | GF | MEP |
| CNGF0MP36 |  | Ducting Work Including Insulation |  | 10d | 2017-04-02 | 2017-04-12 | CNGF0FN57 | 22d | 0d | COST [883935 h]; DUCTMAN [160 h] | 883,935.3 | MEW | GFP | GF | MEP |
| CNGF0MP37 |  | Installation of FCUs & Fans |  | 10d | 2017-04-02 | 2017-04-12 | CNGF0MP36 FF, ENPRC1013 | 22d | 14d | COST [197093 h]; AC TECHNICIAN [400 h] | 197,092.7 | MEW | GFP | GF | MEP |
| CNGF0MP38 |  | Chilled Water Pipes (High L) |  | 10d | 2017-04-02 | 2017-04-12 | CNGF0FN57 | 16d | 8d | COST [485741 h]; AC TECHNICIAN [160 h] | 485,741.2 | MEW | GFP | GF | MEP |
| CNGF0MP39 |  | LPG Piping |  | 10d | 2017-04-02 | 2017-04-12 | CNGF0FN57, EN0PSPR11 FS+7d | 22d | 14d | COST [155039 h]; PIPE FITTER [80 h] | 155,038.6 | MEW | GFP | GF | MEP |
| CNGF0MP40 |  | Fire Fighting Pipes (Mains/Branches) |  | 10d | 2017-04-02 | 2017-04-12 | CNGF0FN57 | 22d | 14d | COST [635144 h]; PIPE FITTER [80 h] | 635,144.5 | MEW | GFP | GF | MEP |
| CNGF0MP33 |  | Wires |  | 7d | 2017-04-03 | 2017-04-10 | CNGF0MP17, CNGF0MP25 FS+1d | 21d | 0d | COST [1241637 h]; ELECTRICIAN [280 h] | 1,241,637.4 | MEW | GFP | GF | MEP |
| CNGF0MP34 |  | Cable Tray / Trunking |  | 10d | 2017-04-03 | 2017-04-13 | CNGF0MP33 SS | 21d | 13d | COST [1241637 h]; ELECTRICIAN [280 h] | 1,241,637.4 | MEW | GFP | GF | MEP |
| CNGF0MP32 |  | Drainage Pipes (High L) |  | 10d | 2017-04-11 | 2017-04-23 | CNGF0FN12, CNGF0MP25 FS+1d | 8d | 0d | COST [607842 h]; PLUMBER [400 h] | 607,841.7 | MEW | GFP | GF | MEP |
| CNGF0MP35 |  | Water Supply Pipes (High L) |  | 10d | 2017-04-11 | 2017-04-23 | CNGF0FN12, CNGF0MP32 FF | 8d | 0d | COST [671894 h]; PLUMBER [320 h] | 671,894.5 | MEW | GFP | GF | MEP |
| CNGF0MP46 |  | Acoustic Drainage Pipe Insulation |  | 8d | 2017-04-16 | 2017-04-25 | CNGF0MP32 FF+2d | 12d | 0d | COST [15053.6 h]; PLUMBER [224 h] | 15,053.6 | MEW | GFP | GF | MEP |
| CNGF0MP48 |  | Water Heaters Installation&Connection |  | 6d | 2017-04-24 | 2017-04-30 | CNGF0FN12, CNGF0MP38, CNGF0MP35, ENPRC1002 | 8d | 0d | COST [558.9 h] | 558.9 | MEW | GFP | GF | MEP |
| CNGF0MP50 |  | MEP Clearance To Close Ceilings | milestone | 0d | 2017-04-30 | 2017-04-30 | CNGF0MP38, CNGF0MP35, CNGF0MP33, CNGF0MP40, CNGF0MP37, CNGF0MP32, CNGF0MP39, CNGF0MP46, CNGF0MP48, CNGF0MP34 | 8d | 0d |  |  | MEW | GFP | GF | MEP |
|  | 1.3 | **MEP 3rd Fix** |  |  | 2017-06-07 | 2017-09-06 |  |  |  |  |  |  |  |  |  |
| CNGF0MP51 |  | Civil Clearance To Start Final Fix | milestone | 0d | 2017-06-07 | 2017-06-07 | CNGF0FN43, CNGF0FN97 | 66d | 63d |  |  | MEW | GFP | GF | MEP |
| CNGF0MP10 |  | Installation of Light Fitting & E.M Light |  | 5d | 2017-08-23 | 2017-08-28 | CNF19MP39, CNGF0MP51, ENPRC1014, CNGF0FN43 | 8d | 0d | COST [84000 h]; ELECTRICIAN [320 h] | 84,000 | LFX | GFP | GF | MEP |
| CNGF0MP11 |  | Installation of Wiring Accessories |  | 5d | 2017-08-23 | 2017-08-28 | CNF19MP40, CNGF0MP10 FF | 8d | 5d | COST [73931.2 h]; ELECTRICIAN [160 h] | 73,931.2 | MEW | GFP | GF | MEP |
| CNGF0MP12 |  | Vertical Sprinkler Drops |  | 5d | 2017-08-23 | 2017-08-28 | CNF19MP31, CNGF0MP51 | 8d | 5d | COST [40623.1 h]; PIPE FITTER [160 h] | 40,623.1 | MEW | GFP | GF | MEP |
| CNGF0MP53 |  | Hose Reel&Fire Extinguishers & Sprinklers |  | 5d | 2017-08-23 | 2017-08-28 | CNF19MP30, CNGF0MP51 | 8d | 5d | COST [100826 h]; PIPE FITTER [240 h] | 100,826.2 | MEW | GFP | GF | MEP |
| CNGF0MP54 |  | Installation of DBS |  | 5d | 2017-08-23 | 2017-08-28 | CNF19MP32, CNGF0MP51, CNP03MP32 | 3d | 0d | COST [9929.4 h]; ELECTRICIAN [80 h] | 9,929.4 | MEW | GFP | GF | MEP |
| CNGF0MP55 |  | Installation of Panels / SmDBS |  | 5d | 2017-08-23 | 2017-08-28 | CNF19MP33, CNGF0MP54 FF, ENPRC1016 | 8d | 5d | COST [111232 h]; ELECTRICIAN [320 h] | 111,232.3 | MEW | GFP | GF | MEP |
| CNGF0MP56 |  | Installation of Fire Alarm Panel & Voice Alarm System |  | 5d | 2017-08-23 | 2017-08-28 | CNF19MP34, CNGF0MP51, EN0PSPR40 FS+14d, ENPRC1016 | 8d | 5d | COST [44638.5 h]; ELECTRICIAN [80 h] | 44,638.5 | MEW | GFP | GF | MEP |
| CNGF0MP57 |  | Installation of Grills&Diffusers |  | 5d | 2017-08-23 | 2017-08-28 | CNF19MP35, CNGF0MP51 | 3d | 0d | COST [27082.8 h]; DUCTMAN [240 h] | 27,082.8 | MEW | GFP | GF | MEP |
| CNGF0MP59 |  | Installation of CCTV System |  | 5d | 2017-09-02 | 2017-09-06 | CNF19MP37, CNGF0MP54, EN0PSPR44 FS+14d | 3d | 0d | COST [43537.4 h]; ELECTRICIAN [80 h] | 43,537.4 | MEW | GFP | GF | MEP |
| CNGF0MP60 |  | Thermostat Fixing |  | 5d | 2017-09-02 | 2017-09-06 | CNF19MP38, CNGF0MP57 | 3d | 0d | COST [1381 h]; ELECTRICIAN [80 h] | 1,381 | MEW | GFP | GF | MEP |
| CNGF0MP61 |  | MEP Final Fix Clearance | milestone | 0d | 2017-09-06 | 2017-09-06 | CNGF0MP59, CNGF0MP11, CNGF0MP57, CNGF0MP60, CNGF0MP10, CNGF0MP53, CNGF0MP56, CNGF0MP55, CNGF0MP54, CNGF0MP12 | 3d |  |  |  | MEW | GFP | GF | MEP |

| ID | WBS | Activity | Type | Duration | Start | Finish | Predecessors | Total float | Free float | Resources | Cost | TYPE OF WORK L4 | ZONE L1 | FLOOR L2 | CATEGORY OF WORK L3 |
| --- | --- | --- | --- | --- | --- | --- | --- | --- | --- | --- | --- | --- | --- | --- | --- |
|  | MEP | **Substation & Pump & ETS and Main Electrical Rooms &ETS** |  |  | 2016-07-11 | 2017-09-07 |  |  |  |  |  |  |  |  |  |
|  | 1.1 | **MEP 1st Fix** |  |  | 2016-07-11 | 2016-07-18 |  |  |  |  |  |  |  |  |  |
| CNGF0FN55 |  | Walls Cutting & Chasing |  | 3d | 2016-07-11 | 2016-07-13 | CNGF0FN53 FF+3d | 4d | 0d | COST [6151 h] | 6,151 | MEW | GFP | GF | FNS |
| CNGF0MP22 |  | MEP 1st Fix |  | 5d | 2016-07-13 | 2016-07-18 | EN0PSRA01, EN0PSRA66, EN0PSRA68, EN0PSRA72, EN0PSRA84, EN0PSRA47, EN0PSRA52, EN0PSRA56, EN0PSRA60, EN0PSRA64, EN0PSRA74, EN0PSRA81, CNGF0FN53, CNGF0FN55 SS+2d | 4d | 0d | COST [158362 h]; ELECTRICIAN [80 h]; PLUMBER [80 h]; PIPE FITTER [80 h] | 158,361.7 | MEW | GFP | GF | MEP |
| CNGF0MP23 |  | MEP Clearance To Start Plaster | milestone | 0d | 2016-07-18 | 2016-07-18 | EN0PSRA01, EN0PSRA66, EN0PSRA68, EN0PSRA72, EN0PSRA84, EN0PSRA47, EN0PSRA52, EN0PSRA56, EN0PSRA60, EN0PSRA64, EN0PSRA74, EN0PSRA81, CNGF0FN53, CNGF0FN55 SS+2d, CNGF0MP22 | 4d | 0d |  |  | MEW | GFP | GF | MEP |
|  | 1.2 | **MEP 2nd Fix** |  |  | 2017-04-01 | 2017-04-20 |  |  |  |  |  |  |  |  |  |
| CNGF0MP24 |  | Civil Clearance To Start 2nd Fix | milestone | 0d | 2017-04-01 | 2017-04-01 | CNGF0MP25, CNF12CW20, CNGF0FN59, CNGF0MP23, CNGF0FN58 | 57d | 14d |  |  | MEW | GFP | GF | MEP |
| CNGF0MP45 |  | MEP 2nd Fix |  | 5d | 2017-04-16 | 2017-04-20 | CNGF0MP32 SF+2d, CNGF0MP24 FF+3d, CNGF0MP46 SS | 43d | 0d | COST [1741975 h]; ELECTRICIAN [160 h]; PLUMBER [120 h]; PIPE FITTER [80 h]; DUCTMAN [120 h]; AC TECHNICIAN [120 h] | 1,741,975.4 | MEW | GFP | GF | MEP |
| CNGF0MP49 |  | MEP Clearance To Close Ceilings | milestone | 0d | 2017-04-20 | 2017-04-20 | CNGF0MP40 SS, CNGF0MP35 SS, CNGF0MP38 SS, CNGF0MP32 SS, CNGF0MP33 SS, CNGF0MP22, CNGF0MP34 SS, CNGF0MP36 SS, CNGF0FN59, CNGF0MP37 SS, ENPRC1013, CNGF0MP24, CNGF0MP39 SS, CNGF0FN58, CNGF0MP45, ENPRC1002 | 43d | 0d |  |  | MEW | GFP | GF | MEP |
|  | 1.3 | **MEP 3rd Fix** |  |  | 2017-04-20 | 2017-09-07 |  |  |  |  |  |  |  |  |  |
| CNGF0MP62 |  | Civil Clearance To Start Final Fix | milestone | 0d | 2017-04-20 | 2017-04-20 | CNGF0MP49 | 43d | 0d |  |  | MEW | GFP | GF | MEP |
| CNGF0MP68 |  | MEP 3rd Fix |  | 7d | 2017-08-28 | 2017-09-07 | CNF19MP32, CNGF0MP62, CNF19MP36 | 48d | 0d | COST [1266891 h]; ELECTRICIAN [112 h]; AC TECHNICIAN [256 h]; PIPE FITTER [112 h] | 1,266,891.4 | MEW | GFP | GF | MEP |
| CNGF0MP73 |  | MEP Final Fix Clearance | milestone | 0d | 2017-09-07 | 2017-09-07 | CNF19MP37, EN0PSPR43 FS+14d, EN0PSPR44 FS+14d, CNF19MP31, CNF19MP30, CNF19MP32, CNF19MP33, CNF19MP34, EN0PSPR40 FS+7d, ENPRC1016, CNF19MP39, ENPRC1014, CNF19MP40, CNF19MP35, CNGF0MP62, CNGF0MP68 | 48d | 23d |  |  | MEW | GFP | GF | MEP |
|  | 2 | **1st Podium** |  |  | 2016-05-12 | 2017-10-10 |  |  |  |  |  |  |  |  |  |
|  | 1.5.1.1.2.3.2 | **Concrete** |  |  | 2016-05-12 | 2016-06-01 |  |  |  |  |  |  |  |  |  |
| CNP01CW10 |  | Slab Form Work |  | 7d | 2016-05-12 | 2016-05-19 | CNGF0CW12, CNGF0CW17 SS+1d | 0d |  | COST [283210 h]; Shutter Carpenter [2240 h]; Helper [1120 h]; Form Work [4120 M2] | 283,210 | STR | GFP | P01 | CON |
| CNP01CW15 |  | Slab Rebar & Post Tension Tendons |  | 8d | 2016-05-14 | 2016-05-22 | ENCMSRA10, CNP01CW10 SS+1d, CNP01CW10 FF+2d | 0d |  | COST [639959 h]; Steel Fixer [1856 h]; Helper [960 h]; Steel Rebars [67750 Kg] | 639,959.02 | RFT | GFP | P01 | CON |
| CNP01CW90 |  | TECOM Steel Inspection prior to concrete pouring | milestone | 0d | 2016-05-22 | 2016-05-22 | CNP01CW15 FF, CNP01CW91 | 0d |  |  |  |  | GFP | P01 | CON |
| CNP01CW20 |  | Slab Casting |  | 2d | 2016-05-23 | 2016-05-24 | ENCMSRA50, CNP01CW90, CNP01CW15 | 0d |  | COST [605873 h] | 605,872.6 | RFC | GFP | P01 | CON |
| CNP01CW30 |  | Columns and Walls Rebar |  | 5d | 2016-05-25 | 2016-05-30 | CNP01CW20 | 0d |  | COST [294808 h]; Steel Fixer [1560 h]; Helper [800 h]; Steel Rebars [76800 Kg] | 294,808.5 | RFT | GFP | P01 | CON |
| CNP01CW45 |  | PT Tensioning and Grouting |  | 5d | 2016-05-25 | 2016-05-30 | CNP01CW20 | 9d |  | COST |  |  | GFP | P01 | CON |
| CNP01CW40 |  | Columns and Walls Form Work |  | 5d | 2016-05-26 | 2016-05-31 | CNP01CW30 FF+1d | 0d |  | COST [81750 h]; Shutter Carpenter [920 h]; Helper [480 h]; Form Work [1664 M2] | 81,750 | STR | GFP | P01 | CON |
| CNP01CW55 |  | Columns Casting |  | 3d | 2016-05-30 | 2016-06-01 | CNP01CW40 SS+1d, CNP01CW40 FF+1d | 0d |  | COST [128093 h] | 128,093 | RFC | GFP | P01 | CON |
|  | 2 | **Finishes** |  |  | 2016-07-14 | 2017-10-10 |  |  |  |  |  |  |  |  |  |
|  | 1.5.2.1.2.1 | **General** |  |  | 2016-07-14 | 2017-10-10 |  |  |  |  |  |  |  |  |  |
| CNP01FN35 |  | Block Works |  | 6d | 2016-07-14 | 2016-07-20 | ENCMSPR51, CNF04CW10 | 4d | 0d | COST [103912 h]; Helper [336 h]; Mason [672 h]; Block [1000 M2] | 103,911.5 | B4-MAS | GFP | P01 | FNS |
| CNP01FN45 |  | Concrete Up Stand |  | 4d | 2016-07-21 | 2016-07-25 | CNP01FN35 | 7d | 3d | COST [20000 h] | 20,000 | URF | GFP | P01 | FNS |
| CNP01FN50 |  | Internal Walls Plaster Works |  | 15d | 2016-07-30 | 2016-08-15 | CNP01FN45, CNP01MP16 | 4d | 0d | COST [60812 h]; Helper [600 h]; Mason [1200 h]; Plastering [2734 M2] | 60,812 | PLS | GFP | P01 | FNS |
| CNP01FN60 |  | Wall Paint Primer & Stucco |  | 12d | 2016-08-16 | 2016-08-29 | ENCMSPR53, CNP01FN50 | 10d | 3d | COST [2530 h]; Painter [960 h]; Paint [2734 M2] | 2,530 | SRW | GFP | P01 | FNS |
| CNP01FN65 |  | Wall Paint Pre-Final Coats |  | 12d | 2017-02-02 | 2017-02-15 | CNP01FN90, CNP01FN85, CNP01FN60 | 5d | 0d | COST [9000 h]; Painter [576 h]; Paint [2734 M2] | 9,000 | SRW | GFP | P01 | FNS |
| CNP01FN99 |  | Internal Signage |  | 3d | 2017-06-21 | 2017-06-24 | CNP01FN55, CNGF0FN99 | 8d | 0d | COST [2365 h]; Signage Labor [96 h] | 2,365 | SGN | GFP | P01 | FNS |
| CNP01FN70 |  | Paint Final Coat |  | 2d | 2017-10-09 | 2017-10-10 | CNF19FN48, CNP01FN65 | 17d | 0d | COST [625 h]; Painter [256 h]; Paint [2734 M2] | 625 | PFC | GFP | P01 | FNS |

| ID | WBS | Activity | Type | Duration | Start | Finish | Predecessors | Total float | Free float | Resources | Cost | TYPE OF WORK L4 | ZONE L1 | FLOOR L2 | CATEGORY OF WORK L3 |
| --- | --- | --- | --- | --- | --- | --- | --- | --- | --- | --- | --- | --- | --- | --- | --- |
|  | 1.5.2.1.2.2 | **Parking Area** |  |  | 2016-12-26 | 2017-07-27 |  |  |  |  |  |  |  |  |  |
| CNP01FN75 |  | Epoxy Primer Paint For Soffits |  | 14d | 2016-12-26 | 2017-01-11 | ENCMSPR52, CNF14CW20 | 5d | 0d | COST [180096 h]; Painter [896 h]; Paint [4155 M2] | 180,096 | EPF | GFP | P01 | FNS |
| CNP01FN80 |  | Anti-Carbonation Paint For Walls |  | 10d | 2017-01-09 | 2017-01-19 | CNP01FN75 FF+7d | 5d | 0d | COST [62045 h]; Painter [560 h]; Paint [2420 M2] | 62,045 | CRB | GFP | P01 | FNS |
| CNP01FN85 |  | Interlock |  | 15d | 2017-01-16 | 2017-02-01 | CNP01FN90 FF+3d | 5d | 0d | COST [6480 h]; Interlock Labor [120 h]; Helper [120 h] | 6,480 | CPR | GFP | P01 | FNS |
| CNP01FN90 |  | Kerbstone |  | 8d | 2017-01-21 | 2017-01-29 | CNP01FN80 | 5d | 0d | COST [10080 h]; Kerbstone Labor [64 h]; Helper [64 h] | 10,080 | CPR | GFP | P01 | FNS |
| CNP01FN95 |  | Epoxy Primer Paint for Floor |  | 14d | 2017-02-02 | 2017-02-18 | ENCMSPR52, CNP01FN85 | 47d | 34d | COST [230000 h]; Painter [896 h]; Paint [4155 M2] | 230,000 | EPF | GFP | P01 | FNS |
| CNP01FN100 |  | Road Marking |  | 6d | 2017-05-20 | 2017-05-25 | ENCMSPR58, CNP01FN95 | 16d | 0d | COST [68484 h] | 68,484 | DEC | GFP | P01 | FNS |
| CNP01FN105 |  | Columns & Wall Guards |  | 4d | 2017-07-04 | 2017-07-08 | CNP01FN95, EN0PSRA34 | 44d | 0d | COST [10000 h] | 10,000 | CPR | GFP | P01 | FNS |
| CNP01FN115 |  | Traffic Signage & Convex Mirrors |  | 4d | 2017-07-18 | 2017-07-22 | ENPRC1009, CNP01FN100, EN0PSRA34 | 32d | 0d | COST [8399 h] | 8,399 | SGN | GFP | P01 | FNS |
| CNP01FN110 |  | Wheel Stoppers |  | 3d | 2017-07-25 | 2017-07-27 | ENCMSPR59 FS+7d, CNP01FN95, EN0PSRA34 | 29d | 0d | COST [61712 h] | 61,712 | CPR | GFP | P01 | FNS |
|  | 1.5.2.1.2.3 | **Stairs** |  |  | 2017-04-24 | 2017-05-18 |  |  |  |  |  |  |  |  |  |
| CNP01FN15 |  | Epoxy Primer Paint for Ceiling |  | 7d | 2017-04-24 | 2017-05-01 | ENCMSPR52, CNP01FN10, CNF16FN10 | 12d | 0d | COST [2167 h]; Painter [56 h]; Paint [61 M2] | 2,167 | EPC | GFP | P01 | FNS |
| CNP01FN25 |  | Emulsion Primer Paint & Stucco for Wall |  | 4d | 2017-05-02 | 2017-05-06 | ENCMSPR52, CNP01FN15 | 17d | 0d | COST [6113 h]; Painter [32 h]; Paint [172 M2] | 6,113 | SRW | GFP | P01 | FNS |
| CNP01FN30 |  | Epoxy Primer Paint for Floor |  | 4d | 2017-05-07 | 2017-05-10 | ENCMSPR52, CNP01FN25, CNP01FN15 | 17d | 0d | COST [13113.9 h]; Painter [32 h]; Paint [63 M2] | 13,113.9 | EPF | GFP | P01 | FNS |
| CNP01FN31 |  | Stair Handrail |  | 4d | 2017-05-11 | 2017-05-15 | CNP01FN30 | 17d | 0d | COST [30000 h]; Helper [64 h]; Aluminium Labor [32 h] | 30,000 | B5-MTW | GFP | P01 | FNS |
| CNP01FN20 |  | Steel Doors |  | 3d | 2017-05-16 | 2017-05-18 | CNP01FN31, EN0PSPR31 SS+30d, CNP01FN30 | 20d | 1d | Steel Works Labor [24 h]; Helper [48 h]; COST [31730.8 h] | 31,730.81 | STD | GFP | P01 | FNS |
|  | 1.5.2.1.2.4 | **Lift Lobby** |  |  | 2017-01-12 | 2017-02-27 |  |  |  |  |  |  |  |  |  |
| CNP01FN10 |  | Ceiling Finishes |  | 10d | 2017-01-12 | 2017-01-23 | CNP01FN75 | 88d | 0d | COST [30667 h]; False Ceiling Fixer [80 h] | 30,667 | IDC | GFP | P01 | FNS |
| CNP01FN11 |  | Walls Finishes |  | 15d | 2017-01-24 | 2017-02-09 | CNP01FN10 | 90d | 0d | COST [30667 h]; Helper [120 h]; Mason [120 h] | 30,667 | IDC | GFP | P01 | FNS |
| CNP01FN55 |  | Floor Finishes |  | 15d | 2017-02-11 | 2017-02-27 | CNP01FN11, EN0PSPR30 SS+45d | 90d | 38d | COST [30667 h]; Helper [120 h]; Mason [120 h] | 30,667 | IDF | GFP | P01 | FNS |
|  | 1.1 | **MEP** |  |  | 2016-05-14 | 2017-04-09 |  |  |  |  |  |  |  |  |  |
|  | 1.1 | **MEP 1st Fix** |  |  | 2016-05-14 | 2016-07-28 |  |  |  |  |  |  |  |  |  |
| CNP01CW91 |  | MEP Conduits for the slab |  | 8d | 2016-05-14 | 2016-05-22 | CNP01CW15 SS, CNP01CW15 FF | 0d |  | COST [214225 h]; ELECTRICIAN [960 h]; PLUMBER [128 h] | 214,225.1 | MEW | GFP | P01 | CON |
| CNP01FN40 |  | Walls Cutting & Chasing |  | 4d | 2016-07-21 | 2016-07-25 | CNP01FN35 | 4d | 0d | COST [6151 h] | 6,151 | MEW | GFP | P01 | FNS |
| CNP01MP12 |  | Civil Clearance To Start 1st Fix | milestone | 0d | 2016-07-24 | 2016-07-24 | EN0PSRA69, EN0PSRA88, EN0PSRA85, EN0PSRA48, EN0PSRA53, EN0PSRA57, EN0PSRA61, EN0PSRA65, EN0PSRA75, EN0PSRA82, CNP01FN40 SS+2d, CNP01FN35 | 4d | 0d |  |  | MEW | GFP | P01 | MEP |
| CNP01MP13 |  | Drainage Pipes ( In Walls) |  | 5d | 2016-07-24 | 2016-07-28 | CNP01MP12 | 4d | 0d | COST [18315.6 h]; PLUMBER [80 h] | 18,315.6 | MEW | GFP | P01 | MEP |
| CNP01MP14 |  | Water Supply Pipes ( In Walls) |  | 5d | 2016-07-24 | 2016-07-28 | CNP01MP12 | 4d | 0d | COST [26928.4 h]; PLUMBER [80 h] | 26,928.4 | MEW | GFP | P01 | MEP |
| CNP01MP15 |  | Sleeves,Conduites,Gi Box,DB Box In Wall |  | 5d | 2016-07-24 | 2016-07-28 | CNP01MP12 | 4d | 0d | COST [48200.5 h]; ELECTRICIAN [160 h] | 48,200.5 | MEW | GFP | P01 | MEP |
| CNP01MP16 |  | MEP Clearance To Start Plaster | milestone | 0d | 2016-07-28 | 2016-07-28 | CNP01MP13, CNP01MP14, CNP01MP15 | 4d | 0d |  |  | MEW | GFP | P01 | MEP |

| ID | WBS | Activity | Type | Duration | Start | Finish | Predecessors | Total float | Free float | Resources | Cost | TYPE OF WORK L4 | ZONE L1 | FLOOR L2 | CATEGORY OF WORK L3 |
| --- | --- | --- | --- | --- | --- | --- | --- | --- | --- | --- | --- | --- | --- | --- | --- |
|  | 1.2 | **MEP 2nd Fix** |  |  | 2016-08-15 | 2016-08-30 |  |  |  |  |  |  |  |  |  |
| CNP01MP17 |  | Civil Clearance To Start 2nd Fix | milestone | 0d | 2016-08-15 | 2016-08-15 | CNP01FN50 | 20d | 0d |  |  | MEW | GFP | P01 | MEP |
| CNP01MP11 |  | Cable Tray / Trunking |  | 10d | 2016-08-16 | 2016-08-27 | CNP01MP17 | 21d | 5d | COST [153534 h]; ELECTRICIAN [480 h] | 153,534.2 | MEW | GFP | P01 | MEP |
| CNP01MP21 |  | Ducting Work Including Insulation |  | 10d | 2016-08-16 | 2016-08-27 | CNP01FN50 | 21d | 0d | COST [186091 h]; DUCTMAN [160 h] | 186,091.2 | MEW | GFP | P01 | MEP |
| CNP01MP22 |  | Installation of FCUs & Fans |  | 10d | 2016-08-16 | 2016-08-27 | CNP01MP21 FF, ENPRC1013 | 21d | 5d | COST [6391.8 h]; AC TECHNICIAN [160 h] | 6,391.8 | MEW | GFP | P01 | MEP |
| CNP01MP23 |  | Chilled Water Pipes (High L) |  | 10d | 2016-08-16 | 2016-08-27 | CNP01FN50 | 21d | 5d | COST [109870 h]; AC TECHNICIAN [160 h] | 109,870.1 | MEW | GFP | P01 | MEP |
| CNP01MP24 |  | LPG Piping |  | 10d | 2016-08-16 | 2016-08-27 | CNP01FN50, EN0PSPR11 FS+7d | 21d | 5d | COST [67153.8 h]; PIPE FITTER [160 h] | 67,153.8 | MEW | GFP | P01 | MEP |
| CNP01MP25 |  | Fire Fighting Pipes (Mains/Branches) |  | 10d | 2016-08-16 | 2016-08-27 | CNP01FN50 | 21d | 5d | COST [79182 h]; PIPE FITTER [480 h] | 79,182 | MEW | GFP | P01 | MEP |
| CNP01MP18 |  | Drainage Pipes (High L) |  | 10d | 2016-08-17 | 2016-08-28 | CNP01MP17 FS+1d | 20d | 0d | COST [121568 h]; PLUMBER [160 h] | 121,568.3 | MEW | GFP | P01 | MEP |
| CNP01MP19 |  | Wires |  | 7d | 2016-08-17 | 2016-08-24 | CNP01MP15, CNP01MP17 FS+1d | 32d | 8d | COST [153534 h]; ELECTRICIAN [560 h] | 153,534.2 | MEW | GFP | P01 | MEP |
| CNP01MP20 |  | Water Supply Pipes (High L) |  | 10d | 2016-08-17 | 2016-08-28 | CNP01MP18 FF | 20d | 5d | COST [141452 h]; PLUMBER [160 h] | 141,451.6 | MEW | GFP | P01 | MEP |
| CNP01MP26 |  | Acoustic Drainage Pipe Insulation |  | 8d | 2016-08-22 | 2016-08-30 | CNP01MP18 FF+2d | 24d | 7d | COST [6151 h] | 6,151 | MEW | GFP | P01 | MEP |
|  | 1.3 | **MEP 3rd Fix** |  |  | 2017-03-30 | 2017-04-09 |  |  |  |  |  |  |  |  |  |
| CNP01MP29 |  | MEP Clearance To Start Final Fix | milestone | 0d | 2017-03-30 | 2017-03-30 | GRKDS1030, CNP01MP23, CNP01MP20, CNP01MP19, CNP01MP25, CNP01MP22, CNP01MP18, CNP01MP24, CNP01MP26, CNP01MP11 | 44d | 0d |  |  | MEW | GFP | P01 | MEP |
| CNP01MP10 |  | Vertical Sprinkler Drops |  | 3d | 2017-04-01 | 2017-04-03 | CNP01MP29 | 51d | 0d | COST [4988.6 h]; PIPE FITTER [48 h] | 4,988.6 | MEW | GFP | P01 | MEP |
| CNP01MP31 |  | Hose Reel&Fire Extinguishers & Sprinklers |  | 4d | 2017-04-01 | 2017-04-04 | CNP01MP29 | 48d | 0d | COST [46832.8 h]; PIPE FITTER [64 h] | 46,832.8 | MEW | GFP | P01 | MEP |
| CNP01MP32 |  | Installation of DBS |  | 4d | 2017-04-01 | 2017-04-04 | CNP01MP29 | 44d | 0d | COST [9929.4 h]; ELECTRICIAN [64 h] | 9,929.4 | MEW | GFP | P01 | MEP |
| CNP01MP33 |  | Installation of Panels / SmDBS |  | 4d | 2017-04-01 | 2017-04-04 | CNP01MP32 FF, ENPRC1016 | 48d | 0d | COST [46476.1 h]; ELECTRICIAN [64 h] | 46,476.1 | MEW | GFP | P01 | MEP |
| CNP01MP34 |  | Installation of Fire Alarm Panel & Voice Alarm System |  | 4d | 2017-04-01 | 2017-04-04 | CNP01MP29, EN0PSPR40 FS+14d, ENPRC1016 | 48d | 0d | COST [20087.7 h]; ELECTRICIAN [64 h] | 20,087.7 | MEW | GFP | P01 | MEP |
| CNP01MP35 |  | Installation of Light Fitting & E.M Light |  | 4d | 2017-04-01 | 2017-04-04 | CNP01MP29, ENPRC1014 | 48d | 0d | COST [48000 h]; ELECTRICIAN [192 h] | 48,000 | LFX | GFP | P01 | MEP |
| CNP01MP36 |  | Installation of Wiring Accessories |  | 4d | 2017-04-01 | 2017-04-04 | CNP01MP35 FF | 48d | 0d | COST [15564.6 h]; ELECTRICIAN [64 h] | 15,564.6 | MEW | GFP | P01 | MEP |
| CNP01MP37 |  | Installation of Grills&Diffusers |  | 4d | 2017-04-01 | 2017-04-04 | CNP01MP29 | 44d | 0d | COST [3325.4 h]; DUCTMAN [64 h] | 3,325.4 | MEW | GFP | P01 | MEP |
| CNP01MP38 |  | Installation of Telephone System |  | 4d | 2017-04-05 | 2017-04-09 | CNP01MP32 | 44d | 0d | COST [32690.3 h]; ELECTRICIAN [64 h] | 32,690.3 | MEW | GFP | P01 | MEP |
| CNP01MP39 |  | Installation of CCTV System |  | 4d | 2017-04-05 | 2017-04-09 | CNP01MP32, EN0PSPR43 FS+14d, EN0PSPR44 FS+14d | 44d | 0d | COST [8707.3 h]; ELECTRICIAN [64 h] | 8,707.3 | MEW | GFP | P01 | MEP |
| CNP01MP40 |  | Thermostat Fixing |  | 4d | 2017-04-05 | 2017-04-09 | CNP01MP37 | 44d | 0d | COST [1381 h]; ELECTRICIAN [64 h] | 1,381 | MEW | GFP | P01 | MEP |
| CNP01MP41 |  | MEP Final Fix Clearance | milestone | 0d | 2017-04-09 | 2017-04-09 | CNP01MP39, CNP01MP36, CNP01MP37, CNP01MP40, CNP01MP38, CNP01MP35, CNP01MP31, CNP01MP34, CNP01MP33, CNP01MP32, CNP01MP10 | 106d | 4d |  |  | MEW | GFP | P01 | MEP |

| ID | WBS | Activity | Type | Duration | Start | Finish | Predecessors | Total float | Free float | Resources | Cost | TYPE OF WORK L4 | ZONE L1 | FLOOR L2 | CATEGORY OF WORK L3 |
| --- | --- | --- | --- | --- | --- | --- | --- | --- | --- | --- | --- | --- | --- | --- | --- |
|  | 3 | **2nd Podium** |  |  | 2016-05-31 | 2017-10-12 |  |  |  |  |  |  |  |  |  |
|  | 1.5.1.1.2.3.2 | **Concrete** |  |  | 2016-05-31 | 2016-06-19 |  |  |  |  |  |  |  |  |  |
| CNP02CW10 |  | Slab Form Work |  | 7d | 2016-05-31 | 2016-06-07 | CNP01CW55 FF+1d, CNP01CW55 SS+1d | 0d |  | COST [244485 h]; Shutter Carpenter [2240 h]; Helper [1120 h]; Form Work [4120 M2] | 244,485 | STR | GFP | P02 | CON |
| CNP02CW15 |  | Slab Rebar & Post Tension Tendons |  | 8d | 2016-06-01 | 2016-06-09 | ENCMSRA10, CNP02CW10 SS+1d, CNP02CW10 FF+2d | 0d |  | COST [603266 h]; Steel Fixer [1856 h]; Helper [960 h]; Steel Rebars [67750 Kg] | 603,265.77 | RFT | GFP | P02 | CON |
| CNP02CW90 |  | TECOM Steel Inspection prior to concrete pouring | milestone | 0d | 2016-06-09 | 2016-06-09 | CNP02CW15 FF, CNP02CW91 | 0d |  |  |  |  | GFP | P02 | CON |
| CNP02CW20 |  | Slab Casting |  | 2d | 2016-06-11 | 2016-06-12 | CNP01CW45, ENCMSRA50, CNP02CW90, CNP02CW15 | 0d |  | COST [551686 h] | 551,686.5 | RFC | GFP | P02 | CON |
| CNP02CW30 |  | Columns and Walls Rebar |  | 5d | 2016-06-12 | 2016-06-16 | CNP02CW20 FF+1d, CNP02CW20 SS+1d | 0d |  | COST [294808 h]; Steel Fixer [1560 h]; Helper [800 h]; Steel Rebars [76800 Kg] | 294,808.5 | RFT | GFP | P02 | CON |
| CNP02CW40 |  | Columns and Walls Form Work |  | 5d | 2016-06-13 | 2016-06-18 | CNP02CW30 SS+1d, CNP02CW30 FF+1d | 0d |  | COST [81750 h]; Shutter Carpenter [920 h]; Helper [480 h]; Form Work [1664 M2] | 81,750 | STR | GFP | P02 | CON |
| CNP02CW45 |  | PT Tensioning and Grouting |  | 5d | 2016-06-13 | 2016-06-18 | CNP02CW20 | 8d |  | COST |  |  | GFP | P02 | CON |
| CNP02CW55 |  | Columns Casting |  | 3d | 2016-06-16 | 2016-06-19 | CNP02CW40 SS+1d, CNP02CW40 FF+1d | 0d |  | COST [128093 h] | 128,093 | RFC | GFP | P02 | CON |
|  | 2 | **Finishes** |  |  | 2016-07-21 | 2017-10-12 |  |  |  |  |  |  |  |  |  |
|  | 1.5.2.1.2.1 | **General** |  |  | 2016-07-21 | 2017-10-12 |  |  |  |  |  |  |  |  |  |
| CNP02FN11 |  | Block Works |  | 6d | 2016-07-21 | 2016-07-27 | ENCMSPR51, CNP01FN35 | 13d | 0d | COST [103912 h]; Helper [336 h]; Mason [672 h]; Block [1000 M2] | 103,911.5 | B4-MAS | GFP | P02 | FNS |
| CNP02FN16 |  | Concrete Up Stand |  | 4d | 2016-07-28 | 2016-08-01 | CNP02FN11 | 16d | 12d | COST [20000 h] | 20,000 | URF | GFP | P02 | FNS |
| CNP02FN18 |  | Internal Walls Plaster Works |  | 15d | 2016-08-16 | 2016-09-01 | CNP02FN16, CNP01FN50, CNP02MP16 | 4d | 0d | COST [60087 h]; Helper [600 h]; Mason [1200 h]; Plastering [2734 M2] | 60,087 | PLS | GFP | P02 | FNS |
| CNP02FN20 |  | Wall Paint Primer & Stucco |  | 12d | 2016-09-03 | 2016-09-19 | ENCMSPR53, CNP02FN18, CNP01FN60 | 7d | 3d | COST [5530 h]; Painter [960 h]; Paint [2734 M2] | 5,530 | SRW | GFP | P02 | FNS |
| CNP02FN21 |  | Wall Paint Pre-Final Coats |  | 4d | 2017-02-16 | 2017-02-20 | CNP01FN65, CNP02FN20 | 5d | 0d | COST [7000 h]; Painter [192 h]; Paint [2734 M2] | 7,000 | SRW | GFP | P02 | FNS |
| CNP02FN99 |  | Internal Signage |  | 3d | 2017-06-25 | 2017-06-29 | CNP02FN19, CNP01FN99 | 8d | 0d | COST [2164 h]; Signage Labor [96 h] | 2,164 | SGN | GFP | P02 | FNS |
| CNP02FN22 |  | Paint Final Coat |  | 2d | 2017-10-11 | 2017-10-12 | CNP02FN21, CNP01FN70 | 17d | 0d | COST [625 h]; Painter [256 h]; Paint [2734 M2] | 625 | PFC | GFP | P02 | FNS |
|  | 1.5.2.1.2.2 | **Parking Area** |  |  | 2017-02-21 | 2017-07-31 |  |  |  |  |  |  |  |  |  |
| CNP02FN23 |  | Epoxy Primer Paint For Soffits |  | 14d | 2017-02-21 | 2017-03-08 | ENCMSPR52, CNP02FN21, CNP01FN75 | 5d | 0d | COST [187814 h]; Painter [896 h]; Paint [4155 M2] | 187,814 | EPF | GFP | P02 | FNS |
| CNP02FN24 |  | Anti-Carbonation Paint For Walls |  | 10d | 2017-03-06 | 2017-03-16 | CNP02FN23 FF+7d, CNP01FN80 | 12d | 0d | COST [62045 h]; Painter [560 h]; Paint [2420 M2] | 62,045 | CRB | GFP | P02 | FNS |
| CNP02FN25 |  | Interlock |  | 15d | 2017-03-13 | 2017-03-29 | CNP02FN26 FF+3d, CNP01FN85 | 12d | 0d | COST [6480 h]; Interlock Labor [120 h]; Helper [120 h] | 6,480 | CPR | GFP | P02 | FNS |
| CNP02FN26 |  | Kerbstone |  | 8d | 2017-03-18 | 2017-03-26 | CNP02FN24, CNP01FN90 | 12d | 0d | COST [10080 h]; Kerbstone Labor [64 h]; Helper [64 h] | 10,080 | CPR | GFP | P02 | FNS |
| CNP02FN27 |  | Epoxy Primer Paint for Floor |  | 14d | 2017-03-30 | 2017-04-15 | ENCMSPR52, CNP02FN25, CNP01FN95 | 13d | 1d | COST [240000 h]; Painter [896 h]; Paint [4155 M2] | 240,000 | EPF | GFP | P02 | FNS |
| CNP02FN28 |  | Road Marking |  | 6d | 2017-05-27 | 2017-06-01 | ENCMSPR58, CNP02FN27, CNP01FN100 | 65d | 0d | COST [68484 h] | 68,484 | DEC | GFP | P02 | FNS |
| CNP02FN29 |  | Columns & Wall Guards |  | 4d | 2017-07-09 | 2017-07-12 | CNP02FN27, CNP01FN105 | 44d | 0d | COST [10000 h] | 10,000 | CPR | GFP | P02 | FNS |
| CNP02FN31 |  | Traffic Signage & Convex Mirrors |  | 4d | 2017-07-23 | 2017-07-26 | ENPRC1009, ENCMSPR59, CNP02FN28, CNP01FN115 | 32d | 0d | COST [8497 h] | 8,497 | SGN | GFP | P02 | FNS |
| CNP02FN30 |  | Wheel Stoppers |  | 3d | 2017-07-29 | 2017-07-31 | ENCMSPR59, CNP02FN27, CNP01FN110 | 29d | 0d | COST [61712 h] | 61,712 | CPR | GFP | P02 | FNS |

| ID | WBS | Activity | Type | Duration | Start | Finish | Predecessors | Total float | Free float | Resources | Cost | TYPE OF WORK L4 | ZONE L1 | FLOOR L2 | CATEGORY OF WORK L3 |
| --- | --- | --- | --- | --- | --- | --- | --- | --- | --- | --- | --- | --- | --- | --- | --- |
|  | 1.5.2.1.2.3 | **Stairs** |  |  | 2017-05-02 | 2017-05-23 |  |  |  |  |  |  |  |  |  |
| CNP02FN12 |  | Epoxy Primer Paint for Ceiling |  | 4d | 2017-05-02 | 2017-05-06 | ENCMSPR52, CNP02FN23, CNP01FN15 | 12d | 0d | COST [2821 h]; Painter [32 h]; Paint [61 M2] | 2,821 | EPC | GFP | P02 | FNS |
| CNP02FN14 |  | Epoxy Primer Paint for Wall |  | 4d | 2017-05-07 | 2017-05-10 | ENCMSPR52, CNP02FN12, CNP01FN25 | 17d | 0d | COST [6113 h]; Painter [64 h]; Paint [172 M2] | 6,113 | EPF | GFP | P02 | FNS |
| CNP02FN17 |  | Epoxy Primer Paint for Floor |  | 4d | 2017-05-11 | 2017-05-15 | ENCMSPR52, CNP02FN14, CNP01FN30 | 17d | 0d | COST [12122.3 h]; Painter [32 h]; Paint [63 M2] | 12,122.3 | EPF | GFP | P02 | FNS |
| CNP02FN80 |  | Stair Handrail |  | 4d | 2017-05-16 | 2017-05-20 | CNP02FN17, CNP01FN31 | 17d | 0d | COST [30000 h]; Helper [64 h]; Aluminium Labor [32 h] | 30,000 | B5-MTW | GFP | P02 | FNS |
| CNP02FN13 |  | Steel Doors |  | 3d | 2017-05-21 | 2017-05-23 | CNP02FN80, CNP02FN17, EN0PSPR31 SS+30d, CNP01FN20 | 19d | 1d | Steel Works Labor [24 h]; Helper [48 h]; COST [31730.8 h] | 31,730.81 | STD | GFP | P02 | FNS |
|  | 1.5.2.1.2.4 | **Lift Lobby** |  |  | 2017-03-26 | 2017-04-25 |  |  |  |  |  |  |  |  |  |
| CNP02FN10 |  | Ceiling Finishes |  | 6d | 2017-03-26 | 2017-04-01 | CNP03FN23, CNP01FN10, CNP02MP23, CNP02MP20, CNP02MP19, CNP02MP25, CNP02MP22, CNP02MP18, CNP02MP24, CNP02MP26, CNP02MP11 | 59d | 0d | COST [30667 h]; False Ceiling Fixer [48 h] | 30,667 | IDC | GFP | P02 | FNS |
| CNP02FN90 |  | Walls Finishes |  | 10d | 2017-04-02 | 2017-04-12 | CNP02FN10, CNP01FN11 | 59d | 0d | COST [30667 h]; Helper [80 h]; Mason [80 h] | 30,667 | IDC | GFP | P02 | FNS |
| CNP02FN19 |  | Floor Finishes |  | 10d | 2017-04-13 | 2017-04-25 | CNP02FN90, CNP01FN55, EN0PSPR30 SS+75d | 59d | 0d | COST [30667 h]; Helper [80 h]; Mason [80 h] | 30,667 | IDF | GFP | P02 | FNS |
|  | 1.1 | **MEP** |  |  | 2016-06-01 | 2017-04-13 |  |  |  |  |  |  |  |  |  |
|  | 1.1 | **MEP 1st Fix** |  |  | 2016-06-01 | 2016-08-04 |  |  |  |  |  |  |  |  |  |
| CNP02CW91 |  | MEP Conduits for the slab |  | 8d | 2016-06-01 | 2016-06-09 | CNP02CW15 SS, CNP02CW15 FF | 0d |  | COST [214225 h]; ELECTRICIAN [960 h]; PLUMBER [128 h] | 214,225.1 | MEW | GFP | P02 | CON |
| CNP02FN15 |  | Walls Cutting & Chasing |  | 4d | 2016-07-28 | 2016-08-01 | CNP02FN11 | 13d | 0d | COST [6151 h] | 6,151 | MEW | GFP | P02 | FNS |
| CNP02MP12 |  | Civil Clearance To Start 1st Fix | milestone | 0d | 2016-07-31 | 2016-07-31 | EN0PSRA69, EN0PSRA88, EN0PSRA85, EN0PSRA48, EN0PSRA53, EN0PSRA57, EN0PSRA61, EN0PSRA65, EN0PSRA75, EN0PSRA82, CNP02FN15 SS+2d | 13d | 0d |  |  | MEW | GFP | P02 | MEP |
| CNP02MP13 |  | Drainage Pipes ( In Walls) |  | 5d | 2016-07-31 | 2016-08-04 | CNP02MP12, CNP01MP13 | 13d | 0d | COST [18315.6 h]; PLUMBER [80 h] | 18,315.6 | MEW | GFP | P02 | MEP |
| CNP02MP14 |  | Water Supply Pipes ( In Walls) |  | 5d | 2016-07-31 | 2016-08-04 | CNP02MP12, CNP01MP14 | 13d | 0d | COST [26928.4 h]; PLUMBER [80 h] | 26,928.4 | MEW | GFP | P02 | MEP |
| CNP02MP15 |  | Sleeves,Conduites,Gi Box,DB Box In Wall |  | 5d | 2016-07-31 | 2016-08-04 | CNP02MP12, CNP01MP15 | 13d | 0d | COST [48200.5 h]; ELECTRICIAN [160 h] | 48,200.5 | MEW | GFP | P02 | MEP |
| CNP02MP16 |  | MEP Clearance To Start Plaster | milestone | 0d | 2016-08-04 | 2016-08-04 | CNP02MP13, CNP02MP14, CNP02MP15 | 13d | 9d |  |  | MEW | GFP | P02 | MEP |
|  | 1.2 | **MEP 2nd Fix** |  |  | 2016-09-01 | 2016-09-20 |  |  |  |  |  |  |  |  |  |
| CNP02MP17 |  | Civil Clearance To Start 2nd Fix | milestone | 0d | 2016-09-01 | 2016-09-01 | CNP02FN18 | 15d | 0d |  |  | MEW | GFP | P02 | MEP |
| CNP02MP11 |  | Cable Tray / Trunking |  | 10d | 2016-09-03 | 2016-09-17 | CNP02MP17, CNP01MP11 | 16d | 5d | COST [153534 h]; ELECTRICIAN [480 h] | 153,534.2 | MEW | GFP | P02 | MEP |
| CNP02MP21 |  | Ducting Work Including Insulation |  | 10d | 2016-09-03 | 2016-09-17 | CNP01MP21, CNP02FN18 | 16d | 0d | COST [186091 h]; DUCTMAN [160 h] | 186,091.2 | MEW | GFP | P02 | MEP |
| CNP02MP22 |  | Installation of FCUs & Fans |  | 10d | 2016-09-03 | 2016-09-17 | CNP02MP21 FF, CNP01MP22, ENPRC1013 | 16d | 5d | COST [6391.8 h]; AC TECHNICIAN [160 h] | 6,391.8 | MEW | GFP | P02 | MEP |
| CNP02MP23 |  | Chilled Water Pipes (High L) |  | 10d | 2016-09-03 | 2016-09-17 | CNP01MP23, CNP02FN18 | 16d | 5d | COST [109870 h]; AC TECHNICIAN [160 h] | 109,870.1 | MEW | GFP | P02 | MEP |
| CNP02MP24 |  | LPG Piping |  | 10d | 2016-09-03 | 2016-09-17 | CNP01MP24, CNP02FN18, EN0PSPR11 FS+7d | 16d | 5d | COST [67153.8 h]; PIPE FITTER [160 h] | 67,153.8 | MEW | GFP | P02 | MEP |
| CNP02MP25 |  | Fire Fighting Pipes (Mains/Branches) |  | 10d | 2016-09-03 | 2016-09-17 | CNP01MP25, CNP02FN18 | 16d | 5d | COST [79182 h]; PIPE FITTER [480 h] | 79,182 | MEW | GFP | P02 | MEP |
| CNP02MP18 |  | Drainage Pipes (High L) |  | 10d | 2016-09-04 | 2016-09-18 | CNP02MP17 FS+1d, CNP01MP18 | 15d | 0d | COST [121568 h]; PLUMBER [160 h] | 121,568.3 | MEW | GFP | P02 | MEP |
| CNP02MP19 |  | Wires |  | 7d | 2016-09-04 | 2016-09-14 | CNP02MP15, CNP02MP17 FS+1d, CNP01MP19 | 24d | 8d | COST [153534 h]; ELECTRICIAN [560 h] | 153,534.2 | MEW | GFP | P02 | MEP |
| CNP02MP20 |  | Water Supply Pipes (High L) |  | 10d | 2016-09-04 | 2016-09-18 | CNP02MP18 FF, CNP01MP20 | 15d | 5d | COST [141452 h]; PLUMBER [160 h] | 141,451.6 | MEW | GFP | P02 | MEP |
| CNP02MP26 |  | Acoustic Drainage Pipe Insulation |  | 8d | 2016-09-08 | 2016-09-20 | CNP02MP18 FF+2d, CNP01MP26 | 17d | 7d | COST [6151 h] | 6,151 | MEW | GFP | P02 | MEP |

| ID | WBS | Activity | Type | Duration | Start | Finish | Predecessors | Total float | Free float | Resources | Cost | TYPE OF WORK L4 | ZONE L1 | FLOOR L2 | CATEGORY OF WORK L3 |
| --- | --- | --- | --- | --- | --- | --- | --- | --- | --- | --- | --- | --- | --- | --- | --- |
|  | 1.3 | **MEP 3rd Fix** |  |  | 2017-03-30 | 2017-04-13 |  |  |  |  |  |  |  |  |  |
| CNP02MP29 |  | MEP Clearance To Start Final Fix | milestone | 0d | 2017-03-30 | 2017-03-30 | GRKDS1030, CNP02MP23, CNP02MP20, CNP02MP19, CNP02MP25, CNP02MP22, CNP02MP18, CNP02MP24, CNP02MP26, CNP02MP11 | 48d | 3d |  |  | MEW | GFP | P02 | MEP |
| CNP02MP10 |  | Vertical Sprinkler Drops |  | 3d | 2017-04-04 | 2017-04-06 | CNP01MP10, CNP02MP29 | 51d | 0d | COST [4988.6 h]; PIPE FITTER [48 h] | 4,988.6 | MEW | GFP | P02 | MEP |
| CNP02MP31 |  | Hose Reel&Fire Extinguishers & Sprinklers |  | 4d | 2017-04-05 | 2017-04-09 | CNP01MP31, CNP02MP29 | 48d | 0d | COST [46832.8 h]; PIPE FITTER [64 h] | 46,832.8 | MEW | GFP | P02 | MEP |
| CNP02MP32 |  | Installation of DBS |  | 4d | 2017-04-05 | 2017-04-09 | CNP02MP29, CNP01MP32 | 44d | 0d | COST [9929.4 h]; ELECTRICIAN [64 h] | 9,929.4 | MEW | GFP | P02 | MEP |
| CNP02MP33 |  | Installation of Panels / SmDBS |  | 4d | 2017-04-05 | 2017-04-09 | CNP01MP33, CNP02MP32 FF, ENPRC1016 | 48d | 0d | COST [46476.1 h]; ELECTRICIAN [64 h] | 46,476.1 | MEW | GFP | P02 | MEP |
| CNP02MP34 |  | Installation of Fire Alarm Panel & Voice Alarm System |  | 4d | 2017-04-05 | 2017-04-09 | CNP02MP29, CNP01MP34, EN0PSPR40 FS+14d, ENPRC1016 | 48d | 0d | COST [20087.7 h]; ELECTRICIAN [64 h] | 20,087.7 | MEW | GFP | P02 | MEP |
| CNP02MP35 |  | Installation of Light Fitting & E.M Light |  | 4d | 2017-04-05 | 2017-04-09 | CNP02MP29, CNP01MP35, ENPRC1014 | 48d | 0d | COST [48000 h]; ELECTRICIAN [192 h] | 48,000 | LFX | GFP | P02 | MEP |
| CNP02MP36 |  | Installation of Wiring Accessories |  | 4d | 2017-04-05 | 2017-04-09 | CNP02MP35 FF, CNP01MP36 | 48d | 0d | COST [15564.6 h]; ELECTRICIAN [64 h] | 15,564.6 | MEW | GFP | P02 | MEP |
| CNP02MP37 |  | Installation of Grills&Diffusers |  | 4d | 2017-04-05 | 2017-04-09 | CNP02MP29, CNP01MP37 | 44d | 0d | COST [3325.4 h]; DUCTMAN [64 h] | 3,325.4 | MEW | GFP | P02 | MEP |
| CNP02MP38 |  | Installation of Telephone System |  | 4d | 2017-04-10 | 2017-04-13 | CNP02MP32, CNP01MP38 | 44d | 0d | COST [32690.3 h]; ELECTRICIAN [64 h] | 32,690.3 | MEW | GFP | P02 | MEP |
| CNP02MP39 |  | Installation of CCTV System |  | 4d | 2017-04-10 | 2017-04-13 | CNP02MP32, CNP01MP39, EN0PSPR44 FS+14d | 44d | 0d | COST [8707.3 h]; ELECTRICIAN [64 h] | 8,707.3 | MEW | GFP | P02 | MEP |
| CNP02MP40 |  | Thermostat Fixing |  | 4d | 2017-04-10 | 2017-04-13 | CNP02MP37, CNP01MP40 | 44d | 0d | COST [1381 h]; ELECTRICIAN [64 h] | 1,381 | MEW | GFP | P02 | MEP |
| CNP02MP41 |  | MEP Final Fix Clearance | milestone | 0d | 2017-04-13 | 2017-04-13 | CNP02MP39, CNP02MP36, CNP02MP37, CNP02MP40, CNP02MP38, CNP02MP35, CNP02MP31, CNP02MP34, CNP02MP33, CNP02MP32, CNP02MP10, CNP01MP41 | 102d | 4d |  |  | MEW | GFP | P02 | MEP |
|  | 4 | **3rd Podium** |  |  | 2016-06-18 | 2017-10-15 |  |  |  |  |  |  |  |  |  |
|  | 1.5.1.1.2.3.2 | **Concrete** |  |  | 2016-06-18 | 2016-07-10 |  |  |  |  |  |  |  |  |  |
| CNP03CW10 |  | Slab Form Work |  | 7d | 2016-06-18 | 2016-06-25 | CNP02CW55 FF+1d, CNP02CW55 SS+1d | 0d |  | COST [226975 h]; Shutter Carpenter [2240 h]; Helper [1120 h]; Form Work [4120 M2] | 226,975 | STR | GFP | P03 | CON |
| CNP03CW15 |  | Slab Rebar & Post Tension Tendons |  | 8d | 2016-06-19 | 2016-06-27 | ENCMSRA10, CNP03CW10 SS+1d, CNP03CW10 FF+2d | 0d |  | COST [571127 h]; Steel Fixer [1856 h]; Helper [960 h]; Steel Rebars [67750 Kg] | 571,126.67 | RFT | GFP | P03 | CON |
| CNP03CW90 |  | TECOM Steel Inspection prior to concrete pouring | milestone | 0d | 2016-06-27 | 2016-06-27 | CNP03CW15 FF, CNP03CW91 | 0d |  |  |  |  | GFP | P03 | CON |
| CNP03CW20 |  | Slab Casting |  | 2d | 2016-06-28 | 2016-06-29 | CNP02CW45, ENCMSRA50, CNP03CW90, CNP03CW15 | 0d |  | COST [517393 h] | 517,392.8 | RFC | GFP | P03 | CON |
| CNP03CW30 |  | Columns and Walls Rebar |  | 5d | 2016-06-30 | 2016-07-05 | CNP03CW20 | 0d |  | COST [323964 h]; Steel Fixer [1560 h]; Helper [800 h]; Steel Rebars [76800 Kg] | 323,963.5 | RFT | GFP | P03 | CON |
| CNP03CW45 |  | PT Tensioning and Grouting |  | 5d | 2016-06-30 | 2016-07-05 | CNP03CW20 | 7d |  | COST |  |  | GFP | P03 | CON |
| CNP03CW40 |  | Columns and Walls Form Work |  | 5d | 2016-07-02 | 2016-07-09 | CNP03CW30 SS+1d, CNP03CW30 FF+1d | 0d |  | COST [93550 h]; Shutter Carpenter [920 h]; Helper [480 h]; Form Work [1664 M2] | 93,550 | STR | GFP | P03 | CON |
| CNP03CW55 |  | Columns Casting |  | 3d | 2016-07-05 | 2016-07-10 | CNP03CW40 SS+1d, CNP03CW40 FF+1d | 0d |  | COST [147754 h] | 147,754 | RFC | GFP | P03 | CON |

| ID | WBS | Activity | Duration | Start | Finish | Predecessors | Total float | Free float | Resources | Cost | TYPE OF WORK L4 | ZONE L1 | FLOOR L2 | CATEGORY OF WORK L3 |
| --- | --- | --- | --- | --- | --- | --- | --- | --- | --- | --- | --- | --- | --- | --- |
|  | 2 | **Finishes** |  | 2016-07-28 | 2017-10-15 |  |  |  |  |  |  |  |  |  |
|  | 1.5.2.1.2.1 | **General** |  | 2016-07-28 | 2017-10-15 |  |  |  |  |  |  |  |  |  |
| CNP03FN11 |  | Block Works | 6d | 2016-07-28 | 2016-08-03 | ENCMSPR51, CNP02FN11 | 21d | 0d | COST [131996 h]; Helper [336 h]; Mason [672 h]; Block [1000 M2] | 131,996 | B4-MAS | GFP | P03 | FNS |
| CNP03FN16 |  | Concrete Up Stand | 4d | 2016-08-04 | 2016-08-08 | CNP03FN11 | 25d | 21d | COST [20000 h] | 20,000 | URF | GFP | P03 | FNS |
| CNP03FN18 |  | Internal Walls Plaster Works | 15d | 2016-09-03 | 2016-09-22 | CNP03FN15, CNP03FN16, CNP02FN18, CNP03MP16 | 4d | 0d | COST [59512 h]; Helper [600 h]; Mason [1200 h]; Plastering [2734 M2] | 59,512 | PLS | GFP | P03 | FNS |
| CNP03FN20 |  | Wall Paint Primer & Stucco | 12d | 2016-09-24 | 2016-10-08 | ENCMSPR53, CNP03FN18, CNP02FN20 | 4d | 0d | COST [5530 h]; Painter [960 h]; Paint [2734 M2] | 5,530 | SRW | GFP | P03 | FNS |
| CNP03FN21 |  | Wall Paint Pre-Final Coats | 4d | 2017-02-21 | 2017-02-25 | CNP02FN21, CNP03FN20 | 15d | 10d | COST [7000 h]; Painter [192 h]; Paint [2734 M2] | 7,000 | SRW | GFP | P03 | FNS |
| CNP03FN99 |  | Internal Signage | 3d | 2017-07-01 | 2017-07-03 | CNP03FN19, CNP02FN99 | 8d | 0d | COST [2164 h]; Signage Labor [96 h] | 2,164 | SGN | GFP | P03 | FNS |
| CNP03FN22 |  | Paint Final Coat | 2d | 2017-10-14 | 2017-10-15 | CNP03FN21, CNP02FN22 | 17d | 0d | COST [625 h]; Painter [256 h]; Paint [2734 M2] | 625 | PFC | GFP | P03 | FNS |
|  | 1.5.2.1.2.2 | **Parking Area** |  | 2017-03-09 | 2017-08-03 |  |  |  |  |  |  |  |  |  |
| CNP03FN23 |  | Epoxy Primer Paint For Soffits | 14d | 2017-03-09 | 2017-03-25 | ENCMSPR52, CNP03FN21, CNP02FN23 | 5d | 0d | COST [186286 h]; Painter [896 h]; Paint [4155 M2] | 186,286 | EPF | GFP | P03 | FNS |
| CNP03FN24 |  | Anti-Carbonation Paint For Walls | 10d | 2017-03-22 | 2017-04-02 | CNP03FN23 FF+7d, CNP02FN24 | 13d | 0d | COST [62045 h]; Painter [560 h]; Paint [2420 M2] | 62,045 | CRB | GFP | P03 | FNS |
| CNP03FN25 |  | Interlock | 15d | 2017-03-30 | 2017-04-16 | CNP03FN26 FF+3d, CNP02FN25 | 12d | 0d | COST [6480 h]; Interlock Labor [120 h]; Helper [120 h] | 6,480 | CPR | GFP | P03 | FNS |
| CNP03FN26 |  | Kerbstone | 8d | 2017-04-03 | 2017-04-11 | CNP03FN24, CNP02FN26 | 13d | 1d | COST [10080 h]; Kerbstone Labor [64 h]; Helper [64 h] | 10,080 | CPR | GFP | P03 | FNS |
| CNP03FN27 |  | Epoxy Primer Paint for Floor | 14d | 2017-04-17 | 2017-05-03 | ENCMSPR52, CNP03FN25, CNP02FN27 | 12d | 0d | COST [243867 h]; Painter [896 h]; Paint [4155 M2] | 243,867 | EPF | GFP | P03 | FNS |
| CNP03FN28 |  | Road Marking | 12d | 2017-06-03 | 2017-06-15 | ENCMSPR58, CNP03FN27, CNP02FN28 | 65d | 33d | Painter [96 h]; COST [68484 h] | 68,484 | DEC | GFP | P03 | FNS |
| CNP03FN29 |  | Columns & Wall Guards | 4d | 2017-07-13 | 2017-07-17 | CNP03FN27, CNP02FN29 | 44d |  | Car Park Accessories Labor [128 h]; COST [10000 h] | 10,000 | CPR | GFP | P03 | FNS |
| CNP03FN31 |  | Traffic Signage & Convex Mirrors | 4d | 2017-07-27 | 2017-07-31 | ENPRC1009, ENCMSPR59, CNP03FN28, CNP02FN31 | 32d |  | Signage Labor [32 h]; COST [8497 h] | 8,497 | SGN | GFP | P03 | FNS |
| CNP03FN30 |  | Wheel Stoppers | 3d | 2017-08-01 | 2017-08-03 | ENCMSPR59, CNP03FN27, CNP02FN30 | 29d |  | Car Park Accessories Labor [48 h]; COST [61712 h] | 61,712 | CPR | GFP | P03 | FNS |
|  | 1.5.2.1.2.3 | **Stairs** |  | 2017-05-07 | 2017-05-28 |  |  |  |  |  |  |  |  |  |
| CNP03FN12 |  | Epoxy Primer Paint for Ceiling | 4d | 2017-05-07 | 2017-05-10 | ENCMSPR52, CNP03FN23, CNP02FN12 | 12d | 0d | COST [1817 h]; Painter [32 h]; Paint [61 M2] | 1,817 | EPC | GFP | P03 | FNS |
| CNP03FN14 |  | Epoxy Primer Paint for Wall | 4d | 2017-05-11 | 2017-05-15 | ENCMSPR52, CNP03FN12, CNP02FN14 | 17d | 0d | COST [7221 h]; Painter [64 h]; Paint [172 M2] | 7,221 | EPF | GFP | P03 | FNS |
| CNP03FN17 |  | Epoxy Primer Paint for Floor | 4d | 2017-05-16 | 2017-05-20 | ENCMSPR52, CNP03FN14, CNP02FN17 | 17d | 0d | COST [17389 h]; Painter [32 h]; Paint [63 M2] | 17,389 | EPF | GFP | P03 | FNS |
| CNP03FN80 |  | Stair Handrail | 4d | 2017-05-21 | 2017-05-24 | CNP03FN17, CNP02FN80 | 17d | 0d | COST [30000 h]; Helper [64 h]; Aluminium Labor [32 h] | 30,000 | B5-MTW | GFP | P03 | FNS |
| CNP03FN13 |  | Steel Doors | 3d | 2017-05-25 | 2017-05-28 | CNP03FN80, CNP03FN17, EN0PSPR31 SS+30d, CNP02FN13 | 18d | 1d | Steel Works Labor [24 h]; Helper [48 h]; COST [31730.8 h] | 31,730.81 | STD | GFP | P03 | FNS |

| ID | WBS | Activity | Type | Duration | Start | Finish | Predecessors | Total float | Free float | Resources | Cost | TYPE OF WORK L4 | ZONE L1 | FLOOR L2 | CATEGORY OF WORK L3 |
| --- | --- | --- | --- | --- | --- | --- | --- | --- | --- | --- | --- | --- | --- | --- | --- |
|  | 1.5.2.1.2.4 | **Lift Lobby** |  |  | 2017-04-02 | 2017-04-29 |  |  |  |  |  |  |  |  |  |
| CNP03FN10 |  | Ceiling Finishes |  | 6d | 2017-04-02 | 2017-04-08 | CNP02FN10, CNP03MP23, CNP03MP20, CNP03MP19, CNP03MP25, CNP03MP22, CNP03MP18, CNP03MP24, CNP03MP26, CNP03MP11 | 63d | 4d | COST [30667 h]; False Ceiling Fixer [48 h] | 30,667 | IDC | GFP | P03 | FNS |
| CNP03FN90 |  | Walls Finishes |  | 10d | 2017-04-13 | 2017-04-25 | CNP03FN10, CNP02FN90 | 59d | 0d | COST [30667 h]; Helper [80 h]; Mason [80 h] | 30,667 | IDC | GFP | P03 | FNS |
| CNP03FN19 |  | Floor Finishes |  | 3d | 2017-04-26 | 2017-04-29 | CNP03FN90, CNP02FN19, EN0PSPR30 SS+75d | 59d | 51d | COST [30667 h]; Helper [24 h]; Mason [24 h] | 30,667 | IDF | GFP | P03 | FNS |
|  | 1.1 | **MEP** |  |  | 2016-06-19 | 2017-04-18 |  |  |  |  |  |  |  |  |  |
|  | 1.1 | **MEP 1st Fix** |  |  | 2016-06-19 | 2016-08-11 |  |  |  |  |  |  |  |  |  |
| CNP03CW91 |  | MEP Conduits for the slab |  | 8d | 2016-06-19 | 2016-06-27 | CNP03CW15 SS, CNP03CW15 FF | 0d |  | COST [214225 h]; ELECTRICIAN [960 h]; PLUMBER [128 h] | 214,225.1 | MEW | GFP | P03 | CON |
| CNP03FN15 |  | Walls Cutting & Chasing |  | 4d | 2016-08-04 | 2016-08-08 | CNP03FN11 | 22d | 0d | COST [6151 h] | 6,151 | MEW | GFP | P03 | FNS |
| CNP03MP12 |  | Civil Clearance To Start 1st Fix | milestone | 0d | 2016-08-07 | 2016-08-07 | EN0PSRA69, EN0PSRA88, EN0PSRA85, EN0PSRA48, EN0PSRA53, EN0PSRA57, EN0PSRA61, EN0PSRA65, EN0PSRA75, EN0PSRA82, CNP03FN15 SS+2d | 22d | 0d |  |  | MEW | GFP | P03 | MEP |
| CNP03MP13 |  | Drainage Pipes ( In Walls) |  | 5d | 2016-08-07 | 2016-08-11 | CNP03MP12, CNP02MP13 | 22d | 0d | COST [18315.6 h]; PLUMBER [320 h] | 18,315.6 | MEW | GFP | P03 | MEP |
| CNP03MP14 |  | Water Supply Pipes ( In Walls) |  | 5d | 2016-08-07 | 2016-08-11 | CNP03MP12, CNP02MP14 | 22d | 0d | COST [26928.4 h]; PLUMBER [240 h] | 26,928.4 | MEW | GFP | P03 | MEP |
| CNP03MP15 |  | Sleeves,Conduites,Gi Box,DB Box In Wall |  | 5d | 2016-08-07 | 2016-08-11 | CNP03MP12, CNP02MP15 | 22d | 0d | COST [48200.5 h]; ELECTRICIAN [160 h] | 48,200.5 | MEW | GFP | P03 | MEP |
| CNP03MP16 |  | MEP Clearance To Start Plaster | milestone | 0d | 2016-08-11 | 2016-08-11 | CNP03MP13, CNP03MP14, CNP03MP15 | 22d | 18d |  |  | MEW | GFP | P03 | MEP |
|  | 1.2 | **MEP 2nd Fix** |  |  | 2016-09-22 | 2016-10-09 |  |  |  |  |  |  |  |  |  |
| CNP03MP17 |  | Civil Clearance To Start 2nd Fix | milestone | 0d | 2016-09-22 | 2016-09-22 | CNP03FN18 | 10d | 0d |  |  | MEW | GFP | P03 | MEP |
| CNP03MP11 |  | Cable Tray / Trunking |  | 10d | 2016-09-24 | 2016-10-05 | CNP03MP17, CNP02MP11 | 11d | 2d | COST [153534 h]; ELECTRICIAN [480 h] | 153,534.2 | MEW | GFP | P03 | MEP |
| CNP03MP21 |  | Ducting Work Including Insulation |  | 10d | 2016-09-24 | 2016-10-05 | CNP02MP21, CNP03FN18 | 11d | 0d | COST [186091 h]; DUCTMAN [160 h] | 186,091.2 | MEW | GFP | P03 | MEP |
| CNP03MP22 |  | Installation of FCUs & Fans |  | 10d | 2016-09-24 | 2016-10-05 | CNP03MP21 FF, CNP02MP22, ENPRC1013 | 11d | 2d | COST [6391.8 h]; AC TECHNICIAN [160 h] | 6,391.8 | MEW | GFP | P03 | MEP |
| CNP03MP23 |  | Chilled Water Pipes (High L) |  | 10d | 2016-09-24 | 2016-10-05 | CNP02MP23, CNP03FN18 | 11d | 2d | COST [109870 h]; AC TECHNICIAN [160 h] | 109,870.1 | MEW | GFP | P03 | MEP |
| CNP03MP24 |  | LPG Piping |  | 10d | 2016-09-24 | 2016-10-05 | CNP02MP24, CNP03FN18, EN0PSPR11 FS+7d | 11d | 2d | COST [67153.8 h]; PIPE FITTER [160 h] | 67,153.8 | MEW | GFP | P03 | MEP |
| CNP03MP25 |  | Fire Fighting Pipes (Mains/Branches) |  | 10d | 2016-09-24 | 2016-10-05 | CNP02MP25, CNP03FN18 | 11d | 2d | COST [79182 h]; PIPE FITTER [480 h] | 79,182 | MEW | GFP | P03 | MEP |
| CNP03MP18 |  | Drainage Pipes (High L) |  | 10d | 2016-09-25 | 2016-10-06 | CNP03MP17 FS+1d, CNP02MP18 | 10d | 0d | COST [121568 h]; PLUMBER [320 h] | 121,568.3 | MEW | GFP | P03 | MEP |
| CNP03MP19 |  | Wires |  | 7d | 2016-09-25 | 2016-10-03 | CNP03MP15, CNP03MP17 FS+1d, CNP02MP19 | 16d | 5d | COST [153534 h]; ELECTRICIAN [560 h] | 153,534.2 | MEW | GFP | P03 | MEP |
| CNP03MP20 |  | Water Supply Pipes (High L) |  | 10d | 2016-09-25 | 2016-10-06 | CNP03MP18 FF, CNP02MP20 | 10d | 2d | COST [141452 h]; PLUMBER [320 h] | 141,451.6 | MEW | GFP | P03 | MEP |
| CNP03MP26 |  | Acoustic Drainage Pipe Insulation |  | 8d | 2016-09-29 | 2016-10-09 | CNP03MP18 FF+2d, CNP02MP26 | 10d | 2d | COST [6151 h] | 6,151 | MEW | GFP | P03 | MEP |

| ID | WBS | Activity | Type | Duration | Start | Finish | Predecessors | Total float | Free float | Resources | Cost | TYPE OF WORK L4 | ZONE L1 | FLOOR L2 | CATEGORY OF WORK L3 |
| --- | --- | --- | --- | --- | --- | --- | --- | --- | --- | --- | --- | --- | --- | --- | --- |
|  | 1.3 | **MEP 3rd Fix** |  |  | 2017-03-30 | 2017-04-18 |  |  |  |  |  |  |  |  |  |
| CNP03MP29 |  | MEP Clearance To Start Final Fix | milestone | 0d | 2017-03-30 | 2017-03-30 | GRKDS1030, CNP03MP23, CNP03MP20, CNP03MP19, CNP03MP25, CNP03MP22, CNP03MP18, CNP03MP24, CNP03MP26, CNP03MP11 | 52d | 6d |  |  | MEW | GFP | P03 | MEP |
| CNP03MP10 |  | Vertical Sprinkler Drops |  | 3d | 2017-04-08 | 2017-04-10 | CNP02MP10, CNP03MP29 | 51d | 0d | COST [4988.6 h]; PIPE FITTER [48 h] | 4,988.6 | MEW | GFP | P03 | MEP |
| CNP03MP31 |  | Hose Reel&Fire Extinguishers & Sprinklers |  | 4d | 2017-04-10 | 2017-04-13 | CNP02MP31, CNP03MP29 | 48d | 0d | COST [46832.8 h]; PIPE FITTER [64 h] | 46,832.8 | MEW | GFP | P03 | MEP |
| CNP03MP32 |  | Installation of DBS |  | 4d | 2017-04-10 | 2017-04-13 | CNP03MP29, CNP02MP32 | 44d | 0d | COST [9929.4 h]; ELECTRICIAN [64 h] | 9,929.4 | MEW | GFP | P03 | MEP |
| CNP03MP33 |  | Installation of Panels / SmDBS |  | 4d | 2017-04-10 | 2017-04-13 | CNP02MP33, CNP03MP32 FF, ENPRC1016 | 48d | 0d | COST [46476.1 h]; ELECTRICIAN [64 h] | 46,476.1 | MEW | GFP | P03 | MEP |
| CNP03MP34 |  | Installation of Fire Alarm Panel & Voice Alarm System |  | 4d | 2017-04-10 | 2017-04-13 | CNP03MP29, CNP02MP34, EN0PSPR40 FS+14d, ENPRC1016 | 48d | 0d | COST [20087.7 h]; ELECTRICIAN [64 h] | 20,087.7 | MEW | GFP | P03 | MEP |
| CNP03MP35 |  | Installation of Light Fitting & E.M Light |  | 4d | 2017-04-10 | 2017-04-13 | CNP03MP29, CNP02MP35, ENPRC1014 | 48d | 0d | COST [48000 h]; ELECTRICIAN [192 h] | 48,000 | LFX | GFP | P03 | MEP |
| CNP03MP36 |  | Installation of Wiring Accessories |  | 4d | 2017-04-10 | 2017-04-13 | CNP03MP35 FF, CNP02MP36 | 48d | 0d | COST [15564.6 h]; ELECTRICIAN [64 h] | 15,564.6 | MEW | GFP | P03 | MEP |
| CNP03MP37 |  | Installation of Grills&Diffusers |  | 4d | 2017-04-10 | 2017-04-13 | CNP03MP29, CNP02MP37 | 44d | 0d | COST [3325.4 h]; DUCTMAN [64 h] | 3,325.4 | MEW | GFP | P03 | MEP |
| CNP03MP38 |  | Installation of Telephone System |  | 4d | 2017-04-15 | 2017-04-18 | CNP03MP32, CNP02MP38 | 44d | 0d | COST [32690.3 h]; ELECTRICIAN [64 h] | 32,690.3 | MEW | GFP | P03 | MEP |
| CNP03MP39 |  | Installation of CCTV System |  | 4d | 2017-04-15 | 2017-04-18 | CNP03MP32, CNP02MP39, EN0PSPR44 FS+14d | 44d | 0d | COST [8707.3 h]; ELECTRICIAN [64 h] | 8,707.3 | MEW | GFP | P03 | MEP |
| CNP03MP40 |  | Thermostat Fixing |  | 4d | 2017-04-15 | 2017-04-18 | CNP03MP37, CNP02MP40 | 44d | 0d | COST [1381 h]; ELECTRICIAN [64 h] | 1,381 | MEW | GFP | P03 | MEP |
| CNP03MP41 |  | MEP Final Fix Clearance | milestone | 0d | 2017-04-18 | 2017-04-18 | CNP03MP39, CNP03MP36, CNP03MP37, CNP03MP40, CNP03MP38, CNP03MP35, CNP03MP31, CNP03MP34, CNP03MP33, CNP03MP32, CNP03MP10, CNP02MP41 | 98d | 4d |  |  | MEW | GFP | P03 | MEP |
|  | 3 | **Tower** |  |  | 2016-07-09 | 2017-11-05 |  |  |  |  |  |  |  |  |  |
|  | 1 | **4th Floor** |  |  | 2016-07-09 | 2017-09-13 |  |  |  |  |  |  |  |  |  |
|  | 1.5.1.1.2.3.21 | **Concrete** |  |  | 2016-07-09 | 2016-07-25 |  |  |  |  |  |  |  |  |  |
| CNF04CW10 |  | Slab Form Work |  | 5d | 2016-07-09 | 2016-07-13 | CNP03CW55 FF+1d, CNP03CW55 SS+1d | 0d |  | COST [278638 h]; Shutter Carpenter [1360 h]; Helper [680 h]; Form Work [2504 M2] | 278,637.5 | STR | TWR | F04 | CON |
| CNF04CW15 |  | Slab Rebar & Post Tension Tendons |  | 5d | 2016-07-11 | 2016-07-16 | ENCMSRA10, CNF04CW10 SS+1d, CNF04CW10 FF+2d | 0d |  | COST [737742 h]; Steel Fixer [1160 h]; Helper [600 h]; Steel Rebars [41200 Kg] | 737,741.55 | RFT | TWR | F04 | CON |
| CNF04CW90 |  | TECOM Steel Inspection prior to concrete pouring | milestone | 0d | 2016-07-16 | 2016-07-16 | CNF04CW15 FF, CNF04CW91 | 0d |  |  |  |  | TWR | F04 | CON |
| CNF04CW20 |  | Slab Casting |  | 2d | 2016-07-17 | 2016-07-18 | CNP03CW45, ENCMSRA50, CNF04CW90, CNF04CW15 | 0d |  | COST [734500 h] | 734,499.6 | RFC | TWR | F04 | CON |
| CNF04CW30 |  | Columns and Walls Rebar |  | 5d | 2016-07-18 | 2016-07-23 | CNF04CW20 SS+1d | 0d |  | COST [204737 h]; Steel Fixer [1080 h]; Helper [560 h]; Steel Rebars [53200 Kg] | 204,736.7 | RFT | TWR | F04 | CON |
| CNF04CW35 |  | Columns and Walls Form Work |  | 5d | 2016-07-19 | 2016-07-24 | CNF04CW30 FF+1d | 0d |  | COST [65500 h]; Shutter Carpenter [760 h]; Helper [400 h]; Form Work [2504 M2] | 65,500 | STR | TWR | F04 | CON |
| CNF04CW45 |  | PT Tensioning and Grouting |  | 5d | 2016-07-19 | 2016-07-24 | CNF04CW20 | 6d |  | COST |  |  | TWR | F04 | CON |
| CNF04CW50 |  | Columns Casting |  | 3d | 2016-07-23 | 2016-07-25 | GRIMS1010, CNF04CW35 SS+1d, CNF04CW35 FF+1d | 0d |  | COST [97043 h] | 97,043 | RFC | TWR | F04 | CON |

| ID | WBS | Activity | Duration | Start | Finish | Predecessors | Total float | Free float | Resources | Cost | TYPE OF WORK L4 | ZONE L1 | FLOOR L2 | CATEGORY OF WORK L3 |
| --- | --- | --- | --- | --- | --- | --- | --- | --- | --- | --- | --- | --- | --- | --- |
|  | 1 | **Finishes** |  | 2016-08-29 | 2017-09-13 |  |  |  |  |  |  |  |  |  |
|  | 1.5.2.2.1.1.1 | **General** |  | 2016-08-29 | 2017-08-13 |  |  |  |  |  |  |  |  |  |
| CNF04FN27 |  | Block Works | 15d | 2016-08-29 | 2016-09-18 | ENCMSPR51, CNP03FN11, CNF07CW10 | 0d |  | COST [349617 h]; Helper [1320 h]; Mason [2520 h]; Block [3733 M2] | 349,617 | B4-MAS | TWR | F04 | FNS |
| CNF04FN29 |  | Doors Sub Frames | 9d | 2016-09-07 | 2016-09-20 | CNF04FN27 SS+8d | 15d | 11d | COST [7164 h]; Sub-Frames [108 No] | 7,164 | B6-WDR | TWR | F04 | FNS |
| CNF04FN30 |  | Internal Walls Plaster Works | 12d | 2016-09-24 | 2016-10-08 | CNF04FN29 SS, CNP03FN18, CNF04MP16 | 4d | 0d | COST [121269 h]; Helper [672 h]; Mason [1344 h]; Plastering [3294 M2] | 121,268.81 | PLS | TWR | F04 | FNS |
| CNF04FN31 |  | Balconies Ceiling Plaster | 6d | 2016-10-09 | 2016-10-15 | CNF04FN30 | 24d | 0d | COST [33575.2 h]; Plastering [375 M2] | 33,575.25 | BCP | TWR | F04 | FNS |
| CNF04FN34 |  | Emulsion Paint for Balconies Ceiling | 3d | 2016-10-16 | 2016-10-18 | ENCMSPR57, CNF04FN31 | 24d | 0d | COST [5924 h]; Painter [96 h]; Paint [375 M2] | 5,924 | BLP | TWR | F04 | FNS |
| CNF04FN43 |  | Balconies Glazing & Aluminium Handrail | 15d | 2016-10-26 | 2016-11-12 | CNF04FN41 SS+2d, CNF04FN22, EN0PSRA14, EN0PSPR16 SS+60d | 24d | 0d | COST [250000 h]; Helper [120 h]; Aluminium Labor [120 h] | 250,000 | ALM | TWR | F04 | FNS |
| CNF04FN99 |  | Internal Signage | 3d | 2017-07-04 | 2017-07-06 | CNF04FN40, CNP03FN99 | 8d | 0d | COST [8947 h]; Signage Labor [96 h] | 8,947 | SGN | TWR | F04 | FNS |
| CNF04FN51 |  | Paint Final Coat | 3d | 2017-08-10 | 2017-08-13 | SNG000000111 SS, CNF04FN47, CNF04FN48, CNF04FN43, CNF04FN49, CNF04FN46, CNF04FN44 | 17d | 0d | COST [3000 h]; Painter [456 h]; Paint [3294 M2] | 3,000 | PFC | TWR | F04 | FNS |
|  | 1.5.2.2.1.1.2 | **Apartments** |  | 2016-10-09 | 2017-04-24 |  |  |  |  |  |  |  |  |  |
|  | 1.5.2.2.1.1.2.1 | **Dry Area** |  | 2016-10-09 | 2017-02-18 |  |  |  |  |  |  |  |  |  |
| CNF04FN32 |  | Wall Paint Primer & Stucco | 15d | 2016-10-09 | 2016-10-25 | CNP03FN20, ENCMSPR53, CNF04FN30 | 4d | 0d | COST [43043.6 h]; Painter [1080 h]; Paint [3294 M2] | 43,043.56 | PNT | TWR | F04 | FNS |
| CNF04FN41 |  | Aluminium Doors | 12d | 2016-10-09 | 2016-10-22 | CNF04FN30, EN0PSRA11, EN0PSPR13 SS+60d | 19d | 0d | Aluminium Labor [96 h]; Helper [192 h]; COST [470000 h] | 470,000 | ALM | TWR | F04 | FNS |
| CNF04FN35 |  | Gypsum Board for Ceiling | 12d | 2016-10-26 | 2016-11-08 | CNF04MP28, ENCMSPR54 FS+14d, CNF04FN32 | 4d | 0d | COST [156953 h]; False Ceiling Fixer [1056 h]; Gypsum Board [1300 M2] | 156,952.61 | GYP | TWR | F04 | FNS |
| CNF04FN33 |  | Paint for Ceiling | 12d | 2016-11-09 | 2016-11-22 | CNF04FN35 | 34d | 17d | COST [29459 h]; Painter [288 h]; Paint [1300 M2] | 29,459 | CPN | TWR | F04 | FNS |
| CNF04FN36 |  | Ceramic for Floors | 13d | 2016-11-09 | 2016-11-23 | CNF04FN41, CNF04FN35, EN0PCPR14 SS+60d | 4d | 0d | COST [135350 h]; Helper [208 h]; Mason [312 h]; Apartment Tiles [1300 M2] | 135,350.21 | TAP | TWR | F04 | FNS |
| CNF04FN90 |  | Door Frames | 7d | 2016-11-24 | 2016-12-04 | CNF04FN22, CNF04FN36 | 4d | 0d | Helper [112 h]; COST [107500 h]; Doors Carpenter [112 h] | 107,500 | DRI | TWR | F04 | FNS |
| CNF04FN42 |  | Door Shutters | 9d | 2017-01-26 | 2017-02-05 | CNF04FN90 FS+43d, CNF04FN36, CNF04FN22, CNF04FN41, EN0PSPR18 SS+60d | 4d | 0d | Helper [144 h]; COST [180000 h]; Doors Carpenter [144 h] | 180,000 | APD | TWR | F04 | FNS |
| CNF04FN47 |  | Door Ironmongeries | 10d | 2017-01-26 | 2017-02-06 | EN0PSPR202 SS+15d, CNF04FN42 SS | 29d | 0d | Finishings Carpenter [80 h]; Helper [80 h]; COST [28500 h] | 28,500 | DRI | TWR | F04 | FNS |
| CNF04FN91 |  | Thresholds | 10d | 2017-01-26 | 2017-02-06 | CNF04FN42 SS, EN0PCPR12 SS+60d, CNHUCV105 SS | 29d | 0d | Finishings Carpenter [160 h]; Helper [160 h]; COST [24887.2 h] | 24,887.25 | THR | TWR | F04 | FNS |
| CNF04FN46 |  | Wooden Wardrobes | 11d | 2017-02-06 | 2017-02-18 | CNF04FN42, CNF04FN36, EN0PSPR38 SS+60d | 8d | 0d | Wooden Wardrobes Carpenter [88 h]; Helper [88 h]; COST [87100 h] | 87,100 | WRD | TWR | F04 | FNS |
|  | 1.5.2.2.1.1.2.2 | **Wet Area** |  | 2016-10-09 | 2017-04-24 |  |  |  |  |  |  |  |  |  |
| CNF04FN21 |  | Ceramic for Walls | 12d | 2016-10-09 | 2016-10-22 | CNF04FN30, EN0PCRA17, EN0PCPR15 SS+60d, EN0PCPR90 SS+60d | 48d | 0d | COST [164439 h]; Helper [384 h]; Mason [768 h]; Wet Area Tiles [1700 M2] | 164,438.55 | WLW | TWR | F04 | FNS |
| CNF04FN22 |  | Ceramic For Floors in Balconies | 6d | 2016-10-19 | 2016-10-25 | CNF04FN34, EN0PCPR13 SS+60d | 24d | 0d | COST [35088.2 h]; Helper [48 h]; Mason [96 h]; Balconies Floor Tiles [375 M2] | 35,088.15 | FLB | TWR | F04 | FNS |
| CNF04FN23 |  | False Ceiling | 15d | 2016-10-23 | 2016-11-08 | ENCMSPR55, CNF04FN21, CNF04MP28 | 48d | 0d | COST [46376.4 h]; False Ceiling Fixer [600 h]; False Ceiling [695 M2] | 46,376.44 | CWT | TWR | F04 | FNS |
| CNF04FN25 |  | Bathtubs | 5d | 2016-10-23 | 2016-10-27 | CNF04FN21, EN0PSPR204 SS+15d | 62d | 7d | COST [35625 h] | 35,625 | bth | TWR | F04 | FNS |
| CNF04FN24 |  | Water Proofing | 12d | 2016-11-09 | 2016-11-22 | CNF04FN25 SS+1d, ENCMSPR56, CNF04FN23 | 48d | 0d | COST [102613 h]; Water Proofing [553 M2] | 102,613 | WPR | TWR | F04 | FNS |
| CNF04FN26 |  | Ceramic for Floor | 12d | 2016-11-23 | 2016-12-08 | CNF04FN25, CNF04FN24, CNSUB1070, EN0PCPR15 SS+60d, EN0PCPR90 SS+60d | 48d | 20d | COST [27945.1 h]; Helper [96 h]; Mason [96 h]; Wet Area Tiles [178 M2] | 27,945.08 | FLW | TWR | F04 | FNS |
| CNF04FN48 |  | Kitchen Cabinet | 11d | 2017-02-06 | 2017-02-18 | CNF04FN22, CNF04FN42, EN0PSRA36, EN0PSPR37 SS+60d | 4d | 0d | COST [93419 h]; Helper [88 h]; Kitchen Cabinet Carpenter [88 h] | 93,419 | KCB | TWR | F04 | FNS |
| CNF04FN49 |  | Vanity Counter | 9d | 2017-02-06 | 2017-02-15 | CNF04FN22, CNF04FN42, EN0PSPR52 SS+30d | 30d | 0d | COST [86000 h]; Helper [216 h]; Vanity Counters Labor [216 h] | 86,000 | VNC | TWR | F04 | FNS |
| CNF04FN44 |  | Sanitary Ware&Accessories | 6d | 2017-04-02 | 2017-04-08 | GRKDS1030, CNF04FN49 SS, CNF04FN42, ENPRC1005, CNF04FN22, CNF04FN25 | 11d | 0d | COST [100588 h] | 100,588.24 | SWR | TWR | F04 | FNS |
| CNF04FN45 |  | Glass Enclosure | 7d | 2017-04-09 | 2017-04-16 | CNF04FN44, EN0PSPR15 SS+60d | 11d | 0d | COST [50000 h]; Helper [56 h]; Glass Enclosure Labor [56 h] | 50,000 | ALM | TWR | F04 | FNS |
| CNF04FN50 |  | Mirrors & Toilet Accessories | 6d | 2017-04-17 | 2017-04-24 | CNF04FN44, CNF04FN45, EN0PSPR23 SS+30d | 25d | 1d | COST [86000 h]; Helper [96 h]; Mirrors Labor [48 h] | 86,000 | MRA | TWR | F04 | FNS |

| ID | WBS | Activity | Type | Duration | Start | Finish | Predecessors | Total float | Free float | Resources | Cost | TYPE OF WORK L4 | ZONE L1 | FLOOR L2 | CATEGORY OF WORK L3 |
| --- | --- | --- | --- | --- | --- | --- | --- | --- | --- | --- | --- | --- | --- | --- | --- |
|  | 1.5.2.2.1.1.3 | **Lift Lobby & Corridor** |  |  | 2016-10-27 | 2017-09-13 |  |  |  |  |  |  |  |  |  |
| CNF04FN37 |  | Ceiling Finishes |  | 12d | 2016-10-27 | 2016-11-09 | EN0PSPR200 SS+45d, CNF04MP29, EN0PSNM11 FS+14d | 43d | 0d | COST [36000 h]; False Ceiling Fixer [192 h] | 36,000 | IDC | TWR | F04 | FNS |
| CNF04FN38 |  | Wall Finishes |  | 12d | 2016-11-10 | 2016-11-23 | EN0PSPR201 SS+30d, CNF04FN30, CNF04FN37, EN0PSNM11 FS+14d | 46d | 0d | COST [49722 h]; Helper [192 h]; Mason [288 h] | 49,722 | IDW | TWR | F04 | FNS |
| CNF04FN40 |  | Floor Finishes |  | 10d | 2016-11-24 | 2016-12-07 | CNF04FN37, CNF04FN38, EN0PSPR30 SS+45d, EN0PSNM11 FS+14d | 71d | 27d | COST [52113 h]; Helper [80 h]; Mason [80 h] | 52,113 | IDF | TWR | F04 | FNS |
| CNF04FN52 |  | Carpet Laying |  | 3d | 2017-09-11 | 2017-09-13 | CNF04FN40, CNF04FN38, ATDCD1030 | 4d | 0d | COST [9109 h] | 9,109 | IDR | TWR | F04 | FNS |
|  | 1.5.2.2.1.1.4 | **Common Areas/Service Rooms** |  |  | 2017-03-26 | 2017-06-03 |  |  |  |  |  |  |  |  |  |
|  | 1 | **Service Rooms** |  |  | 2017-03-26 | 2017-05-15 |  |  |  |  |  |  |  |  |  |
| CNF04FN13 |  | Epoxy Primer Paint for Ceiling |  | 6d | 2017-03-26 | 2017-04-01 | CNP03FN23, CNF04FN33, ENCMSPR52 | 5d | 0d | COST [3833.81 h]; Painter [48 h] | 3,833.81 | EPC | TWR | F04 | FNS |
| CNF04FN14 |  | Acrylic Emulsion Primer Paint & Stucco for Wall |  | 6d | 2017-04-02 | 2017-04-08 | CNF04FN13 | 33d | 21d | COST [3248.62 h]; Painter [48 h] | 3,248.62 | SRW | TWR | F04 | FNS |
| CNF04FN15 |  | Epoxy Primer Paint for Floor |  | 6d | 2017-05-04 | 2017-05-10 | CNP03FN27, ENCMSPR52, CNF04FN14 | 12d | 0d | COST [2379.32 h]; Painter [48 h] | 2,379.32 | EPF | TWR | F04 | FNS |
| CNF04FN16 |  | Timber Doors |  | 4d | 2017-05-11 | 2017-05-15 | CNF04FN15, CNF04FN40 | 31d | 0d | COST [58000 h]; Doors Carpenter [32 h]; Helper [32 h] | 58,000 | SRD | TWR | F04 | FNS |
|  | 2 | **Stairs** |  |  | 2017-05-11 | 2017-06-03 |  |  |  |  |  |  |  |  |  |
| CNF04FN17 |  | Epoxy Primer Paint for Ceiling |  | 4d | 2017-05-11 | 2017-05-15 | ENCMSPR52, CNF04FN15, CNP03FN12 | 12d | 0d | COST [599 h]; Painter [32 h] | 599 | EPC | TWR | F04 | FNS |
| CNF04FN18 |  | Acrylic Emulsion Primer Paint & Stucco for Walls |  | 4d | 2017-05-16 | 2017-05-20 | CNF04FN17 | 12d | 0d | COST [3695.62 h]; Painter [32 h] | 3,695.62 | SRW | TWR | F04 | FNS |
| CNF04FN19 |  | Epoxy Primer Paint for Floor |  | 4d | 2017-05-21 | 2017-05-24 | ENCMSPR52, CNF04FN18, CNP03FN17 | 17d | 0d | COST [8129.16 h]; Painter [32 h] | 8,129.16 | EPF | TWR | F04 | FNS |
| CNF04FN80 |  | Stair Handrail |  | 4d | 2017-05-25 | 2017-05-29 | CNF04FN19, CNP03FN80 | 17d | 0d | COST [30000 h]; Helper [64 h]; Aluminium Labor [32 h] | 30,000 | B5-MTW | TWR | F04 | FNS |
| CNF04FN20 |  | Steel Doors |  | 4d | 2017-05-30 | 2017-06-03 | CNF04FN80, CNF04FN19, CNF04FN40, EN0PSPR31 SS+30d, CNP03FN13 | 17d | 0d | Steel Works Labor [32 h]; Helper [64 h]; COST [31730.8 h] | 31,730.81 | STD | TWR | F04 | FNS |
|  | 1.1 | **MEP** |  |  | 2017-02-06 | 2017-04-24 |  |  |  |  |  |  |  |  |  |
|  | 1.1 | **MEP 1st Fix** |  |  |  |  |  |  |  |  |  |  |  |  |  |
|  | 1.2 | **MEP 2nd Fix** |  |  |  |  |  |  |  |  |  |  |  |  |  |
|  | 1.3 | **MEP 3rd Fix** |  |  | 2017-02-06 | 2017-04-24 |  |  |  |  |  |  |  |  |  |
| CNF04MP30 |  | Civil Clearance To Start Final Fix | milestone | 0d | 2017-02-06 | 2017-02-06 | CNF04FN42, CNF04MP29, CNF04MP28, CNHUCV105 | 101d | 57d |  |  | MEW | TWR | F04 | MEP |
| CNF04MP14 |  | Vertical Sprinkler Drops |  | 4d | 2017-04-11 | 2017-04-15 | CNP03MP10, CNF04MP25 | 51d | 0d | COST [4988.6 h]; PIPE FITTER [80 h] | 4,988.6 | MEW | TWR | F04 | MEP |
| CNF04MP31 |  | Hose Reel&Fire Extinguishers & Sprinklers |  | 4d | 2017-04-15 | 2017-04-18 | CNP03MP31, CNF04MP30 | 48d | 0d | COST [46832.8 h]; PIPE FITTER [80 h] | 46,832.8 | MEW | TWR | F04 | MEP |
| CNF04MP32 |  | Installation of DBS |  | 4d | 2017-04-15 | 2017-04-18 | CNP03MP32, CNF04MP30 | 44d | 0d | COST [9929.4 h]; ELECTRICIAN [64 h] | 9,929.4 | MEW | TWR | F04 | MEP |
| CNF04MP33 |  | Installation of Panels / SmDBS |  | 4d | 2017-04-15 | 2017-04-18 | CNP03MP33, CNF04MP32 FF, ENPRC1016 | 48d | 0d | COST [46476.1 h]; ELECTRICIAN [64 h] | 46,476.1 | MEW | TWR | F04 | MEP |
| CNF04MP34 |  | Installation of Fire Alarm Panel & Voice Alarm System |  | 4d | 2017-04-15 | 2017-04-18 | CNP03MP34, CNF04MP30, EN0PSPR40 FS+14d, ENPRC1016 | 48d | 0d | COST [20087.7 h]; ELECTRICIAN [80 h] | 20,087.7 | MEW | TWR | F04 | MEP |
| CNF04MP35 |  | Installation of Light Fitting & E.M Light |  | 4d | 2017-04-15 | 2017-04-18 | CNP03MP35, CNF04MP30, ENPRC1014, CNF04FN42, CNHUCV105 | 48d | 0d | COST [84000 h]; ELECTRICIAN [80 h] | 84,000 | LFX | TWR | F04 | MEP |
| CNF04MP36 |  | Installation of Wiring Accessories |  | 4d | 2017-04-15 | 2017-04-18 | CNP03MP36, CNF04MP35 FF | 48d | 0d | COST [15564.6 h]; ELECTRICIAN [96 h] | 15,564.6 | MEW | TWR | F04 | MEP |
| CNF04MP37 |  | Installation of Grills&Diffusers |  | 4d | 2017-04-15 | 2017-04-18 | CNP03MP37, CNF04MP30 | 44d | 0d | COST [3325.4 h]; DUCTMAN [192 h] | 3,325.4 | MEW | TWR | F04 | MEP |
| CNF04MP38 |  | Installation of Telephone System |  | 4d | 2017-04-19 | 2017-04-24 | CNP03MP38, CNF04MP32 | 44d | 0d | COST [32690.3 h]; ELECTRICIAN [64 h] | 32,690.3 | MEW | TWR | F04 | MEP |
| CNF04MP39 |  | Installation of CCTV System |  | 4d | 2017-04-19 | 2017-04-24 | CNP03MP39, CNF04MP32, EN0PSPR43 FS+14d, EN0PSPR44 FS+14d | 44d | 0d | COST [8707.3 h]; ELECTRICIAN [64 h] | 8,707.3 | MEW | TWR | F04 | MEP |
| CNF04MP40 |  | Thermostat Fixing |  | 4d | 2017-04-19 | 2017-04-24 | CNP03MP40, CNF04MP37 | 44d | 0d | COST [1381 h]; ELECTRICIAN [64 h] | 1,381 | MEW | TWR | F04 | MEP |
| CNF04MP41 |  | MEP Final Fix Clearance | milestone | 0d | 2017-04-24 | 2017-04-24 | CNF04MP14, CNF04MP39, CNF04MP36, CNF04MP37, CNF04MP40, CNF04MP38, CNF04MP35, CNF04MP31, CNF04MP34, CNF04MP33, CNF04MP32, CNF04FN47, CNF04FN91, CNP03MP41 | 96d | 4d |  |  | MEW | TWR | F04 | MEP |

| ID | WBS | Activity | Type | Duration | Start | Finish | Predecessors | Total float | Free float | Resources | Cost | TYPE OF WORK L4 | ZONE L1 | FLOOR L2 | CATEGORY OF WORK L3 |
| --- | --- | --- | --- | --- | --- | --- | --- | --- | --- | --- | --- | --- | --- | --- | --- |
|  | 5 | **5th Floor** |  |  | 2016-07-24 | 2017-09-17 |  |  |  |  |  |  |  |  |  |
|  | 1.5.1.1.2.3.21 | **Concrete** |  |  | 2016-07-24 | 2016-08-09 |  |  |  |  |  |  |  |  |  |
| CNF05CW10 |  | Slab Form Work |  | 5d | 2016-07-24 | 2016-07-28 | CNF04CW50 FF+1d, CNF04CW50 SS+1d | 0d |  | COST [130248 h]; Shutter Carpenter [1360 h]; Helper [680 h]; Form Work [2504 M2] | 130,247.5 | STR | TWR | F05 | CON |
| CNF05CW15 |  | Slab Rebar & Post Tension Tendons |  | 5d | 2016-07-26 | 2016-07-31 | ENCMSRA10, CNF05CW10 SS+1d, CNF05CW10 FF+2d | 0d |  | COST [307860 h]; Steel Fixer [1160 h]; Helper [600 h]; Steel Rebars [41200 Kg] | 307,860 | RFT | TWR | F05 | CON |
| CNF05CW90 |  | TECOM Steel Inspection prior to concrete pouring | milestone | 0d | 2016-07-31 | 2016-07-31 | CNF05CW15 FF, CNF05CW91 | 0d |  |  |  |  | TWR | F05 | CON |
| CNF05CW20 |  | Slab Casting |  | 2d | 2016-08-01 | 2016-08-02 | CNF04CW45, ENCMSRA50, CNF05CW90, CNF05CW15 | 0d |  | COST [280875 h] | 280,875.1 | RFC | TWR | F05 | CON |
| CNF05CW30 |  | Columns and Walls Rebar |  | 5d | 2016-08-02 | 2016-08-07 | CNF05CW20 SS+1d | 0d |  | COST [190228 h]; Steel Fixer [1080 h]; Helper [560 h]; Steel Rebars [53200 Kg] | 190,227.8 | RFT | TWR | F05 | CON |
| CNF05CW35 |  | Columns and Walls Form Work |  | 5d | 2016-08-03 | 2016-08-08 | CNF05CW30 SS+1d, CNF05CW30 FF+1d | 0d |  | COST [64200 h]; Shutter Carpenter [760 h]; Helper [400 h]; Form Work [2504 M2] | 64,200 | STR | TWR | F05 | CON |
| CNF05CW45 |  | PT Tensioning and Grouting |  | 5d | 2016-08-03 | 2016-08-08 | CNF05CW20 | 6d |  | COST |  |  | TWR | F05 | CON |
| CNF05CW50 |  | Columns Casting |  | 3d | 2016-08-07 | 2016-08-09 | CNF05CW35 SS+1d, CNF05CW35 FF+1d | 0d |  | COST [96203 h] | 96,203 | RFC | TWR | F05 | CON |
|  | 1 | **Finishes** |  |  | 2016-09-19 | 2017-09-17 |  |  |  |  |  |  |  |  |  |
|  | 1.5.2.2.1.1.1 | **General** |  |  | 2016-09-19 | 2017-08-16 |  |  |  |  |  |  |  |  |  |
| CNF05FN10 |  | Block Works |  | 15d | 2016-09-19 | 2016-10-06 | CNF08CW10, GRIMS1020, ENCMSPR51, CNF04FN27 | 0d |  | COST [389617 h]; Helper [1320 h]; Mason [2520 h]; Block [3733 M2] | 389,616.79 | B4-MAS | TWR | F05 | FNS |
| CNF05FN20 |  | Doors Sub Frames |  | 9d | 2016-09-28 | 2016-10-09 | CNF05FN10 SS+8d | 30d | 8d | COST [7164 h]; Sub-Frames [108 No] | 7,164 | B6-WDR | TWR | F05 | FNS |
| CNF05FN21 |  | Internal Walls Plaster Works |  | 12d | 2016-10-09 | 2016-10-22 | CNF05FN20 SS, CNF04FN30, CNF05MP16 | 22d | 0d | COST [121269 h]; Helper [672 h]; Mason [1344 h]; Plastering [3294 M2] | 121,268.81 | PLS | TWR | F05 | FNS |
| CNF05FN28 |  | Balconies Ceiling Plaster |  | 6d | 2016-10-23 | 2016-10-29 | CNF04FN31, CNF05FN21 | 27d | 0d | COST [33575.2 h]; Plastering [375 M2] | 33,575.25 | BCP | TWR | F05 | FNS |
| CNF05FN35 |  | Emulsion Paint for Balconies Ceiling |  | 3d | 2016-10-30 | 2016-11-01 | CNF04FN34, ENCMSPR57, CNF05FN28 | 27d | 0d | COST [5924 h]; Painter [96 h]; Paint [375 M2] | 5,924 | BLP | TWR | F05 | FNS |
| CNF05FN42 |  | Balconies Glazing & Aluminium Handrail |  | 15d | 2016-11-13 | 2016-11-29 | CNF04FN43, CNF05FN41 SS+2d, CNF05FN13, EN0PSRA14, EN0PSPR16 SS+60d | 24d | 0d | COST [200000 h]; Helper [120 h]; Aluminium Labor [120 h] | 200,000 | ALM | TWR | F05 | FNS |
| CNF05FN99 |  | Internal Signage |  | 3d | 2017-07-08 | 2017-07-10 | CNF05FN39, CNF04FN99 | 8d | 0d | COST [9303 h]; Signage Labor [96 h] | 9,303 | SGN | TWR | F05 | FNS |
| CNF05FN51 |  | Paint Final Coat |  | 3d | 2017-08-14 | 2017-08-16 | CNF05FN44, CNF05FN47, CNF05FN42, CNF05FN48, CNF05FN45, CNF05FN46, CNF04FN51 | 17d | 0d | COST [3000 h]; Painter [456 h]; Paint [3294 M2] | 3,000 | PFC | TWR | F05 | FNS |
|  | 1.5.2.2.1.1.2 | **Apartments** |  |  | 2016-10-23 | 2017-05-02 |  |  |  |  |  |  |  |  |  |
|  | 1.5.2.2.1.1.2.1 | **Dry Area** |  |  | 2016-10-23 | 2017-03-02 |  |  |  |  |  |  |  |  |  |
| CNF05FN29 |  | Wall Paint Primer & Stucco |  | 15d | 2016-10-23 | 2016-11-08 | ENCMSPR53, CNF05FN21 | 22d | 17d | COST [43043.6 h]; Painter [1080 h]; Paint [3294 M2] | 43,043.56 | PNT | TWR | F05 | FNS |
| CNF05FN41 |  | Aluminium Doors |  | 12d | 2016-10-23 | 2016-11-05 | CNF04FN41, CNF05FN21, EN0PSRA11, EN0PSPR13 SS+60d | 37d | 2d | Aluminium Labor [96 h]; Helper [192 h]; COST [470000 h] | 470,000 | ALM | TWR | F05 | FNS |
| CNF05FN38 |  | Gypsum Board for Ceiling |  | 12d | 2016-11-29 | 2016-12-15 | CNF05MP28, ENCMSPR54 FS+14d, CNF04FN35, CNF05FN29 | 5d | 0d | COST [156953 h]; False Ceiling Fixer [1056 h]; Gypsum Board [1300 M2] | 156,952.61 | GYP | TWR | F05 | FNS |
| CNF05FN31 |  | Paint for Ceiling |  | 12d | 2016-12-17 | 2016-12-29 | CNF04FN33, CNF05FN38 | 17d | 0d | COST [29459 h]; Painter [288 h]; Paint [1300 M2] | 29,459 | CPN | TWR | F05 | FNS |
| CNF05FN40 |  | Ceramic for Floors |  | 13d | 2016-12-17 | 2016-12-31 | CNF05FN41, CNF05FN38, CNF04FN36, EN0PCPR14 SS+60d | 5d | 0d | COST [135350 h]; Helper [208 h]; Mason [312 h]; Apartment Tiles [1300 M2] | 135,350.21 | TAP | TWR | F05 | FNS |
| CNF05FN90 |  | Door Frames |  | 7d | 2017-01-02 | 2017-01-09 | CNF04FN90, CNF05FN13, CNF05FN40 | 29d | 6d | Helper [112 h]; COST [107500 h]; Doors Carpenter [112 h] | 107,500 | DRI | TWR | F05 | FNS |
| CNF05FN43 |  | Door Shutters |  | 9d | 2017-02-06 | 2017-02-15 | CNF05FN90, CNF05FN40, CNF05FN13, CNF05FN41, CNF04FN42, EN0PSPR18 SS+60d | 6d | 0d | Helper [144 h]; COST [200000 h]; Doors Carpenter [144 h] | 200,000 | APD | TWR | F05 | FNS |
| CNF05FN44 |  | Door Ironmongeries |  | 10d | 2017-02-07 | 2017-02-18 | CNF04FN47, EN0PSPR202 SS+15d, CNF05FN43 SS | 29d | 0d | Finishings Carpenter [80 h]; Helper [80 h]; COST [28500 h] | 28,500 | DRI | TWR | F05 | FNS |
| CNF05FN91 |  | Thresholds |  | 10d | 2017-02-07 | 2017-02-18 | CNF04FN91, CNF05FN43 SS, EN0PCPR12 SS+60d | 29d | 0d | Finishings Carpenter [160 h]; Helper [160 h]; COST [24887.2 h] | 24,887.25 | THR | TWR | F05 | FNS |
| CNF05FN45 |  | Wooden Wardrobes |  | 11d | 2017-02-19 | 2017-03-02 | CNF04FN46, CNF05FN43, CNF05FN40, EN0PSPR38 SS+60d | 8d | 0d | Wooden Wardrobes Carpenter [88 h]; Helper [88 h]; COST [87100 h] | 87,100 | WRD | TWR | F05 | FNS |

| ID | WBS | Activity | Duration | Start | Finish | Predecessors | Total float | Free float | Resources | Cost | TYPE OF WORK L4 | ZONE L1 | FLOOR L2 | CATEGORY OF WORK L3 |
| --- | --- | --- | --- | --- | --- | --- | --- | --- | --- | --- | --- | --- | --- | --- |
|  | 1.5.2.2.1.1.2.2 | **Wet Area** |  | 2016-10-23 | 2017-05-02 |  |  |  |  |  |  |  |  |  |
| CNF05FN12 |  | Ceramic for Walls | 12d | 2016-10-23 | 2016-11-05 | CNF04FN21, CNF05FN21, EN0PCRA17, EN0PCPR15 SS+60d, EN0PCPR90 SS+60d | 48d | 0d | COST [164439 h]; Helper [384 h]; Mason [768 h]; Wet Area Tiles [1700 M2] | 164,438.55 | WLW | TWR | F05 | FNS |
| CNF05FN13 |  | Ceramic For Floors in Balconies | 6d | 2016-11-02 | 2016-11-08 | CNF05FN35, EN0PCPR13 SS+60d | 27d | 3d | COST [35088.2 h]; Helper [48 h]; Mason [96 h]; Balconies Floor Tiles [375 M2] | 35,088.15 | FLB | TWR | F05 | FNS |
| CNF05FN33 |  | Bathtubs | 5d | 2016-11-06 | 2016-11-10 | CNF05FN12, EN0PSPR204 SS+15d, CNF04FN25 | 62d | 9d | COST [35625 h] | 35,625 | bth | TWR | F05 | FNS |
| CNF05FN23 |  | False Ceiling | 15d | 2016-11-29 | 2016-12-19 | CNF05MP28, ENCMSPR55, CNF05FN12 | 28d | 0d | COST [46376.4 h]; False Ceiling Fixer [600 h]; False Ceiling [695 M2] | 46,376.44 | CWT | TWR | F05 | FNS |
| CNF05FN25 |  | Water Proofing | 12d | 2016-12-20 | 2017-01-03 | CNF05FN33 SS+1d, ENCMSPR56, CNF05FN23, CNF04FN24 | 28d | 0d | COST [102613 h]; Water Proofing [553 M2] | 102,613 | WPR | TWR | F05 | FNS |
| CNF05FN34 |  | Ceramic for Floor | 12d | 2017-01-04 | 2017-01-17 | CNF05FN33, CNF05FN25, CNF04FN26, CNSUB1070, EN0PCPR15 SS+60d, EN0PCPR90 SS+60d | 28d | 0d | COST [27945.1 h]; Helper [96 h]; Mason [96 h]; Wet Area Tiles [178 M2] | 27,945.08 | FLW | TWR | F05 | FNS |
| CNF05FN48 |  | Vanity Counter | 9d | 2017-02-16 | 2017-02-26 | CNF05FN13, CNF05FN43, CNF04FN49, EN0PSPR52 SS+30d | 30d | 1d | COST [86000 h]; Helper [216 h]; Vanity Counters Labor [216 h] | 86,000 | VNC | TWR | F05 | FNS |
| CNF05FN47 |  | Kitchen Cabinet | 11d | 2017-02-19 | 2017-03-02 | CNF05FN13, CNF05FN43, CNF04FN48, EN0PSRA36, EN0PSPR37 SS+60d | 4d | 0d | COST [93417 h]; Helper [88 h]; Kitchen Cabinet Carpenter [88 h] | 93,417 | KCB | TWR | F05 | FNS |
| CNF05FN46 |  | Sanitary Ware&Accessories | 6d | 2017-04-09 | 2017-04-15 | CNF05FN48 SS, CNF05FN43, CNF05FN13, CNF05FN33, CNF04FN44, ENPRC1005 | 12d | 0d | COST [100588 h] | 100,588.24 | SWR | TWR | F05 | FNS |
| CNF05FN49 |  | Glass Enclosure | 7d | 2017-04-17 | 2017-04-25 | CNF04FN45, CNF05FN46, EN0PSPR15 SS+60d | 11d | 0d | COST [50000 h]; Helper [56 h]; Glass Enclosure Labor [56 h] | 50,000 | ALM | TWR | F05 | FNS |
| CNF05FN50 |  | Mirrors & Toilet Accessories | 6d | 2017-04-26 | 2017-05-02 | CNF04FN50, CNF05FN46, CNF05FN49, EN0PSPR23 SS+30d | 24d | 1d | COST [86000 h]; Helper [96 h]; Mirrors Labor [48 h] | 86,000 | MRA | TWR | F05 | FNS |
|  | 1.5.2.2.1.1.3 | **Lift Lobby & Corridor** |  | 2016-12-08 | 2017-09-17 |  |  |  |  |  |  |  |  |  |
| CNF05FN11 |  | Ceiling Finishes | 12d | 2016-12-08 | 2016-12-22 | CNHUCV103, CNF04FN37, EN0PSPR200 SS+45d, CNF05MP30, EN0PSNM11 FS+14d | 24d | 0d | COST [46000 h]; False Ceiling Fixer [192 h] | 46,000 | IDC | TWR | F05 | FNS |
| CNF05FN30 |  | Wall Finishes | 12d | 2016-12-27 | 2017-01-10 | CNF04FN38, CNHUCV102, EN0PSPR201 SS+30d, CNF05FN21, CNF05FN11, EN0PSNM11 FS+14d | 21d | 0d | COST [59722 h]; Helper [192 h]; Mason [288 h] | 59,722 | IDW | TWR | F05 | FNS |
| CNF05FN39 |  | Floor Finishes | 10d | 2017-01-11 | 2017-01-22 | CNF04FN40, CNHUCV104, CNF05FN11, CNF05FN30, EN0PSPR30 SS+45d, EN0PSNM11 FS+14d | 44d | 2d | COST [52113 h]; Helper [80 h]; Mason [80 h] | 52,113 | IDF | TWR | F05 | FNS |
| CNF05FN93 |  | Carpet Laying | 3d | 2017-09-14 | 2017-09-17 | CNF04FN52, CNF05FN39, ATDCD1030 | 4d | 0d | COST [9109 h] | 9,109 | IDR | TWR | F05 | FNS |
|  | 1.5.2.2.1.1.4 | **Common Areas/Service Rooms** |  | 2017-04-02 | 2017-06-07 |  |  |  |  |  |  |  |  |  |
|  | 1 | **Service Rooms** |  | 2017-04-02 | 2017-05-20 |  |  |  |  |  |  |  |  |  |
| CNF05FN17 |  | Epoxy Primer Paint for Ceiling | 6d | 2017-04-02 | 2017-04-08 | CNF05FN31, ENCMSPR52, CNF04FN13 | 5d | 0d | COST [3833.81 h]; Painter [48 h] | 3,833.81 | EPC | TWR | F05 | FNS |
| CNF05FN18 |  | Acrylic Emulsion Primer Paint & Stucco for Wall | 6d | 2017-04-09 | 2017-04-15 | CNF05FN17 | 31d | 0d | COST [3248.62 h]; Painter [48 h] | 3,248.62 | SRW | TWR | F05 | FNS |
| CNF05FN24 |  | Epoxy Primer Paint for Floor | 6d | 2017-04-16 | 2017-04-23 | ENCMSPR52, CNF05FN18 | 31d | 19d | COST [2379.32 h]; Painter [48 h] | 2,379.32 | EPF | TWR | F05 | FNS |
| CNF05FN26 |  | Timber Doors | 4d | 2017-05-16 | 2017-05-20 | CNF05FN24, CNF05FN39, CNF04FN16 | 31d | 0d | COST [58000 h]; Doors Carpenter [32 h]; Helper [32 h] | 58,000 | SRD | TWR | F05 | FNS |
|  | 2 | **Stairs** |  | 2017-05-16 | 2017-06-07 |  |  |  |  |  |  |  |  |  |
| CNF05FN27 |  | Epoxy Primer Paint for Ceiling | 4d | 2017-05-16 | 2017-05-20 | ENCMSPR52, CNF05FN24, CNF04FN17 | 12d | 0d | COST [599 h]; Painter [32 h] | 599 | EPC | TWR | F05 | FNS |
| CNF05FN32 |  | Acrylic Emulsion Primer Paint & Stucco for Walls | 4d | 2017-05-21 | 2017-05-24 | CNF05FN27, CNF04FN18 | 12d | 0d | COST [3695.62 h]; Painter [32 h] | 3,695.62 | SRW | TWR | F05 | FNS |
| CNF05FN36 |  | Epoxy Primer Paint for Floor | 4d | 2017-05-25 | 2017-05-29 | ENCMSPR52, CNF05FN32 | 17d | 0d | COST [8129.16 h]; Painter [32 h] | 8,129.16 | EPF | TWR | F05 | FNS |
| CNF05FN80 |  | Stair Handrail | 4d | 2017-05-30 | 2017-06-03 | CNF05FN36 | 17d | 0d | COST [30000 h]; Helper [64 h]; Aluminium Labor [32 h] | 30,000 | B5-MTW | TWR | F05 | FNS |
| CNF05FN37 |  | Steel Doors | 4d | 2017-06-04 | 2017-06-07 | CNF05FN80, CNF05FN36, CNF05FN39, EN0PSPR31 SS+30d, CNF04FN20 | 17d | 0d | Steel Works Labor [32 h]; Helper [64 h]; COST [31730.8 h] | 31,730.81 | STD | TWR | F05 | FNS |

| ID | WBS | Activity | Type | Duration | Start | Finish | Predecessors | Total float | Free float | Resources | Cost | TYPE OF WORK L4 | ZONE L1 | FLOOR L2 | CATEGORY OF WORK L3 |
| --- | --- | --- | --- | --- | --- | --- | --- | --- | --- | --- | --- | --- | --- | --- | --- |
|  | 1.1 | **MEP** |  |  | 2016-07-26 | 2017-04-29 |  |  |  |  |  |  |  |  |  |
|  | 1.1 | **MEP 1st Fix** |  |  | 2016-07-26 | 2016-10-06 |  |  |  |  |  |  |  |  |  |
| CNF05CW91 |  | MEP Conduits for the slab |  | 5d | 2016-07-26 | 2016-07-31 | CNF05CW15 SS, CNF05CW15 FF | 0d |  | COST [214225 h]; ELECTRICIAN [800 h]; PLUMBER [400 h] | 214,225.1 | MEW | TWR | F05 | CON |
| CNF05FN19 |  | Walls Cutting & Chasing |  | 7d | 2016-09-28 | 2016-10-06 | CNF05FN10 SS+8d | 23d | 0d | COST [6151 h] | 6,151 | MEW | TWR | F05 | FNS |
| CNF05MP10 |  | Civil Clearance To Start 1st Fix | milestone | 0d | 2016-10-01 | 2016-10-01 | EN0PSRA67, EN0PSRA02, EN0PSRA70, EN0PSRA73, EN0PSRA41, EN0PSRA44, EN0PSRA49, EN0PSRA54, EN0PSRA58, EN0PSRA62, EN0PSRA76, EN0PSRA80, CNF05FN19 SS+2d | 23d | 0d |  |  | MEW | TWR | F05 | MEP |
| CNF05MP11 |  | Drainage Pipes ( In Walls) |  | 5d | 2016-10-01 | 2016-10-06 | CNF05MP10, CNF04MP11 | 23d | 0d | COST [15528 h]; PLUMBER [320 h] | 15,528 | MEW | TWR | F05 | MEP |
| CNF05MP12 |  | Water Supply Pipes ( In Walls) |  | 5d | 2016-10-01 | 2016-10-06 | CNF05MP10, CNF04MP12 | 23d | 0d | COST [26928.4 h]; PLUMBER [320 h] | 26,928.4 | MEW | TWR | F05 | MEP |
| CNF05MP13 |  | Sleeves,Conduites,Gi Box,DB Box In Wall |  | 5d | 2016-10-01 | 2016-10-06 | CNF05MP10, CNF04MP13 | 23d | 0d | COST [48200.5 h]; ELECTRICIAN [1200 h] | 48,200.5 | MEW | TWR | F05 | MEP |
| CNF05MP16 |  | MEP Clearance To Start Plaster | milestone | 0d | 2016-10-06 | 2016-10-06 | CNF05MP11, CNF05MP12, CNF05MP13 | 23d | 1d |  |  | MEW | TWR | F05 | MEP |
|  | 1.2 | **MEP 2nd Fix** |  |  | 2016-10-22 | 2016-12-06 |  |  |  |  |  |  |  |  |  |
| CNF05MP17 |  | Civil Clearance To Start 2nd Fix | milestone | 0d | 2016-10-22 | 2016-10-22 | CNF05MP16, CNF05FN21 | 26d | 16d |  |  | MEW | TWR | F05 | MEP |
| CNF05MP24 |  | LPG Piping |  | 10d | 2016-10-23 | 2016-11-02 | CNF05FN21, EN0PSPR11 FS+7d | 27d | 4d | COST [67153.8 h]; PIPE FITTER [320 h] | 67,153.8 | MEW | TWR | F05 | MEP |
| CNF05MP19 |  | Wires |  | 7d | 2016-11-12 | 2016-11-19 | CNF05MP13, CNF05MP17 FS+1d, CNF04MP19, CNHUMP112 | 13d | 0d | COST [153534 h]; ELECTRICIAN [800 h] | 153,534.2 | MEW | TWR | F05 | MEP |
| CNF05MP15 |  | Cable Tray / Trunking |  | 10d | 2016-11-14 | 2016-11-24 | CNF05MP17, CNF04MP15, CNHUMP108 | 8d | 0d | COST [153534 h]; ELECTRICIAN [320 h] | 153,534.2 | MEW | TWR | F05 | MEP |
| CNF05MP21 |  | Ducting Work Including Insulation |  | 10d | 2016-11-14 | 2016-11-24 | CNF05FN21, CNF04MP21, CNHUMP105 | 8d | 0d | COST [186091 h]; DUCTMAN [640 h] | 186,091.2 | MEW | TWR | F05 | MEP |
| CNF05MP22 |  | Installation of FCUs & Fans |  | 10d | 2016-11-14 | 2016-11-24 | CNF05MP21 FF, ENPRC1013, CNF04MP22, CNHUMP110 | 8d | 0d | COST [132302 h]; AC TECHNICIAN [480 h] | 132,302.1 | MEW | TWR | F05 | MEP |
| CNF05MP23 |  | Chilled Water Pipes (High L) |  | 10d | 2016-11-14 | 2016-11-24 | CNF05FN21, CNF04MP23, CNHUMP106 | 8d | 0d | COST [109870 h]; AC TECHNICIAN [640 h] | 109,870.1 | MEW | TWR | F05 | MEP |
| CNF05MP25 |  | Fire Fighting Pipes (Mains/Branches) |  | 10d | 2016-11-14 | 2016-11-24 | CNF05FN21, CNF04MP25, CNHUMP104 | 8d | 0d | COST [79182 h]; PIPE FITTER [480 h] | 79,182 | MEW | TWR | F05 | MEP |
| CNF05MP18 |  | Drainage Pipes (High L) |  | 10d | 2016-11-15 | 2016-11-26 | CNF05MP17 FS+1d, CNF04MP18, CNHUMP111 | 7d | 0d | COST [121568 h]; PLUMBER [640 h] | 121,568.3 | MEW | TWR | F05 | MEP |
| CNF05MP20 |  | Water Supply Pipes (High L) |  | 10d | 2016-11-15 | 2016-11-26 | CNF05MP18 FF, CNHUMP113 | 7d | 0d | COST [141452 h]; PLUMBER [400 h] | 141,451.6 | MEW | TWR | F05 | MEP |
| CNF05MP26 |  | Acoustic Drainage Pipe Insulation |  | 8d | 2016-11-17 | 2016-11-26 | CNF05MP18 SS+2d, CNHUMP114 | 7d | 2d | COST [3763.1 h]; PLUMBER [256 h] | 3,763.1 | MEW | TWR | F05 | MEP |
| CNF05MP27 |  | Water Heaters Installation&Connection |  | 6d | 2016-11-22 | 2016-11-28 | CNF05MP20 SS+2d, ENPRC1002, CNHUMP115 | 5d | 0d | COST [558.9 h] | 558.9 | MEW | TWR | F05 | MEP |
| CNF05MP28 |  | MEP Clearance To Close Apartments Ceilings | milestone | 0d | 2016-11-28 | 2016-11-28 | CNF05MP23, CNF05MP20, CNF05MP19, CNF05MP25, CNF05MP22, CNF05MP18, CNF05MP24, CNF05MP26, CNF05MP27, CNF05MP15 | 5d | 0d |  |  | MEW | TWR | F05 | MEP |
| CNF05MP30 |  | MEP Clearance To Close Corridors Ceilings | milestone | 0d | 2016-12-06 | 2016-12-06 | CNF05MP28 FF+5d | 25d | 1d |  |  | MEW | TWR | F05 | MEP |

| ID | WBS | Activity | Type | Duration | Start | Finish | Predecessors | Total float | Free float | Resources | Cost | TYPE OF WORK L4 | ZONE L1 | FLOOR L2 | CATEGORY OF WORK L3 |
| --- | --- | --- | --- | --- | --- | --- | --- | --- | --- | --- | --- | --- | --- | --- | --- |
|  | 1.3 | **MEP 3rd Fix** |  |  | 2017-02-15 | 2017-04-29 |  |  |  |  |  |  |  |  |  |
| CNF05MP29 |  | Civil Clearance To Start Final Fix | milestone | 0d | 2017-02-15 | 2017-02-15 | CNF05FN43, CNF05MP30, CNF05MP28 | 97d | 50d |  |  | MEW | TWR | F05 | MEP |
| CNF05MP14 |  | Vertical Sprinkler Drops |  | 4d | 2017-04-16 | 2017-04-19 | CNF04MP14, CNF05MP29, CNHUMP125 | 51d | 0d | COST [4988.6 h]; PIPE FITTER [80 h] | 4,988.6 | MEW | TWR | F05 | MEP |
| CNF05MP31 |  | Hose Reel&Fire Extinguishers & Sprinklers |  | 4d | 2017-04-19 | 2017-04-24 | CNF04MP31, CNF05MP29, CNHUMP118 | 48d | 0d | COST [46832.8 h]; PIPE FITTER [80 h] | 46,832.8 | MEW | TWR | F05 | MEP |
| CNF05MP32 |  | Installation of DBS |  | 4d | 2017-04-19 | 2017-04-24 | CNF04MP32, CNF05MP29, CNHUMP119 | 44d | 0d | COST [9929.4 h]; ELECTRICIAN [64 h] | 9,929.4 | MEW | TWR | F05 | MEP |
| CNF05MP33 |  | Installation of Panels / SmDBS |  | 4d | 2017-04-19 | 2017-04-24 | CNF04MP33, CNF05MP32 FF, ENPRC1016, CNHUMP120 | 48d | 0d | COST [46476.1 h]; ELECTRICIAN [64 h] | 46,476.1 | MEW | TWR | F05 | MEP |
| CNF05MP34 |  | Installation of Fire Alarm Panel & Voice Alarm System |  | 4d | 2017-04-19 | 2017-04-24 | CNF04MP34, CNF05MP29, EN0PSPR40 FS+14d, ENPRC1016, CNHUMP121 | 48d | 0d | COST [20087.7 h]; ELECTRICIAN [80 h] | 20,087.7 | MEW | TWR | F05 | MEP |
| CNF05MP35 |  | Installation of Light Fitting & E.M Light |  | 4d | 2017-04-19 | 2017-04-24 | CNF04MP35, CNF05MP29, ENPRC1014, CNF05FN43, CNHUMP122 | 48d | 0d | COST [84000 h]; ELECTRICIAN [80 h] | 84,000 | LFX | TWR | F05 | MEP |
| CNF05MP36 |  | Installation of Wiring Accessories |  | 4d | 2017-04-19 | 2017-04-24 | CNF04MP36, CNF05MP35 FF, CNHUMP123 | 48d | 0d | COST [15564.6 h]; ELECTRICIAN [96 h] | 15,564.6 | MEW | TWR | F05 | MEP |
| CNF05MP37 |  | Installation of Grills&Diffusers |  | 4d | 2017-04-19 | 2017-04-24 | CNF04MP37, CNF05MP29, CNHUMP124 | 44d | 0d | COST [3325.4 h]; DUCTMAN [192 h] | 3,325.4 | MEW | TWR | F05 | MEP |
| CNF05MP38 |  | Installation of Telephone System |  | 4d | 2017-04-25 | 2017-04-29 | CNF04MP38, CNF05MP32, CNHUMP126 | 44d | 0d | COST [32690.3 h]; ELECTRICIAN [64 h] | 32,690.3 | MEW | TWR | F05 | MEP |
| CNF05MP39 |  | Installation of CCTV System |  | 4d | 2017-04-25 | 2017-04-29 | CNF04MP39, CNF05MP32, EN0PSPR44 FS+14d, CNHUMP127 | 44d | 0d | COST [8707.3 h]; ELECTRICIAN [64 h] | 8,707.3 | MEW | TWR | F05 | MEP |
| CNF05MP40 |  | Thermostat Fixing |  | 4d | 2017-04-25 | 2017-04-29 | CNF04MP40, CNF05MP37, CNHUMP128 | 44d | 0d | COST [1381 h]; ELECTRICIAN [64 h] | 1,381 | MEW | TWR | F05 | MEP |
| CNF05MP41 |  | MEP Final Fix Clearance | milestone | 0d | 2017-04-29 | 2017-04-29 | CNF05MP39, CNF05MP36, CNF05MP37, CNF05MP40, CNF05MP38, CNF05MP35, CNF05MP31, CNF05MP34, CNF05MP33, CNF05MP32, CNF05MP14, CNF05FN44, CNF05FN91, CNF04MP41, CNHUMP129 | 92d | 4d |  |  | MEW | TWR | F05 | MEP |
|  | 6 | **6th Floor** |  |  | 2016-08-08 | 2017-09-20 |  |  |  |  |  |  |  |  |  |
|  | 1.5.1.1.2.3.21 | **Concrete** |  |  | 2016-08-08 | 2016-08-24 |  |  |  |  |  |  |  |  |  |
| CNF06CW10 |  | Slab Form Work |  | 5d | 2016-08-08 | 2016-08-13 | CNF05CW50 FF+1d, CNF05CW50 SS+1d | 0d |  | COST [130248 h]; Shutter Carpenter [1360 h]; Helper [680 h]; Form Work [2504 M2] | 130,247.5 | STR | TWR | F06 | CON |
| CNF06CW15 |  | Slab Rebar & Post Tension Tendons |  | 5d | 2016-08-10 | 2016-08-15 | ENCMSRA10, CNF06CW10 SS+1d, CNF06CW10 FF+2d | 0d |  | COST [307860 h]; Steel Fixer [1160 h]; Helper [600 h]; Steel Rebars [41200 Kg] | 307,860 | RFT | TWR | F06 | CON |
| CNF06CW90 |  | TECOM Steel Inspection prior to concrete pouring | milestone | 0d | 2016-08-15 | 2016-08-15 | CNF06CW15 FF, CNF06CW91 | 0d |  |  |  |  | TWR | F06 | CON |
| CNF06CW20 |  | Slab Casting |  | 2d | 2016-08-16 | 2016-08-17 | CNF05CW45, ENCMSRA50, CNF06CW90, CNF06CW15 | 0d |  | COST [280875 h] | 280,875.1 | RFC | TWR | F06 | CON |
| CNF06CW30 |  | Columns and Walls Rebar |  | 5d | 2016-08-17 | 2016-08-22 | CNF06CW20 SS+1d | 0d |  | COST [182819 h]; Steel Fixer [1080 h]; Helper [560 h]; Steel Rebars [53200 Kg] | 182,819 | RFT | TWR | F06 | CON |
| CNF06CW45 |  | PT Tensioning and Grouting |  | 5d | 2016-08-18 | 2016-08-23 | CNF06CW20 | 6d |  | COST |  |  | TWR | F06 | CON |
| CNF06CW35 |  | Columns and Walls Form Work |  | 4d | 2016-08-20 | 2016-08-23 | CNF06CW30 SS+1d, CNF06CW30 FF+1d | 0d |  | COST [64200 h]; Shutter Carpenter [608 h]; Helper [320 h]; Form Work [2504 M2] | 64,200 | STR | TWR | F06 | CON |
| CNF06CW50 |  | Columns Casting |  | 3d | 2016-08-22 | 2016-08-24 | CNF06CW35 SS+1d, CNF06CW35 FF+1d | 0d |  | COST [96203 h] | 96,203 | RFC | TWR | F06 | CON |

| ID | WBS | Activity | Duration | Start | Finish | Predecessors | Total float | Free float | Resources | Cost | TYPE OF WORK L4 | ZONE L1 | FLOOR L2 | CATEGORY OF WORK L3 |
| --- | --- | --- | --- | --- | --- | --- | --- | --- | --- | --- | --- | --- | --- | --- |
|  | 1 | **Finishes** |  | 2016-10-08 | 2017-09-20 |  |  |  |  |  |  |  |  |  |
|  | 1.5.2.2.1.1.1 | **General** |  | 2016-10-08 | 2017-08-20 |  |  |  |  |  |  |  |  |  |
| CNF06FN10 |  | Block Works | 15d | 2016-10-08 | 2016-10-24 | CNF09CW10, ENCMSPR51, CNF05FN10 | 0d |  | COST [389617 h]; Helper [1320 h]; Mason [2520 h]; Block [3733 M2] | 389,616.79 | B4-MAS | TWR | F06 | FNS |
| CNF06FN20 |  | Doors Sub Frames | 9d | 2016-10-17 | 2016-10-26 | CNF06FN10 SS+8d | 28d | 7d | COST [7164 h]; Sub-Frames [108 No] | 7,164 | B6-WDR | TWR | F06 | FNS |
| CNF06FN21 |  | Internal Walls Plaster Works | 12d | 2016-10-25 | 2016-11-07 | CNF06FN20 SS, CNF05FN21, CNF06MP16 | 21d | 0d | COST [121269 h]; Helper [672 h]; Mason [1344 h]; Plastering [3294 M2] | 121,268.81 | PLS | TWR | F06 | FNS |
| CNF06FN28 |  | Balconies Ceiling Plaster | 6d | 2016-11-08 | 2016-11-14 | CNF05FN28, CNF06FN21 | 28d | 0d | COST [33575.2 h]; Plastering [375 M2] | 33,575.25 | BCP | TWR | F06 | FNS |
| CNF06FN35 |  | Emulsion Paint for Balconies Ceiling | 3d | 2016-11-15 | 2016-11-17 | CNF05FN35, ENCMSPR57, CNF06FN28 | 28d | 0d | COST [5924 h]; Painter [96 h]; Paint [375 M2] | 5,924 | BLP | TWR | F06 | FNS |
| CNF06FN42 |  | Balconies Glazing & Aluminium Handrail | 15d | 2016-12-01 | 2016-12-20 | CNF05FN42, CNF06FN41 SS+2d, CNF06FN13, EN0PSRA14, EN0PSPR16 SS+60d | 24d | 0d | COST [210000 h]; Helper [120 h]; Aluminium Labor [120 h] | 210,000 | ALM | TWR | F06 | FNS |
| CNF06FN99 |  | Internal Signage | 3d | 2017-07-11 | 2017-07-13 | CNF06FN39, CNF05FN99 | 8d | 0d | COST [9303 h]; Signage Labor [96 h] | 9,303 | SGN | TWR | F06 | FNS |
| CNF06FN51 |  | Paint Final Coat | 3d | 2017-08-17 | 2017-08-20 | CNF06FN44, CNF06FN47, CNF06FN42, CNF06FN48, CNF06FN45, CNF06FN46, CNF05FN51 | 17d | 0d | COST [3000 h]; Painter [456 h]; Paint [3294 M2] | 3,000 | PFC | TWR | F06 | FNS |
|  | 1.5.2.2.1.1.2 | **Apartments** |  | 2016-11-08 | 2017-05-10 |  |  |  |  |  |  |  |  |  |
|  | 1.5.2.2.1.1.2.1 | **Dry Area** |  | 2016-11-08 | 2017-03-15 |  |  |  |  |  |  |  |  |  |
| CNF06FN29 |  | Wall Paint Primer & Stucco | 15d | 2016-11-08 | 2016-11-24 | ENCMSPR53, CNF06FN21 | 21d | 15d | COST [43043.6 h]; Painter [1080 h]; Paint [3294 M2] | 43,043.56 | PNT | TWR | F06 | FNS |
| CNF06FN41 |  | Aluminium Doors | 12d | 2016-11-08 | 2016-11-21 | CNF05FN41, CNF06FN21, EN0PSRA11, EN0PSPR13 SS+60d | 36d | 3d | Aluminium Labor [96 h]; Helper [192 h]; COST [470000 h] | 470,000 | ALM | TWR | F06 | FNS |
| CNF06FN38 |  | Gypsum Board for Ceiling | 12d | 2016-12-17 | 2016-12-29 | CNF06MP28, ENCMSPR54 FS+14d, CNF05FN38, CNF06FN29 | 6d | 0d | COST [156953 h]; False Ceiling Fixer [1056 h]; Gypsum Board [1300 M2] | 156,952.61 | GYP | TWR | F06 | FNS |
| CNF06FN31 |  | Paint for Ceiling | 12d | 2016-12-31 | 2017-01-14 | CNF05FN31, CNF06FN38 | 17d | 0d | COST [29459 h]; Painter [288 h]; Paint [1300 M2] | 29,459 | CPN | TWR | F06 | FNS |
| CNF06FN40 |  | Ceramic for Floors | 13d | 2017-01-02 | 2017-01-16 | CNF06FN41, CNF06FN38, CNF05FN40, EN0PCPR14 SS+60d | 5d | 0d | COST [135350 h]; Helper [208 h]; Mason [312 h]; Apartment Tiles [1300 M2] | 135,350.21 | TAP | TWR | F06 | FNS |
| CNF06FN90 |  | Door Frames | 7d | 2017-01-17 | 2017-01-24 | CNF05FN90, CNF06FN13, CNF06FN40 | 26d | 6d | Helper [112 h]; COST [107500 h]; Doors Carpenter [112 h] | 107,500 | DRI | TWR | F06 | FNS |
| CNF06FN43 |  | Door Shutters | 10d | 2017-02-16 | 2017-02-27 | CNF06FN90, CNF06FN40, CNF06FN13, CNF06FN41, CNF05FN43, EN0PSPR18 SS+60d | 7d | 0d | Helper [160 h]; COST [200000 h]; Doors Carpenter [160 h] | 200,000 | APD | TWR | F06 | FNS |
| CNF06FN44 |  | Door Ironmongeries | 10d | 2017-02-19 | 2017-03-01 | CNF05FN44, EN0PSPR202 SS+15d, CNF06FN43 SS | 29d | 0d | Finishings Carpenter [80 h]; Helper [80 h]; COST [28500 h] | 28,500 | DRI | TWR | F06 | FNS |
| CNF06FN91 |  | Thresholds | 10d | 2017-02-19 | 2017-03-01 | CNF05FN91, CNF06FN43 SS, EN0PCPR12 SS+60d | 29d | 0d | Finishings Carpenter [160 h]; Helper [160 h]; COST [24887.2 h] | 24,887.25 | THR | TWR | F06 | FNS |
| CNF06FN45 |  | Wooden Wardrobes | 11d | 2017-03-04 | 2017-03-15 | CNF05FN45, CNF06FN43, CNF06FN40, EN0PSPR38 SS+60d | 8d | 0d | Wooden Wardrobes Carpenter [88 h]; Helper [88 h]; COST [87100 h] | 87,100 | WRD | TWR | F06 | FNS |
|  | 1.5.2.2.1.1.2.2 | **Wet Area** |  | 2016-11-08 | 2017-05-10 |  |  |  |  |  |  |  |  |  |
| CNF06FN12 |  | Ceramic for Walls | 12d | 2016-11-08 | 2016-11-21 | CNF05FN12, CNF06FN21, EN0PCRA17, EN0PCPR15 SS+60d, EN0PCPR90 SS+60d | 46d | 0d | COST [164439 h]; Helper [384 h]; Mason [768 h]; Wet Area Tiles [1700 M2] | 164,438.55 | WLW | TWR | F06 | FNS |
| CNF06FN13 |  | Ceramic For Floors in Balconies | 6d | 2016-11-19 | 2016-11-24 | CNF06FN35, EN0PCPR13 SS+60d | 28d | 4d | COST [35088.2 h]; Helper [48 h]; Mason [96 h]; Balconies Floor Tiles [375 M2] | 35,088.15 | FLB | TWR | F06 | FNS |
| CNF06FN33 |  | Bathtubs | 5d | 2016-11-22 | 2016-11-27 | CNF06FN12, EN0PSPR204 SS+15d, CNF05FN33 | 60d | 10d | COST [35625 h] | 35,625 | bth | TWR | F06 | FNS |
| CNF06FN23 |  | False Ceiling | 15d | 2016-12-12 | 2016-12-28 | CNF06MP28, ENCMSPR55, CNF06FN12 | 32d | 4d | COST [46376.4 h]; False Ceiling Fixer [600 h]; False Ceiling [695 M2] | 46,376.44 | CWT | TWR | F06 | FNS |
| CNF06FN25 |  | Water Proofing | 12d | 2017-01-04 | 2017-01-17 | CNF06FN33 SS+1d, ENCMSPR56, CNF06FN23, CNF05FN25 | 28d | 0d | COST [102613 h]; Water Proofing [553 M2] | 102,613 | WPR | TWR | F06 | FNS |
| CNF06FN34 |  | Ceramic for Floor | 12d | 2017-01-18 | 2017-01-31 | CNF06FN33, CNF06FN25, CNF05FN34, CNSUB1070, EN0PCPR15 SS+60d, EN0PCPR90 SS+60d | 28d | 0d | COST [27945.1 h]; Helper [96 h]; Mason [96 h]; Wet Area Tiles [178 M2] | 27,945.08 | FLW | TWR | F06 | FNS |
| CNF06FN48 |  | Vanity Counter | 9d | 2017-02-28 | 2017-03-09 | CNF06FN13, CNF06FN43, CNF05FN48, EN0PSPR52 SS+30d | 29d | 1d | COST [86000 h]; Helper [216 h]; Vanity Counters Labor [216 h] | 86,000 | VNC | TWR | F06 | FNS |
| CNF06FN47 |  | Kitchen Cabinet | 11d | 2017-03-04 | 2017-03-15 | CNF06FN13, CNF06FN43, CNF05FN47, EN0PSRA36, EN0PSPR37 SS+60d | 4d | 0d | COST [93417 h]; Helper [88 h]; Kitchen Cabinet Carpenter [88 h] | 93,417 | KCB | TWR | F06 | FNS |
| CNF06FN46 |  | Sanitary Ware&Accessories | 6d | 2017-04-16 | 2017-04-23 | CNF06FN48 SS, CNF06FN43, CNF06FN13, CNF06FN33, CNF05FN46, ENPRC1005 | 13d | 0d | COST [100588 h] | 100,588.24 | SWR | TWR | F06 | FNS |
| CNF06FN49 |  | Glass Enclosure | 7d | 2017-04-26 | 2017-05-03 | CNF05FN49, CNF06FN46, EN0PSPR15 SS+60d | 11d | 0d | COST [50000 h]; Helper [56 h]; Glass Enclosure Labor [56 h] | 50,000 | ALM | TWR | F06 | FNS |
| CNF06FN50 |  | Mirrors & Toilet Accessories | 6d | 2017-05-04 | 2017-05-10 | CNF05FN50, CNF06FN46, CNF06FN49, EN0PSPR23 SS+30d | 23d | 1d | COST [86000 h]; Helper [96 h]; Mirrors Labor [48 h] | 86,000 | MRA | TWR | F06 | FNS |

| ID | WBS | Activity | Type | Duration | Start | Finish | Predecessors | Total float | Free float | Resources | Cost | TYPE OF WORK L4 | ZONE L1 | FLOOR L2 | CATEGORY OF WORK L3 |
| --- | --- | --- | --- | --- | --- | --- | --- | --- | --- | --- | --- | --- | --- | --- | --- |
|  | 1.5.2.2.1.1.3 | **Lift Lobby & Corridor** |  |  | 2016-12-24 | 2017-09-20 |  |  |  |  |  |  |  |  |  |
| CNF06FN11 |  | Ceiling Finishes |  | 12d | 2016-12-24 | 2017-01-07 | CNF05FN11, EN0PSPR200 SS+45d, CNF06MP30, EN0PSNM11 FS+14d | 24d | 0d | COST [46000 h]; False Ceiling Fixer [192 h] | 46,000 | IDC | TWR | F06 | FNS |
| CNF06FN30 |  | Wall Finishes |  | 12d | 2017-01-11 | 2017-01-24 | CNF05FN30, EN0PSPR201 SS+30d, CNF06FN21, CNF06FN11, EN0PSNM11 FS+14d | 21d | 0d | COST [59722 h]; Helper [192 h]; Mason [288 h] | 59,722 | IDW | TWR | F06 | FNS |
| CNF06FN39 |  | Floor Finishes |  | 10d | 2017-01-25 | 2017-02-05 | CNF05FN39, CNF06FN11, CNF06FN30, EN0PSPR30 SS+45d, EN0PSNM11 FS+14d | 42d | 2d | COST [52113 h]; Helper [80 h]; Mason [80 h] | 52,113 | IDF | TWR | F06 | FNS |
| CNF06FN93 |  | Carpet Laying |  | 3d | 2017-09-18 | 2017-09-20 | CNF05FN93, CNF06FN39, ATDCD1030 | 4d | 0d | COST [9109 h] | 9,109 | IDR | TWR | F06 | FNS |
|  | 1.5.2.2.1.1.4 | **Common Areas/Service Rooms** |  |  | 2017-04-09 | 2017-06-12 |  |  |  |  |  |  |  |  |  |
|  | 1 | **Service Rooms** |  |  | 2017-04-09 | 2017-05-24 |  |  |  |  |  |  |  |  |  |
| CNF06FN17 |  | Epoxy Primer Paint for Ceiling |  | 10d | 2017-04-09 | 2017-04-19 | CNF06FN31, ENCMSPR52, CNF05FN17 | 5d | 0d | COST [3833.81 h]; Painter [80 h] | 3,833.81 | EPC | TWR | F06 | FNS |
| CNF06FN18 |  | Acrylic Emulsion Primer Paint & Stucco for Wall |  | 6d | 2017-04-20 | 2017-04-27 | CNF06FN17 | 25d | 0d | COST [3248.62 h]; Painter [48 h] | 3,248.62 | SRW | TWR | F06 | FNS |
| CNF06FN24 |  | Epoxy Primer Paint for Floor |  | 6d | 2017-04-29 | 2017-05-04 | ENCMSPR52, CNF06FN18 | 25d | 13d | COST [2379.32 h]; Painter [48 h] | 2,379.32 | EPF | TWR | F06 | FNS |
| CNF06FN26 |  | Timber Doors |  | 4d | 2017-05-21 | 2017-05-24 | CNF06FN24, CNF06FN39, CNF05FN26 | 31d | 0d | COST [58000 h]; Doors Carpenter [32 h]; Helper [32 h] | 58,000 | SRD | TWR | F06 | FNS |
|  | 2 | **Stairs** |  |  | 2017-05-21 | 2017-06-12 |  |  |  |  |  |  |  |  |  |
| CNF06FN27 |  | Epoxy Primer Paint for Ceiling |  | 4d | 2017-05-21 | 2017-05-24 | ENCMSPR52, CNF06FN24, CNF05FN27 | 12d | 0d | COST [599 h]; Painter [32 h] | 599 | EPC | TWR | F06 | FNS |
| CNF06FN32 |  | Acrylic Emulsion Primer Paint & Stucco for Walls |  | 4d | 2017-05-25 | 2017-05-29 | CNF06FN27, CNF05FN32 | 12d | 0d | COST [3695.62 h]; Painter [32 h] | 3,695.62 | SRW | TWR | F06 | FNS |
| CNF06FN36 |  | Epoxy Primer Paint for Floor |  | 4d | 2017-05-30 | 2017-06-03 | ENCMSPR52, CNF06FN32 | 17d | 0d | COST [8129.16 h]; Painter [32 h] | 8,129.16 | EPF | TWR | F06 | FNS |
| CNF06FN80 |  | Stair Handrail |  | 4d | 2017-06-04 | 2017-06-07 | CNF06FN36 | 17d | 0d | COST [30000 h]; Helper [64 h]; Aluminium Labor [32 h] | 30,000 | B5-MTW | TWR | F06 | FNS |
| CNF06FN37 |  | Steel Doors |  | 4d | 2017-06-08 | 2017-06-12 | CNF06FN80, CNF06FN36, CNF06FN39, EN0PSPR31 SS+30d, CNF05FN37 | 17d | 0d | Steel Works Labor [32 h]; Helper [64 h]; COST [31730.8 h] | 31,730.81 | STD | TWR | F06 | FNS |
|  | 1.1 | **MEP** |  |  | 2016-08-10 | 2017-05-03 |  |  |  |  |  |  |  |  |  |
|  | 1.1 | **MEP 1st Fix** |  |  | 2016-08-10 | 2016-10-24 |  |  |  |  |  |  |  |  |  |
| CNF06CW91 |  | MEP Conduits for the slab |  | 5d | 2016-08-10 | 2016-08-15 | CNF06CW15 SS, CNF06CW15 FF | 0d |  | COST [214225 h]; ELECTRICIAN [800 h]; PLUMBER [400 h] | 214,225.1 | MEW | TWR | F06 | CON |
| CNF06FN19 |  | Walls Cutting & Chasing |  | 7d | 2016-10-17 | 2016-10-24 | CNF06FN10 SS+8d | 21d | 0d | COST [6151 h] | 6,151 | MEW | TWR | F06 | FNS |
| CNF06MP10 |  | Civil Clearance To Start 1st Fix | milestone | 0d | 2016-10-19 | 2016-10-19 | EN0PSRA67, EN0PSRA02, EN0PSRA70, EN0PSRA73, EN0PSRA41, EN0PSRA44, EN0PSRA49, EN0PSRA54, EN0PSRA58, EN0PSRA62, EN0PSRA76, EN0PSRA80, CNF06FN19 SS+2d | 21d | 0d |  |  | MEW | TWR | F06 | MEP |
| CNF06MP11 |  | Drainage Pipes ( In Walls) |  | 5d | 2016-10-19 | 2016-10-24 | CNF06MP10, CNF05MP11 | 21d | 0d | COST [15528 h]; PLUMBER [320 h] | 15,528 | MEW | TWR | F06 | MEP |
| CNF06MP12 |  | Water Supply Pipes ( In Walls) |  | 5d | 2016-10-19 | 2016-10-24 | CNF06MP10, CNF05MP12 | 21d | 0d | COST [26928.4 h]; PLUMBER [320 h] | 26,928.4 | MEW | TWR | F06 | MEP |
| CNF06MP13 |  | Sleeves,Conduites,Gi Box,DB Box In Wall |  | 5d | 2016-10-19 | 2016-10-24 | CNF06MP10, CNF05MP13 | 21d | 0d | COST [48200.5 h]; ELECTRICIAN [1200 h] | 48,200.5 | MEW | TWR | F06 | MEP |
| CNF06MP16 |  | MEP Clearance To Start Plaster | milestone | 0d | 2016-10-24 | 2016-10-24 | CNF06MP11, CNF06MP12, CNF06MP13 | 21d | 0d |  |  | MEW | TWR | F06 | MEP |

| ID | WBS | Activity | Type | Duration | Start | Finish | Predecessors | Total float | Free float | Resources | Cost | TYPE OF WORK L4 | ZONE L1 | FLOOR L2 | CATEGORY OF WORK L3 |
| --- | --- | --- | --- | --- | --- | --- | --- | --- | --- | --- | --- | --- | --- | --- | --- |
|  | 1.2 | **MEP 2nd Fix** |  |  | 2016-11-07 | 2016-12-17 |  |  |  |  |  |  |  |  |  |
| CNF06MP17 |  | Civil Clearance To Start 2nd Fix | milestone | 0d | 2016-11-07 | 2016-11-07 | CNF06MP16, CNF06FN21 | 25d | 9d |  |  | MEW | TWR | F06 | MEP |
| CNF06MP24 |  | LPG Piping |  | 10d | 2016-11-08 | 2016-11-19 | CNF05MP24, CNF06FN21, EN0PSPR11 FS+7d | 26d | 5d | COST [67153.8 h]; PIPE FITTER [320 h] | 67,153.8 | MEW | TWR | F06 | MEP |
| CNF06MP19 |  | Wires |  | 7d | 2016-11-20 | 2016-11-27 | CNF06MP13, CNF06MP17 FS+1d, CNF05MP19 | 19d | 0d | COST [153534 h]; ELECTRICIAN [800 h] | 153,534.2 | MEW | TWR | F06 | MEP |
| CNF06MP15 |  | Cable Tray / Trunking |  | 10d | 2016-11-26 | 2016-12-08 | CNF06MP17, CNF05MP15 | 11d | 0d | COST [153534 h]; ELECTRICIAN [528 h] | 153,534.2 | MEW | TWR | F06 | MEP |
| CNF06MP21 |  | Ducting Work Including Insulation |  | 10d | 2016-11-26 | 2016-12-08 | CNF05MP21, CNF06FN21 | 11d | 0d | COST [186091 h]; DUCTMAN [560 h] | 186,091.2 | MEW | TWR | F06 | MEP |
| CNF06MP22 |  | Installation of FCUs & Fans |  | 10d | 2016-11-26 | 2016-12-08 | CNF06MP21 FF, CNF05MP22, ENPRC1013 | 11d | 0d | COST [132302 h]; AC TECHNICIAN [480 h] | 132,302.1 | MEW | TWR | F06 | MEP |
| CNF06MP23 |  | Chilled Water Pipes (High L) |  | 10d | 2016-11-26 | 2016-12-08 | CNF05MP23, CNF06FN21 | 8d | 0d | COST [109870 h]; AC TECHNICIAN [496 h] | 109,870.1 | MEW | TWR | F06 | MEP |
| CNF06MP25 |  | Fire Fighting Pipes (Mains/Branches) |  | 10d | 2016-11-26 | 2016-12-08 | CNF05MP25, CNF06FN21 | 11d | 0d | COST [79182 h]; PIPE FITTER [480 h] | 79,182 | MEW | TWR | F06 | MEP |
| CNF06MP18 |  | Drainage Pipes (High L) |  | 10d | 2016-11-27 | 2016-12-10 | CNF06MP17 FS+1d, CNF05MP18 | 10d | 0d | COST [121568 h]; PLUMBER [640 h] | 121,568.3 | MEW | TWR | F06 | MEP |
| CNF06MP20 |  | Water Supply Pipes (High L) |  | 10d | 2016-11-27 | 2016-12-10 | CNF06MP18 FF, CNF05MP20 | 10d | 0d | COST [141452 h]; PLUMBER [480 h] | 141,451.6 | MEW | TWR | F06 | MEP |
| CNF06MP26 |  | Acoustic Drainage Pipe Insulation |  | 8d | 2016-11-29 | 2016-12-10 | CNF06MP18 SS+2d, CNF05MP26 | 10d | 0d | COST [3763.1 h]; PLUMBER [256 h] | 3,763.1 | MEW | TWR | F06 | MEP |
| CNF06MP27 |  | Water Heaters Installation&Connection |  | 6d | 2016-11-29 | 2016-12-07 | CNF06MP20 SS+2d, ENPRC1002 | 12d | 2d | COST [558.9 h] | 558.9 | MEW | TWR | F06 | MEP |
| CNF06MP28 |  | MEP Clearance To Close Apartments Ceilings | milestone | 0d | 2016-12-10 | 2016-12-10 | CNF06MP23, CNF06MP20, CNF06MP19, CNF06MP25, CNF06MP22, CNF06MP18, CNF06MP24, CNF06MP26, CNF06MP27, CNF06MP15 | 10d | 0d |  |  | MEW | TWR | F06 | MEP |
| CNF06MP30 |  | MEP Clearance To Close Corridors Ceilings | milestone | 0d | 2016-12-17 | 2016-12-17 | CNF06MP28 FF+5d | 29d | 5d |  |  | MEW | TWR | F06 | MEP |
|  | 1.3 | **MEP 3rd Fix** |  |  | 2017-02-27 | 2017-05-03 |  |  |  |  |  |  |  |  |  |
| CNF06MP29 |  | Civil Clearance To Start Final Fix | milestone | 0d | 2017-02-27 | 2017-02-27 | CNF06FN43, CNF06MP30, CNF06MP28 | 91d | 44d |  |  | MEW | TWR | F06 | MEP |
| CNF06MP14 |  | Vertical Sprinkler Drops |  | 4d | 2017-04-20 | 2017-04-25 | CNF05MP14, CNF06MP29 | 51d | 0d | COST [4988.6 h]; PIPE FITTER [80 h] | 4,988.6 | MEW | TWR | F06 | MEP |
| CNF06MP31 |  | Hose Reel&Fire Extinguishers & Sprinklers |  | 4d | 2017-04-25 | 2017-04-29 | CNF05MP31, CNF06MP29 | 48d | 0d | COST [46832.8 h]; PIPE FITTER [80 h] | 46,832.8 | MEW | TWR | F06 | MEP |
| CNF06MP32 |  | Installation of DBS |  | 4d | 2017-04-25 | 2017-04-29 | CNF05MP32, CNF06MP29 | 44d | 0d | COST [9929.4 h]; ELECTRICIAN [64 h] | 9,929.4 | MEW | TWR | F06 | MEP |
| CNF06MP33 |  | Installation of Panels / SmDBS |  | 4d | 2017-04-25 | 2017-04-29 | CNF05MP33, CNF06MP32 FF, ENPRC1016 | 48d | 0d | COST [46476.1 h]; ELECTRICIAN [64 h] | 46,476.1 | MEW | TWR | F06 | MEP |
| CNF06MP34 |  | Installation of Fire Alarm Panel & Voice Alarm System |  | 4d | 2017-04-25 | 2017-04-29 | CNF05MP34, CNF06MP29, EN0PSPR40 FS+14d, ENPRC1016 | 48d | 0d | COST [20087.7 h]; ELECTRICIAN [80 h] | 20,087.7 | MEW | TWR | F06 | MEP |
| CNF06MP35 |  | Installation of Light Fitting & E.M Light |  | 4d | 2017-04-25 | 2017-04-29 | CNF05MP35, CNF06MP29, ENPRC1014, CNF06FN43 | 48d | 0d | COST [84000 h]; ELECTRICIAN [80 h] | 84,000 | LFX | TWR | F06 | MEP |
| CNF06MP36 |  | Installation of Wiring Accessories |  | 4d | 2017-04-25 | 2017-04-29 | CNF05MP36, CNF06MP35 FF | 48d | 0d | COST [15564.6 h]; ELECTRICIAN [96 h] | 15,564.6 | MEW | TWR | F06 | MEP |
| CNF06MP37 |  | Installation of Grills&Diffusers |  | 4d | 2017-04-25 | 2017-04-29 | CNF05MP37, CNF06MP29 | 44d | 0d | COST [3325.4 h]; DUCTMAN [192 h] | 3,325.4 | MEW | TWR | F06 | MEP |
| CNF06MP38 |  | Installation of Telephone System |  | 4d | 2017-04-30 | 2017-05-03 | CNF05MP38, CNF06MP32 | 44d | 0d | COST [32690.3 h]; ELECTRICIAN [64 h] | 32,690.3 | MEW | TWR | F06 | MEP |
| CNF06MP39 |  | Installation of CCTV System |  | 4d | 2017-04-30 | 2017-05-03 | CNF05MP39, CNF06MP32, EN0PSPR44 FS+14d | 44d | 0d | COST [8707.3 h]; ELECTRICIAN [64 h] | 8,707.3 | MEW | TWR | F06 | MEP |
| CNF06MP40 |  | Thermostat Fixing |  | 4d | 2017-04-30 | 2017-05-03 | CNF05MP40, CNF06MP37 | 44d | 0d | COST [1381 h]; ELECTRICIAN [64 h] | 1,381 | MEW | TWR | F06 | MEP |
| CNF06MP41 |  | MEP Final Fix Clearance | milestone | 0d | 2017-05-03 | 2017-05-03 | CNF06MP39, CNF06MP36, CNF06MP37, CNF06MP40, CNF06MP38, CNF06MP35, CNF06MP31, CNF06MP34, CNF06MP33, CNF06MP32, CNF06MP14, CNF06FN44, CNF06FN91, CNF05MP41 | 88d | 4d |  |  | MEW | TWR | F06 | MEP |

| ID | WBS | Activity | Type | Duration | Start | Finish | Predecessors | Total float | Free float | Resources | Cost | TYPE OF WORK L4 | ZONE L1 | FLOOR L2 | CATEGORY OF WORK L3 |
| --- | --- | --- | --- | --- | --- | --- | --- | --- | --- | --- | --- | --- | --- | --- | --- |
|  | 7 | **7th Floor** |  |  | 2016-08-23 | 2017-09-24 |  |  |  |  |  |  |  |  |  |
|  | 1.5.1.1.2.3.21 | **Concrete** |  |  | 2016-08-23 | 2016-09-08 |  |  |  |  |  |  |  |  |  |
| CNF07CW10 |  | Slab Form Work |  | 5d | 2016-08-23 | 2016-08-28 | CNF06CW50 FF+1d, CNF06CW50 SS+1d | 0d |  | COST [130248 h]; Shutter Carpenter [1360 h]; Helper [680 h]; Form Work [2504 M2] | 130,247.5 | STR | TWR | F07 | CON |
| CNF07CW15 |  | Slab Rebar & Post Tension Tendons |  | 5d | 2016-08-25 | 2016-08-30 | ENCMSRA10, CNF07CW10 SS+1d, CNF07CW10 FF+2d | 0d |  | COST [307860 h]; Steel Fixer [1160 h]; Helper [600 h]; Steel Rebars [41200 Kg] | 307,860 | RFT | TWR | F07 | CON |
| CNF07CW90 |  | TECOM Steel Inspection prior to concrete pouring | milestone | 0d | 2016-08-30 | 2016-08-30 | CNF07CW15 FF, CNF07CW91 | 0d |  |  |  |  | TWR | F07 | CON |
| CNF07CW20 |  | Slab Casting |  | 2d | 2016-08-31 | 2016-09-01 | CNF06CW45, ENCMSRA50, CNF07CW90, CNF07CW15 | 0d |  | COST [280875 h] | 280,875.1 | RFC | TWR | F07 | CON |
| CNF07CW30 |  | Columns and Walls Rebar |  | 5d | 2016-09-01 | 2016-09-06 | CNF07CW20 SS+1d | 0d |  | COST [182819 h]; Steel Fixer [1080 h]; Helper [560 h]; Steel Rebars [53200 Kg] | 182,819 | RFT | TWR | F07 | CON |
| CNF07CW45 |  | PT Tensioning and Grouting |  | 5d | 2016-09-03 | 2016-09-07 | CNF07CW20 | 6d |  | COST |  |  | TWR | F07 | CON |
| CNF07CW35 |  | Columns and Walls Form Work |  | 4d | 2016-09-04 | 2016-09-07 | CNF07CW30 SS+1d, CNF07CW30 FF+1d | 0d |  | COST [64200 h]; Shutter Carpenter [608 h]; Helper [320 h]; Form Work [2504 M2] | 64,200 | STR | TWR | F07 | CON |
| CNF07CW50 |  | Columns Casting |  | 3d | 2016-09-06 | 2016-09-08 | CNF07CW35 SS+1d, CNF07CW35 FF+1d | 0d |  | COST [96203 h] | 96,203 | RFC | TWR | F07 | CON |
|  | 1 | **Finishes** |  |  | 2016-10-25 | 2017-09-24 |  |  |  |  |  |  |  |  |  |
|  | 1.5.2.2.1.1.1 | **General** |  |  | 2016-10-25 | 2017-08-23 |  |  |  |  |  |  |  |  |  |
| CNF07FN10 |  | Block Works |  | 15d | 2016-10-25 | 2016-11-10 | CNF10CW10, ENCMSPR51, CNF06FN10 | 1d | 0d | COST [389617 h]; Helper [1320 h]; Mason [2520 h]; Block [3733 M2] | 389,616.79 | B4-MAS | TWR | F07 | FNS |
| CNF07FN20 |  | Doors Sub Frames |  | 9d | 2016-11-03 | 2016-11-13 | CNF07FN10 SS+8d | 25d | 7d | COST [7164 h]; Sub-Frames [108 No] | 7,164 | B6-WDR | TWR | F07 | FNS |
| CNF07FN21 |  | Internal Walls Plaster Works |  | 12d | 2016-11-12 | 2016-11-24 | CNF07FN20 SS, CNF06FN21, CNF07MP16 | 18d | 0d | COST [121269 h]; Helper [672 h]; Mason [1344 h]; Plastering [3294 M2] | 121,268.81 | PLS | TWR | F07 | FNS |
| CNF07FN28 |  | Balconies Ceiling Plaster |  | 6d | 2016-11-26 | 2016-12-04 | CNF06FN28, CNF07FN21 | 28d | 0d | COST [33575.2 h]; Plastering [375 M2] | 33,575.25 | BCP | TWR | F07 | FNS |
| CNF07FN35 |  | Emulsion Paint for Balconies Ceiling |  | 3d | 2016-12-05 | 2016-12-07 | CNF06FN35, ENCMSPR57, CNF07FN28 | 28d | 0d | COST [5924 h]; Painter [96 h]; Paint [375 M2] | 5,924 | BLP | TWR | F07 | FNS |
| CNF07FN42 |  | Balconies Glazing & Aluminium Handrail |  | 15d | 2016-12-21 | 2017-01-08 | CNF06FN42, CNF07FN41 SS+2d, CNF07FN13, EN0PSRA14, EN0PSPR16 SS+60d | 24d | 0d | COST [210000 h]; Helper [120 h]; Aluminium Labor [120 h] | 210,000 | ALM | TWR | F07 | FNS |
| CNF07FN99 |  | Internal Signage |  | 3d | 2017-07-15 | 2017-07-17 | CNF07FN39, CNF06FN99 | 8d | 0d | COST [9303 h]; Signage Labor [96 h] | 9,303 | SGN | TWR | F07 | FNS |
| CNF07FN51 |  | Paint Final Coat |  | 3d | 2017-08-21 | 2017-08-23 | CNF07FN44, CNF07FN47, CNF07FN42, CNF07FN48, CNF07FN45, CNF07FN46, CNF06FN51 | 17d | 0d | COST [3000 h]; Painter [456 h]; Paint [3294 M2] | 3,000 | PFC | TWR | F07 | FNS |
|  | 1.5.2.2.1.1.2 | **Apartments** |  |  | 2016-11-26 | 2017-05-18 |  |  |  |  |  |  |  |  |  |
|  | 1.5.2.2.1.1.2.1 | **Dry Area** |  |  | 2016-11-26 | 2017-03-28 |  |  |  |  |  |  |  |  |  |
| CNF07FN29 |  | Wall Paint Primer & Stucco |  | 15d | 2016-11-26 | 2016-12-15 | ENCMSPR53, CNF07FN21 | 19d | 12d | COST [43043.6 h]; Painter [1080 h]; Paint [3294 M2] | 43,043.56 | PNT | TWR | F07 | FNS |
| CNF07FN41 |  | Aluminium Doors |  | 12d | 2016-11-26 | 2016-12-12 | CNF06FN41, CNF07FN21, EN0PSRA11, EN0PSPR13 SS+60d | 34d | 3d | Aluminium Labor [96 h]; Helper [192 h]; COST [470000 h] | 470,000 | ALM | TWR | F07 | FNS |
| CNF07FN38 |  | Gypsum Board for Ceiling |  | 12d | 2016-12-31 | 2017-01-14 | CNF07MP28, ENCMSPR54 FS+14d, CNF06FN38, CNF07FN29 | 7d | 0d | COST [156953 h]; False Ceiling Fixer [1056 h]; Gypsum Board [1300 M2] | 156,952.61 | GYP | TWR | F07 | FNS |
| CNF07FN31 |  | Paint for Ceiling |  | 12d | 2017-01-15 | 2017-01-28 | CNF06FN31, CNF07FN38 | 17d | 0d | COST [29459 h]; Painter [288 h]; Paint [1300 M2] | 29,459 | CPN | TWR | F07 | FNS |
| CNF07FN40 |  | Ceramic for Floors |  | 13d | 2017-01-17 | 2017-01-31 | CNF07FN41, CNF07FN38, CNF06FN40, EN0PCPR14 SS+60d | 5d | 0d | COST [135350 h]; Helper [208 h]; Mason [312 h]; Apartment Tiles [1300 M2] | 135,350.21 | TAP | TWR | F07 | FNS |
| CNF07FN90 |  | Door Frames |  | 7d | 2017-02-01 | 2017-02-08 | CNF06FN90, CNF07FN13, CNF07FN40 | 24d | 6d | Helper [112 h]; COST [107500 h]; Doors Carpenter [112 h] | 107,500 | DRI | TWR | F07 | FNS |
| CNF07FN43 |  | Door Shutters |  | 10d | 2017-02-28 | 2017-03-11 | CNF07FN90, CNF07FN40, CNF07FN13, CNF07FN41, CNF06FN43, EN0PSPR18 SS+75d | 8d | 0d | Helper [160 h]; COST [200000 h]; Doors Carpenter [160 h] | 200,000 | APD | TWR | F07 | FNS |
| CNF07FN44 |  | Door Ironmongeries |  | 10d | 2017-03-02 | 2017-03-13 | CNF06FN44, EN0PSPR202 SS+15d, CNF07FN43 SS | 29d | 0d | Finishings Carpenter [80 h]; Helper [80 h]; COST [28500 h] | 28,500 | DRI | TWR | F07 | FNS |
| CNF07FN91 |  | Thresholds |  | 10d | 2017-03-02 | 2017-03-13 | CNF06FN91, CNF07FN43 SS, EN0PCPR12 SS+60d | 29d | 0d | Finishings Carpenter [160 h]; Helper [160 h]; COST [24887.2 h] | 24,887.25 | THR | TWR | F07 | FNS |
| CNF07FN45 |  | Wooden Wardrobes |  | 11d | 2017-03-16 | 2017-03-28 | CNF06FN45, CNF07FN43, CNF07FN40, EN0PSPR38 SS+60d | 8d | 0d | Wooden Wardrobes Carpenter [88 h]; Helper [88 h]; COST [87100 h] | 87,100 | WRD | TWR | F07 | FNS |

| ID | WBS | Activity | Duration | Start | Finish | Predecessors | Total float | Free float | Resources | Cost | TYPE OF WORK L4 | ZONE L1 | FLOOR L2 | CATEGORY OF WORK L3 |
| --- | --- | --- | --- | --- | --- | --- | --- | --- | --- | --- | --- | --- | --- | --- |
|  | 1.5.2.2.1.1.2.2 | **Wet Area** |  | 2016-11-26 | 2017-05-18 |  |  |  |  |  |  |  |  |  |
| CNF07FN12 |  | Ceramic for Walls | 12d | 2016-11-26 | 2016-12-12 | CNF06FN12, CNF07FN21, EN0PCRA17, EN0PCPR15 SS+60d, EN0PCPR90 SS+60d | 43d | 0d | COST [164439 h]; Helper [384 h]; Mason [768 h]; Wet Area Tiles [1700 M2] | 164,438.55 | WLW | TWR | F07 | FNS |
| CNF07FN13 |  | Ceramic For Floors in Balconies | 6d | 2016-12-08 | 2016-12-15 | CNF07FN35, EN0PCPR13 SS+60d | 28d | 4d | COST [35088.2 h]; Helper [48 h]; Mason [96 h]; Balconies Floor Tiles [375 M2] | 35,088.15 | FLB | TWR | F07 | FNS |
| CNF07FN33 |  | Bathtubs | 5d | 2016-12-13 | 2016-12-18 | CNF07FN12, EN0PSPR204 SS+15d, CNF06FN33 | 57d | 10d | COST [35625 h] | 35,625 | bth | TWR | F07 | FNS |
| CNF07FN23 |  | False Ceiling | 15d | 2016-12-29 | 2017-01-16 | CNF07MP28, ENCMSPR55, CNF07FN12 | 29d | 1d | COST [46376.4 h]; False Ceiling Fixer [600 h]; False Ceiling [695 M2] | 46,376.44 | CWT | TWR | F07 | FNS |
| CNF07FN25 |  | Water Proofing | 12d | 2017-01-18 | 2017-01-31 | CNF07FN33 SS+1d, ENCMSPR56, CNF07FN23, CNF06FN25 | 28d | 0d | COST [102613 h]; Water Proofing [553 M2] | 102,613 | WPR | TWR | F07 | FNS |
| CNF07FN34 |  | Ceramic for Floor | 12d | 2017-02-01 | 2017-02-14 | CNF07FN33, CNF07FN25, CNF06FN34, CNSUB1070, EN0PCPR15 SS+60d, EN0PCPR90 SS+60d | 28d | 0d | COST [27945.1 h]; Helper [96 h]; Mason [96 h]; Wet Area Tiles [178 M2] | 27,945.08 | FLW | TWR | F07 | FNS |
| CNF07FN48 |  | Vanity Counter | 9d | 2017-03-12 | 2017-03-21 | CNF07FN13, CNF07FN43, CNF06FN48, EN0PSPR52 SS+45d | 28d | 1d | COST [86000 h]; Helper [216 h]; Vanity Counters Labor [216 h] | 86,000 | VNC | TWR | F07 | FNS |
| CNF07FN47 |  | Kitchen Cabinet | 11d | 2017-03-16 | 2017-03-28 | CNF07FN13, CNF07FN43, CNF06FN47, EN0PSRA36, EN0PSPR37 SS+60d | 4d | 0d | COST [93417 h]; Helper [88 h]; Kitchen Cabinet Carpenter [88 h] | 93,417 | KCB | TWR | F07 | FNS |
| CNF07FN46 |  | Sanitary Ware&Accessories | 6d | 2017-04-24 | 2017-04-30 | CNF07FN48 SS, CNF07FN43, CNF07FN13, CNF07FN33, CNF06FN46, ENPRC1005 | 14d | 0d | COST [100588 h] | 100,588.24 | SWR | TWR | F07 | FNS |
| CNF07FN49 |  | Glass Enclosure | 7d | 2017-05-04 | 2017-05-11 | CNF06FN49, CNF07FN46, EN0PSPR15 SS+60d | 11d | 0d | COST [50000 h]; Helper [56 h]; Glass Enclosure Labor [56 h] | 50,000 | ALM | TWR | F07 | FNS |
| CNF07FN50 |  | Mirrors & Toilet Accessories | 6d | 2017-05-13 | 2017-05-18 | CNF06FN50, CNF07FN46, CNF07FN49, EN0PSPR23 SS+30d | 22d | 1d | COST [86000 h]; Helper [96 h]; Mirrors Labor [48 h] | 86,000 | MRA | TWR | F07 | FNS |
|  | 1.5.2.2.1.1.3 | **Lift Lobby & Corridor** |  | 2017-01-08 | 2017-09-24 |  |  |  |  |  |  |  |  |  |
| CNF07FN11 |  | Ceiling Finishes | 12d | 2017-01-08 | 2017-01-21 | CNF06FN11, EN0PSPR200 SS+45d, CNF07MP30, EN0PSNM11 FS+14d | 24d | 0d | COST [46000 h]; False Ceiling Fixer [192 h] | 46,000 | IDC | TWR | F07 | FNS |
| CNF07FN30 |  | Wall Finishes | 12d | 2017-01-25 | 2017-02-07 | CNF06FN30, EN0PSPR201 SS+30d, CNF07FN21, CNF07FN11, EN0PSNM11 FS+14d | 21d | 0d | COST [59722 h]; Helper [192 h]; Mason [288 h] | 59,722 | IDW | TWR | F07 | FNS |
| CNF07FN39 |  | Floor Finishes | 10d | 2017-02-08 | 2017-02-19 | CNF06FN39, CNF07FN11, CNF07FN30, EN0PSPR30 SS+45d, EN0PSNM11 FS+14d | 40d | 2d | COST [52113 h]; Helper [80 h]; Mason [80 h] | 52,113 | IDF | TWR | F07 | FNS |
| CNF07FN93 |  | Carpet Laying | 3d | 2017-09-21 | 2017-09-24 | CNF06FN93, CNF07FN39, ATDCD1030 | 4d | 0d | COST [9109 h] | 9,109 | IDR | TWR | F07 | FNS |
|  | 1.5.2.2.1.1.4 | **Common Areas/Service Rooms** |  | 2017-04-20 | 2017-06-17 |  |  |  |  |  |  |  |  |  |
|  | 1 | **Service Rooms** |  | 2017-04-20 | 2017-05-29 |  |  |  |  |  |  |  |  |  |
| CNF07FN17 |  | Epoxy Primer Paint for Ceiling | 10d | 2017-04-20 | 2017-05-02 | CNF07FN31, ENCMSPR52, CNF06FN17 | 5d | 0d | COST [3833.81 h]; Painter [80 h] | 3,833.81 | EPC | TWR | F07 | FNS |
| CNF07FN18 |  | Acrylic Emulsion Primer Paint & Stucco for Wall | 6d | 2017-05-03 | 2017-05-09 | CNF07FN17 | 19d | 0d | COST [3248.62 h]; Painter [48 h] | 3,248.62 | SRW | TWR | F07 | FNS |
| CNF07FN24 |  | Epoxy Primer Paint for Floor | 6d | 2017-05-10 | 2017-05-16 | ENCMSPR52, CNF07FN18 | 19d | 7d | COST [2379.32 h]; Painter [48 h] | 2,379.32 | EPF | TWR | F07 | FNS |
| CNF07FN26 |  | Timber Doors | 4d | 2017-05-25 | 2017-05-29 | CNF07FN24, CNF07FN39, CNF06FN26 | 31d | 0d | COST [58000 h]; Doors Carpenter [32 h]; Helper [32 h] | 58,000 | SRD | TWR | F07 | FNS |
|  | 2 | **Stairs** |  | 2017-05-25 | 2017-06-17 |  |  |  |  |  |  |  |  |  |
| CNF07FN27 |  | Epoxy Primer Paint for Ceiling | 4d | 2017-05-25 | 2017-05-29 | ENCMSPR52, CNF07FN24, CNF06FN27 | 12d | 0d | COST [599 h]; Painter [32 h] | 599 | EPC | TWR | F07 | FNS |
| CNF07FN32 |  | Acrylic Emulsion Primer Paint & Stucco for Walls | 4d | 2017-05-30 | 2017-06-03 | CNF07FN27, CNF06FN32 | 12d | 0d | COST [3695.62 h]; Painter [32 h] | 3,695.62 | SRW | TWR | F07 | FNS |
| CNF07FN36 |  | Epoxy Primer Paint for Floor | 4d | 2017-06-04 | 2017-06-07 | ENCMSPR52, CNF07FN32 | 17d | 0d | COST [8129.16 h]; Painter [32 h] | 8,129.16 | EPF | TWR | F07 | FNS |
| CNF07FN80 |  | Stair Handrail | 4d | 2017-06-08 | 2017-06-12 | CNF07FN36 | 17d | 0d | COST [30000 h]; Helper [64 h]; Aluminium Labor [32 h] | 30,000 | B5-MTW | TWR | F07 | FNS |
| CNF07FN37 |  | Steel Doors | 4d | 2017-06-13 | 2017-06-17 | CNF07FN80, CNF07FN36, CNF07FN39, EN0PSPR31 SS+30d, CNF06FN37 | 17d | 0d | Steel Works Labor [32 h]; Helper [64 h]; COST [31730.8 h] | 31,730.81 | STD | TWR | F07 | FNS |

| ID | WBS | Activity | Type | Duration | Start | Finish | Predecessors | Total float | Free float | Resources | Cost | TYPE OF WORK L4 | ZONE L1 | FLOOR L2 | CATEGORY OF WORK L3 |
| --- | --- | --- | --- | --- | --- | --- | --- | --- | --- | --- | --- | --- | --- | --- | --- |
|  | 1.1 | **MEP** |  |  | 2016-08-25 | 2017-05-08 |  |  |  |  |  |  |  |  |  |
|  | 1.1 | **MEP 1st Fix** |  |  | 2016-08-25 | 2016-11-10 |  |  |  |  |  |  |  |  |  |
| CNF07CW91 |  | MEP Conduits for the slab |  | 5d | 2016-08-25 | 2016-08-30 | CNF07CW15 SS, CNF07CW15 FF | 0d |  | COST [214225 h]; ELECTRICIAN [800 h]; PLUMBER [400 h] | 214,225.1 | MEW | TWR | F07 | CON |
| CNF07FN19 |  | Walls Cutting & Chasing |  | 7d | 2016-11-03 | 2016-11-10 | CNF07FN10 SS+8d | 18d | 0d | COST [6151 h] | 6,151 | MEW | TWR | F07 | FNS |
| CNF07MP10 |  | Civil Clearance To Start 1st Fix | milestone | 0d | 2016-11-06 | 2016-11-06 | EN0PSRA67, EN0PSRA02, EN0PSRA70, EN0PSRA73, EN0PSRA41, EN0PSRA44, EN0PSRA49, EN0PSRA54, EN0PSRA58, EN0PSRA62, EN0PSRA76, EN0PSRA80, CNF07FN19 SS+2d | 18d | 0d |  |  | MEW | TWR | F07 | MEP |
| CNF07MP11 |  | Drainage Pipes ( In Walls) |  | 5d | 2016-11-06 | 2016-11-10 | CNF07MP10, CNF06MP11 | 18d | 0d | COST [15528 h]; PLUMBER [360 h] | 15,528 | MEW | TWR | F07 | MEP |
| CNF07MP12 |  | Water Supply Pipes ( In Walls) |  | 5d | 2016-11-06 | 2016-11-10 | CNF07MP10, CNF06MP12 | 18d | 0d | COST [26928.4 h]; PLUMBER [360 h] | 26,928.4 | MEW | TWR | F07 | MEP |
| CNF07MP13 |  | Sleeves,Conduites,Gi Box,DB Box In Wall |  | 5d | 2016-11-06 | 2016-11-10 | CNF07MP10, CNF06MP13 | 18d | 0d | COST [48200.5 h]; ELECTRICIAN [1120 h] | 48,200.5 | MEW | TWR | F07 | MEP |
| CNF07MP16 |  | MEP Clearance To Start Plaster | milestone | 0d | 2016-11-10 | 2016-11-10 | CNF07MP11, CNF07MP12, CNF07MP13 | 18d | 0d |  |  | MEW | TWR | F07 | MEP |
|  | 1.2 | **MEP 2nd Fix** |  |  | 2016-11-24 | 2017-01-04 |  |  |  |  |  |  |  |  |  |
| CNF07MP17 |  | Civil Clearance To Start 2nd Fix | milestone | 0d | 2016-11-24 | 2016-11-24 | CNF07MP16, CNF07FN21 | 23d | 1d |  |  | MEW | TWR | F07 | MEP |
| CNF07MP24 |  | LPG Piping |  | 10d | 2016-11-26 | 2016-12-08 | CNF06MP24, CNF07FN21, EN0PSPR11 FS+7d | 24d | 5d | COST [67153.8 h]; PIPE FITTER [320 h] | 67,153.8 | MEW | TWR | F07 | MEP |
| CNF07MP19 |  | Wires |  | 7d | 2016-11-28 | 2016-12-07 | CNF07MP13, CNF07MP17 FS+1d, CNF06MP19 | 25d | 7d | COST [153534 h]; ELECTRICIAN [1232 h] | 153,534.2 | MEW | TWR | F07 | MEP |
| CNF07MP15 |  | Cable Tray / Trunking |  | 10d | 2016-12-10 | 2016-12-21 | CNF07MP17, CNF06MP15 | 14d | 0d | COST [153534 h]; ELECTRICIAN [480 h] | 153,534.2 | MEW | TWR | F07 | MEP |
| CNF07MP21 |  | Ducting Work Including Insulation |  | 10d | 2016-12-10 | 2016-12-21 | CNF06MP21, CNF07FN21 | 14d | 0d | COST [186091 h]; DUCTMAN [320 h] | 186,091.2 | MEW | TWR | F07 | MEP |
| CNF07MP22 |  | Installation of FCUs & Fans |  | 10d | 2016-12-10 | 2016-12-21 | CNF07MP21 FF, CNF06MP22, ENPRC1013 | 14d | 0d | COST [132302 h]; AC TECHNICIAN [360 h] | 132,302.1 | MEW | TWR | F07 | MEP |
| CNF07MP23 |  | Chilled Water Pipes (High L) |  | 10d | 2016-12-10 | 2016-12-21 | CNF06MP23, CNF07FN21 | 8d | 0d | COST [109870 h]; AC TECHNICIAN [240 h] | 109,870.1 | MEW | TWR | F07 | MEP |
| CNF07MP25 |  | Fire Fighting Pipes (Mains/Branches) |  | 10d | 2016-12-10 | 2016-12-21 | CNF06MP25, CNF07FN21 | 14d | 0d | COST [79182 h]; PIPE FITTER [240 h] | 79,182 | MEW | TWR | F07 | MEP |
| CNF07MP18 |  | Drainage Pipes (High L) |  | 10d | 2016-12-12 | 2016-12-22 | CNF07MP17 FS+1d, CNF06MP18 | 13d | 0d | COST [121568 h]; PLUMBER [400 h] | 121,568.3 | MEW | TWR | F07 | MEP |
| CNF07MP20 |  | Water Supply Pipes (High L) |  | 10d | 2016-12-12 | 2016-12-22 | CNF07MP18 FF, CNF06MP20 | 13d | 0d | COST [141452 h]; PLUMBER [320 h] | 141,451.6 | MEW | TWR | F07 | MEP |
| CNF07MP26 |  | Acoustic Drainage Pipe Insulation |  | 8d | 2016-12-14 | 2016-12-22 | CNF07MP18 SS+2d, CNF06MP26 | 13d | 2d | COST [3763.1 h]; PLUMBER [256 h] | 3,763.1 | MEW | TWR | F07 | MEP |
| CNF07MP27 |  | Water Heaters Installation&Connection |  | 6d | 2016-12-22 | 2016-12-28 | CNF07MP23, CNF07MP20 SS+2d, ENPRC1002 | 8d | 0d | COST [558.9 h] | 558.9 | MEW | TWR | F07 | MEP |
| CNF07MP28 |  | MEP Clearance To Close Apartments Ceilings | milestone | 0d | 2016-12-28 | 2016-12-28 | CNF07MP23, CNF07MP20, CNF07MP19, CNF07MP25, CNF07MP22, CNF07MP18, CNF07MP24, CNF07MP26, CNF07MP27, CNF07MP15 | 8d | 0d |  |  | MEW | TWR | F07 | MEP |
| CNF07MP30 |  | MEP Clearance To Close Corridors Ceilings | milestone | 0d | 2017-01-04 | 2017-01-04 | CNF07MP28 FF+5d | 26d | 2d |  |  | MEW | TWR | F07 | MEP |

| ID | WBS | Activity | Type | Duration | Start | Finish | Predecessors | Total float | Free float | Calendar | Resources | Cost | TYPE OF WORK L4 | ZONE L1 | FLOOR L2 | CATEGORY OF WORK L3 |
| --- | --- | --- | --- | --- | --- | --- | --- | --- | --- | --- | --- | --- | --- | --- | --- | --- |
|  | 1.3 | **MEP 3rd Fix** |  |  | 2017-03-11 | 2017-05-08 |  |  |  |  |  |  |  |  |  |  |
| CNF07MP29 |  | Civil Clearance To Start Final Fix | milestone | 0d | 2017-03-11 | 2017-03-11 | CNF07FN43, CNF07MP30, CNF07MP28 | 85d | 38d |  |  |  | MEW | TWR | F07 | MEP |
| CNF07MP14 |  | Vertical Sprinkler Drops |  | 4d | 2017-04-26 | 2017-04-30 | CNF06MP14, CNF07MP29 | 51d | 0d |  | COST [4988.6 h]; PIPE FITTER [80 h] | 4,988.6 | MEW | TWR | F07 | MEP |
| CNF07MP31 |  | Hose Reel&Fire Extinguishers & Sprinklers |  | 4d | 2017-04-30 | 2017-05-03 | CNF06MP31, CNF07MP29 | 48d | 0d |  | COST [46832.8 h]; PIPE FITTER [128 h] | 46,832.8 | MEW | TWR | F07 | MEP |
| CNF07MP32 |  | Installation of DBS |  | 4d | 2017-04-30 | 2017-05-03 | CNF07MP29, CNF06MP32 | 44d | 0d |  | COST [9929.4 h]; ELECTRICIAN [64 h] | 9,929.4 | MEW | TWR | F07 | MEP |
| CNF07MP33 |  | Installation of Panels / SmDBS |  | 4d | 2017-04-30 | 2017-05-03 | CNF06MP33, CNF07MP32 FF, ENPRC1016 | 48d | 0d |  | COST [46476.1 h]; ELECTRICIAN [64 h] | 46,476.1 | MEW | TWR | F07 | MEP |
| CNF07MP34 |  | Installation of Fire Alarm Panel & Voice Alarm System |  | 4d | 2017-04-30 | 2017-05-03 | CNF07MP29, CNF06MP34, EN0PSPR40 FS+14d, ENPRC1016 | 48d | 0d |  | COST [20087.7 h]; ELECTRICIAN [120 h] | 20,087.7 | MEW | TWR | F07 | MEP |
| CNF07MP35 |  | Installation of Light Fitting & E.M Light |  | 4d | 2017-04-30 | 2017-05-03 | CNF07MP29, CNF06MP35, ENPRC1014, CNF07FN43 | 48d | 0d |  | COST [84000 h]; ELECTRICIAN [120 h] | 84,000 | LFX | TWR | F07 | MEP |
| CNF07MP36 |  | Installation of Wiring Accessories |  | 4d | 2017-04-30 | 2017-05-03 | CNF07MP35 FF, CNF06MP36 | 48d | 0d |  | COST [15564.6 h]; ELECTRICIAN [96 h] | 15,564.6 | MEW | TWR | F07 | MEP |
| CNF07MP37 |  | Installation of Grills&Diffusers |  | 4d | 2017-04-30 | 2017-05-03 | CNF07MP29, CNF06MP37 | 44d | 0d |  | COST [3325.4 h]; DUCTMAN [160 h] | 3,325.4 | MEW | TWR | F07 | MEP |
| CNF07MP38 |  | Installation of Telephone System |  | 4d | 2017-05-04 | 2017-05-08 | CNF07MP32, CNF06MP38 | 44d | 0d |  | COST [32690.3 h]; ELECTRICIAN [64 h] | 32,690.3 | MEW | TWR | F07 | MEP |
| CNF07MP39 |  | Installation of CCTV System |  | 4d | 2017-05-04 | 2017-05-08 | CNF07MP32, CNF06MP39, EN0PSPR44 FS+14d | 44d | 0d |  | COST [8707.3 h]; ELECTRICIAN [64 h] | 8,707.3 | MEW | TWR | F07 | MEP |
| CNF07MP40 |  | Thermostat Fixing |  | 4d | 2017-05-04 | 2017-05-08 | CNF07MP37, CNF06MP40 | 44d | 0d |  | COST [1381 h]; ELECTRICIAN [64 h] | 1,381 | MEW | TWR | F07 | MEP |
| CNF07MP41 |  | MEP Final Fix Clearance | milestone | 0d | 2017-05-08 | 2017-05-08 | CNF07MP39, CNF07MP36, CNF07MP37, CNF07MP40, CNF07MP38, CNF07MP35, CNF07MP31, CNF07MP34, CNF07MP33, CNF07MP32, CNF07MP14, CNF07FN44, CNF07FN91, CNF06MP41 | 84d | 4d |  |  |  | MEW | TWR | F07 | MEP |
|  | 8 | **8th Floor** |  |  | 2016-09-07 | 2017-09-27 |  |  |  |  |  |  |  |  |  |  |
|  | 1.5.1.1.2.3.21 | **Concrete** |  |  | 2016-09-07 | 2016-09-27 |  |  |  |  |  |  |  |  |  |  |
| CNF08CW10 |  | Slab Form Work |  | 5d | 2016-09-07 | 2016-09-15 | CNF07CW50 FF+1d, CNF07CW50 SS+1d | 0d |  |  | COST [130248 h]; Shutter Carpenter [1360 h]; Helper [680 h]; Form Work [2504 M2] | 130,247.5 | STR | TWR | F08 | CON |
| CNF08CW15 |  | Slab Rebar & Post Tension Tendons |  | 5d | 2016-09-13 | 2016-09-18 | ENCMSRA10, CNF08CW10 SS+1d, CNF08CW10 FF+2d | 0d |  |  | COST [307860 h]; Steel Fixer [1160 h]; Helper [600 h]; Steel Rebars [41200 Kg] | 307,860 | RFT | TWR | F08 | CON |
| CNF08CW90 |  | TECOM Steel Inspection prior to concrete pouring | milestone | 0d | 2016-09-18 | 2016-09-18 | CNF08CW15, CNF08CW91 | 0d |  | DM/Authority Calendar |  |  |  | TWR | F08 | CON |
| CNF08CW20 |  | Slab Casting |  | 2d | 2016-09-19 | 2016-09-20 | CNF07CW45, ENCMSRA50, CNF08CW90, CNF08CW15 | 0d |  |  | COST [280875 h] | 280,875.1 | RFC | TWR | F08 | CON |
| CNF08CW30 |  | Columns and Walls Rebar |  | 5d | 2016-09-20 | 2016-09-25 | CNF08CW20 SS+1d | 0d |  |  | COST [125881 h]; Steel Fixer [1080 h]; Helper [560 h]; Steel Rebars [53200 Kg] | 125,881 | RFT | TWR | F08 | CON |
| CNF08CW45 |  | PT Tensioning and Grouting |  | 5d | 2016-09-21 | 2016-09-26 | CNF08CW20 | 6d |  |  | COST |  |  | TWR | F08 | CON |
| CNF08CW35 |  | Columns and Walls Form Work |  | 4d | 2016-09-22 | 2016-09-26 | CNF08CW30 SS+1d, CNF08CW30 FF+1d | 0d |  |  | COST [64600 h]; Shutter Carpenter [608 h]; Helper [320 h]; Form Work [2504 M2] | 64,600 | STR | TWR | F08 | CON |
| CNF08CW50 |  | Columns Casting |  | 3d | 2016-09-25 | 2016-09-27 | CNF08CW35 SS+1d, CNF08CW35 FF+1d | 0d |  |  | COST [86421 h] | 86,421 | RFC | TWR | F08 | CON |

| ID | WBS | Activity | Duration | Start | Finish | Predecessors | Total float | Free float | Resources | Cost | TYPE OF WORK L4 | ZONE L1 | FLOOR L2 | CATEGORY OF WORK L3 |
| --- | --- | --- | --- | --- | --- | --- | --- | --- | --- | --- | --- | --- | --- | --- |
|  | 1 | **Finishes** |  | 2016-11-12 | 2017-09-27 |  |  |  |  |  |  |  |  |  |
|  | 1.5.2.2.1.1.1 | **General** |  | 2016-11-12 | 2017-08-27 |  |  |  |  |  |  |  |  |  |
| CNF08FN10 |  | Block Works | 15d | 2016-11-12 | 2016-11-28 | CNF11CW10, ENCMSPR51, CNF07FN10 | 1d | 0d | COST [389617 h]; Helper [1320 h]; Mason [2520 h]; Block [3733 M2] | 389,616.79 | B4-MAS | TWR | F08 | FNS |
| CNF08FN20 |  | Doors Sub Frames | 9d | 2016-11-21 | 2016-12-01 | CNF08FN10 SS+8d | 24d | 7d | COST [7164 h]; Sub-Frames [108 No] | 7,164 | B6-WDR | TWR | F08 | FNS |
| CNF08FN21 |  | Internal Walls Plaster Works | 12d | 2016-11-29 | 2016-12-15 | CNF08MP16, CNF08FN20 SS, CNF07FN21 | 17d | 0d | COST [121269 h]; Helper [672 h]; Mason [1344 h]; Plastering [3294 M2] | 121,268.81 | PLS | TWR | F08 | FNS |
| CNF08FN28 |  | Balconies Ceiling Plaster | 6d | 2016-12-17 | 2016-12-22 | CNF07FN28, CNF08FN21 | 28d | 0d | COST [33575.2 h]; Plastering [375 M2] | 33,575.25 | BCP | TWR | F08 | FNS |
| CNF08FN35 |  | Emulsion Paint for Balconies Ceiling | 3d | 2016-12-24 | 2016-12-26 | CNF07FN35, ENCMSPR57, CNF08FN28 | 28d | 0d | COST [5924 h]; Painter [96 h]; Paint [375 M2] | 5,924 | BLP | TWR | F08 | FNS |
| CNF08FN42 |  | Balconies Glazing & Aluminium Handrail | 15d | 2017-01-09 | 2017-01-25 | CNF07FN42, CNF08FN41 SS+2d, CNF08FN13, EN0PSRA14, EN0PSPR16 SS+75d | 24d | 0d | COST [210000 h]; Helper [120 h]; Aluminium Labor [120 h] | 210,000 | ALM | TWR | F08 | FNS |
| CNF08FN99 |  | Internal Signage | 3d | 2017-07-18 | 2017-07-20 | CNF08FN39, CNF07FN99 | 8d | 0d | COST [9139 h]; Signage Labor [96 h] | 9,139 | SGN | TWR | F08 | FNS |
| CNF08FN51 |  | Paint Final Coat | 3d | 2017-08-24 | 2017-08-27 | CNF08FN44, CNF08FN47, CNF08FN42, CNF08FN48, CNF08FN45, CNF08FN46, CNF07FN51 | 17d | 0d | COST [3000 h]; Painter [456 h]; Paint [3294 M2] | 3,000 | PFC | TWR | F08 | FNS |
|  | 1.5.2.2.1.1.2 | **Apartments** |  | 2016-12-17 | 2017-05-27 |  |  |  |  |  |  |  |  |  |
|  | 1.5.2.2.1.1.2.1 | **Dry Area** |  | 2016-12-17 | 2017-04-10 |  |  |  |  |  |  |  |  |  |
| CNF08FN29 |  | Wall Paint Primer & Stucco | 15d | 2016-12-17 | 2017-01-03 | ENCMSPR53, CNF08FN21 | 17d | 9d | COST [43043.6 h]; Painter [1080 h]; Paint [3294 M2] | 43,043.56 | PNT | TWR | F08 | FNS |
| CNF08FN41 |  | Aluminium Doors | 12d | 2016-12-17 | 2016-12-29 | CNF07FN41, CNF08FN21, EN0PSRA11, EN0PSPR13 SS+60d | 32d | 3d | Aluminium Labor [96 h]; Helper [192 h]; COST [470000 h] | 470,000 | ALM | TWR | F08 | FNS |
| CNF08FN38 |  | Gypsum Board for Ceiling | 12d | 2017-01-15 | 2017-01-28 | CNF08MP28, ENCMSPR54 FS+14d, CNF07FN38, CNF08FN29 | 8d | 0d | COST [156953 h]; False Ceiling Fixer [1056 h]; Gypsum Board [1300 M2] | 156,952.61 | GYP | TWR | F08 | FNS |
| CNF08FN31 |  | Paint for Ceiling | 12d | 2017-01-29 | 2017-02-11 | CNF07FN31, CNF08FN38 | 17d | 0d | COST [29459 h]; Painter [288 h]; Paint [1300 M2] | 29,459 | CPN | TWR | F08 | FNS |
| CNF08FN40 |  | Ceramic for Floors | 13d | 2017-02-01 | 2017-02-15 | CNF08FN41, CNF08FN38, CNF07FN40, EN0PCPR14 SS+60d | 5d | 0d | COST [135350 h]; Helper [208 h]; Mason [312 h]; Apartment Tiles [1300 M2] | 135,350.21 | TAP | TWR | F08 | FNS |
| CNF08FN90 |  | Door Frames | 7d | 2017-02-16 | 2017-02-23 | CNF07FN90, CNF08FN13, CNF08FN40 | 22d | 6d | Helper [112 h]; COST [107500 h]; Doors Carpenter [112 h] | 107,500 | DRI | TWR | F08 | FNS |
| CNF08FN43 |  | Door Shutters | 10d | 2017-03-12 | 2017-03-22 | CNF08FN90, CNF08FN40, CNF08FN13, CNF08FN41, CNF07FN43, EN0PSPR18 SS+75d | 9d | 0d | Helper [160 h]; COST [200000 h]; Doors Carpenter [160 h] | 200,000 | APD | TWR | F08 | FNS |
| CNF08FN44 |  | Door Ironmongeries | 10d | 2017-03-14 | 2017-03-25 | CNF07FN44, EN0PSPR202 SS+15d, CNF08FN43 SS | 29d | 0d | Finishings Carpenter [80 h]; Helper [80 h]; COST [28500 h] | 28,500 | DRI | TWR | F08 | FNS |
| CNF08FN91 |  | Thresholds | 10d | 2017-03-14 | 2017-03-25 | CNF07FN91, CNF08FN43 SS, EN0PCPR12 SS+60d | 29d | 0d | Finishings Carpenter [160 h]; Helper [160 h]; COST [24887.2 h] | 24,887.25 | THR | TWR | F08 | FNS |
| CNF08FN45 |  | Wooden Wardrobes | 11d | 2017-03-29 | 2017-04-10 | CNF07FN45, CNF08FN43, CNF08FN40, EN0PSPR38 SS+60d | 8d | 0d | Wooden Wardrobes Carpenter [88 h]; Helper [88 h]; COST [87100 h] | 87,100 | WRD | TWR | F08 | FNS |
|  | 1.5.2.2.1.1.2.2 | **Wet Area** |  | 2016-12-17 | 2017-05-27 |  |  |  |  |  |  |  |  |  |
| CNF08FN12 |  | Ceramic for Walls | 12d | 2016-12-17 | 2016-12-29 | CNF07FN12, CNF08FN21, EN0PCRA17, EN0PCPR15 SS+60d, EN0PCPR90 SS+60d | 40d | 0d | COST [164439 h]; Helper [384 h]; Mason [768 h]; Wet Area Tiles [1700 M2] | 164,438.55 | WLW | TWR | F08 | FNS |
| CNF08FN13 |  | Ceramic For Floors in Balconies | 6d | 2016-12-27 | 2017-01-03 | CNF08FN35, EN0PCPR13 SS+60d | 28d | 4d | COST [35088.2 h]; Helper [48 h]; Mason [96 h]; Balconies Floor Tiles [375 M2] | 35,088.15 | FLB | TWR | F08 | FNS |
| CNF08FN33 |  | Bathtubs | 5d | 2016-12-31 | 2017-01-05 | CNF08FN12, EN0PSPR204 SS+15d, CNF07FN33 | 54d | 10d | COST [35625 h] | 35,625 | bth | TWR | F08 | FNS |
| CNF08FN23 |  | False Ceiling | 15d | 2017-01-10 | 2017-01-26 | CNF08MP28, ENCMSPR55, CNF08FN12 | 32d | 4d | COST [46376.4 h]; False Ceiling Fixer [600 h]; False Ceiling [695 M2] | 46,376.44 | CWT | TWR | F08 | FNS |
| CNF08FN25 |  | Water Proofing | 12d | 2017-02-01 | 2017-02-14 | CNF08FN33 SS+1d, ENCMSPR56, CNF08FN23, CNF07FN25 | 28d | 0d | COST [102613 h]; Water Proofing [553 M2] | 102,613 | WPR | TWR | F08 | FNS |
| CNF08FN34 |  | Ceramic for Floor | 12d | 2017-02-15 | 2017-02-28 | CNF08FN33, CNF08FN25, CNF07FN34, CNSUB1070, EN0PCPR15 SS+60d, EN0PCPR90 SS+90d | 28d | 0d | COST [27945.1 h]; Helper [96 h]; Mason [96 h]; Wet Area Tiles [178 M2] | 27,945.08 | FLW | TWR | F08 | FNS |
| CNF08FN48 |  | Vanity Counter | 9d | 2017-03-23 | 2017-04-02 | CNF08FN13, CNF08FN43, CNF07FN48, EN0PSPR52 SS+45d | 27d | 1d | COST [86000 h]; Helper [216 h]; Vanity Counters Labor [216 h] | 86,000 | VNC | TWR | F08 | FNS |
| CNF08FN47 |  | Kitchen Cabinet | 11d | 2017-03-29 | 2017-04-10 | CNF08FN13, CNF08FN43, CNF07FN47, EN0PSRA36, EN0PSPR37 SS+60d | 4d | 0d | COST [93417 h]; Helper [88 h]; Kitchen Cabinet Carpenter [88 h] | 93,417 | KCB | TWR | F08 | FNS |
| CNF08FN46 |  | Sanitary Ware&Accessories | 6d | 2017-05-01 | 2017-05-07 | CNF08FN48 SS, CNF08FN43, CNF08FN13, CNF08FN33, CNF07FN46, ENPRC1005 | 15d | 0d | COST [100588 h] | 100,588.24 | SWR | TWR | F08 | FNS |
| CNF08FN49 |  | Glass Enclosure | 7d | 2017-05-13 | 2017-05-20 | CNF07FN49, CNF08FN46, EN0PSPR15 SS+60d | 11d | 0d | COST [50000 h]; Helper [56 h]; Glass Enclosure Labor [56 h] | 50,000 | ALM | TWR | F08 | FNS |
| CNF08FN50 |  | Mirrors & Toilet Accessories | 6d | 2017-05-21 | 2017-05-27 | CNF07FN50, CNF08FN46, CNF08FN49, EN0PSPR23 SS+30d | 21d | 1d | COST [86000 h]; Helper [96 h]; Mirrors Labor [48 h] | 86,000 | MRA | TWR | F08 | FNS |

| ID | WBS | Activity | Type | Duration | Start | Finish | Predecessors | Total float | Free float | Resources | Cost | TYPE OF WORK L4 | ZONE L1 | FLOOR L2 | CATEGORY OF WORK L3 |
| --- | --- | --- | --- | --- | --- | --- | --- | --- | --- | --- | --- | --- | --- | --- | --- |
|  | 1.5.2.2.1.1.3 | **Lift Lobby & Corridor** |  |  | 2017-01-22 | 2017-09-27 |  |  |  |  |  |  |  |  |  |
| CNF08FN11 |  | Ceiling Finishes |  | 12d | 2017-01-22 | 2017-02-04 | CNF07FN11, EN0PSPR200 SS+60d, CNF08MP30, EN0PSNM11 FS+14d | 24d | 0d | COST [46000 h]; False Ceiling Fixer [192 h] | 46,000 | IDC | TWR | F08 | FNS |
| CNF08FN30 |  | Wall Finishes |  | 12d | 2017-02-08 | 2017-02-21 | CNF07FN30, CNF08FN11, EN0PSPR201 SS+60d, CNF08FN21, EN0PSNM11 FS+14d | 21d | 0d | COST [59722 h]; Helper [192 h]; Mason [288 h] | 59,722 | IDW | TWR | F08 | FNS |
| CNF08FN39 |  | Floor Finishes |  | 10d | 2017-02-22 | 2017-03-05 | CNF07FN39, CNF08FN11, CNF08FN30, EN0PSPR30 SS+60d, EN0PSNM11 FS+14d | 38d | 2d | COST [52113 h]; Helper [80 h]; Mason [80 h] | 52,113 | IDF | TWR | F08 | FNS |
| CNF08FN93 |  | Carpet Laying |  | 3d | 2017-09-25 | 2017-09-27 | CNF07FN93, CNF08FN39, ATDCD1030 | 4d | 0d | COST [9109 h] | 9,109 | IDR | TWR | F08 | FNS |
|  | 1.5.2.2.1.1.4 | **Common Areas/Service Rooms** |  |  | 2017-05-03 | 2017-06-21 |  |  |  |  |  |  |  |  |  |
|  | 1 | **Service Rooms** |  |  | 2017-05-03 | 2017-06-03 |  |  |  |  |  |  |  |  |  |
| CNF08FN17 |  | Epoxy Primer Paint for Ceiling |  | 6d | 2017-05-03 | 2017-05-09 | CNF08FN31, ENCMSPR52, CNF07FN17 | 5d | 0d | COST [3833.81 h]; Painter [48 h] | 3,833.81 | EPC | TWR | F08 | FNS |
| CNF08FN18 |  | Acrylic Emulsion Primer Paint & Stucco for Wall |  | 6d | 2017-05-10 | 2017-05-16 | CNF08FN17 | 17d | 0d | COST [3248.62 h]; Painter [48 h] | 3,248.62 | SRW | TWR | F08 | FNS |
| CNF08FN24 |  | Epoxy Primer Paint for Floor |  | 6d | 2017-05-17 | 2017-05-23 | ENCMSPR52, CNF08FN18 | 17d | 5d | COST [2379.32 h]; Painter [48 h] | 2,379.32 | EPF | TWR | F08 | FNS |
| CNF08FN26 |  | Timber Doors |  | 4d | 2017-05-30 | 2017-06-03 | CNF08FN24, CNF07FN26 | 31d | 0d | COST [58000 h]; Doors Carpenter [32 h]; Helper [32 h] | 58,000 | SRD | TWR | F08 | FNS |
|  | 2 | **Stairs** |  |  | 2017-05-30 | 2017-06-21 |  |  |  |  |  |  |  |  |  |
| CNF08FN27 |  | Epoxy Primer Paint for Ceiling |  | 4d | 2017-05-30 | 2017-06-03 | ENCMSPR52, CNF08FN24, CNF07FN27 | 12d | 0d | COST [599 h]; Painter [32 h] | 599 | EPC | TWR | F08 | FNS |
| CNF08FN32 |  | Acrylic Emulsion Primer Paint & Stucco for Walls |  | 4d | 2017-06-04 | 2017-06-07 | CNF08FN27, CNF07FN32 | 12d | 0d | COST [3695.62 h]; Painter [32 h] | 3,695.62 | SRW | TWR | F08 | FNS |
| CNF08FN36 |  | Epoxy Primer Paint for Floor |  | 4d | 2017-06-08 | 2017-06-12 | ENCMSPR52, CNF08FN32 | 17d | 0d | COST [8129.16 h]; Painter [32 h] | 8,129.16 | EPF | TWR | F08 | FNS |
| CNF08FN80 |  | Stair Handrail |  | 4d | 2017-06-13 | 2017-06-17 | CNF08FN36 | 17d | 0d | COST [30000 h]; Helper [64 h]; Aluminium Labor [32 h] | 30,000 | B5-MTW | TWR | F08 | FNS |
| CNF08FN37 |  | Steel Doors |  | 4d | 2017-06-18 | 2017-06-21 | CNF08FN80, CNF08FN36, EN0PSPR31 SS+30d, CNF07FN37 | 17d | 0d | Steel Works Labor [32 h]; Helper [64 h]; COST [31730.8 h] | 31,730.81 | STD | TWR | F08 | FNS |
|  | 1.1 | **MEP** |  |  | 2016-09-13 | 2017-05-13 |  |  |  |  |  |  |  |  |  |
|  | 1.1 | **MEP 1st Fix** |  |  | 2016-09-13 | 2016-11-28 |  |  |  |  |  |  |  |  |  |
| CNF08CW91 |  | MEP Conduits for the slab |  | 5d | 2016-09-13 | 2016-09-18 | CNF08CW15 SS, CNF08CW15 FF | 0d |  | COST [214225 h]; ELECTRICIAN [800 h]; PLUMBER [400 h] | 214,225.1 | MEW | TWR | F08 | CON |
| CNF08FN19 |  | Walls Cutting & Chasing |  | 7d | 2016-11-21 | 2016-11-28 | CNF08FN10 SS+8d | 17d | 0d | COST [6151 h] | 6,151 | MEW | TWR | F08 | FNS |
| CNF08MP10 |  | Civil Clearance To Start 1st Fix | milestone | 0d | 2016-11-23 | 2016-11-23 | EN0PSRA67, EN0PSRA02, EN0PSRA70, EN0PSRA73, EN0PSRA41, EN0PSRA44, EN0PSRA49, EN0PSRA54, EN0PSRA58, EN0PSRA62, EN0PSRA76, EN0PSRA80, CNF08FN19 SS+2d | 17d | 0d |  |  | MEW | TWR | F08 | MEP |
| CNF08MP11 |  | Drainage Pipes ( In Walls) |  | 5d | 2016-11-23 | 2016-11-28 | CNF08MP10, CNF07MP11 | 17d | 0d | COST [15528 h]; PLUMBER [360 h] | 15,528 | MEW | TWR | F08 | MEP |
| CNF08MP12 |  | Water Supply Pipes ( In Walls) |  | 5d | 2016-11-23 | 2016-11-28 | CNF08MP10, CNF07MP12 | 17d | 0d | COST [26928.4 h]; PLUMBER [360 h] | 26,928.4 | MEW | TWR | F08 | MEP |
| CNF08MP13 |  | Sleeves,Conduites,Gi Box,DB Box In Wall |  | 5d | 2016-11-23 | 2016-11-28 | CNF08MP10, CNF07MP13 | 17d | 0d | COST [48200.5 h]; ELECTRICIAN [1120 h] | 48,200.5 | MEW | TWR | F08 | MEP |
| CNF08MP16 |  | MEP Clearance To Start Plaster | milestone | 0d | 2016-11-28 | 2016-11-28 | CNF08MP11, CNF08MP12, CNF08MP13 | 17d | 0d |  |  | MEW | TWR | F08 | MEP |

| ID | WBS | Activity | Type | Duration | Start | Finish | Predecessors | Total float | Free float | Resources | Cost | TYPE OF WORK L4 | ZONE L1 | FLOOR L2 | CATEGORY OF WORK L3 |
| --- | --- | --- | --- | --- | --- | --- | --- | --- | --- | --- | --- | --- | --- | --- | --- |
|  | 1.2 | **MEP 2nd Fix** |  |  | 2016-12-15 | 2017-01-15 |  |  |  |  |  |  |  |  |  |
| CNF08MP17 |  | Civil Clearance To Start 2nd Fix | milestone | 0d | 2016-12-15 | 2016-12-15 | CNF08FN21 | 21d | 0d |  |  | MEW | TWR | F08 | MEP |
| CNF08MP24 |  | LPG Piping |  | 10d | 2016-12-17 | 2016-12-27 | CNF07MP24, CNF08FN21, EN0PSPR11 FS+7d | 22d | 5d | COST [67153.8 h]; PIPE FITTER [240 h] | 67,153.8 | MEW | TWR | F08 | MEP |
| CNF08MP19 |  | Wires |  | 7d | 2016-12-18 | 2016-12-25 | CNF08MP13, CNF08MP17 FS+1d, CNF07MP19 | 24d | 8d | COST [153534 h]; ELECTRICIAN [1232 h] | 153,534.2 | MEW | TWR | F08 | MEP |
| CNF08MP15 |  | Cable Tray / Trunking |  | 10d | 2016-12-22 | 2017-01-03 | CNF08MP17, CNF07MP15 | 17d | 0d | COST [153534 h]; ELECTRICIAN [624 h] | 153,534.2 | MEW | TWR | F08 | MEP |
| CNF08MP21 |  | Ducting Work Including Insulation |  | 10d | 2016-12-22 | 2017-01-03 | CNF07MP21, CNF08FN21 | 17d | 0d | COST [186091 h]; DUCTMAN [528 h] | 186,091.2 | MEW | TWR | F08 | MEP |
| CNF08MP22 |  | Installation of FCUs & Fans |  | 10d | 2016-12-22 | 2017-01-03 | CNF08MP21 FF, CNF07MP22, ENPRC1013 | 17d | 0d | COST [132302 h]; AC TECHNICIAN [480 h] | 132,302.1 | MEW | TWR | F08 | MEP |
| CNF08MP23 |  | Chilled Water Pipes (High L) |  | 9d | 2016-12-22 | 2017-01-02 | CNF07MP23, CNF08FN21 | 12d | 0d | COST [109870 h]; AC TECHNICIAN [320 h] | 109,870.1 | MEW | TWR | F08 | MEP |
| CNF08MP25 |  | Fire Fighting Pipes (Mains/Branches) |  | 10d | 2016-12-22 | 2017-01-03 | CNF07MP25, CNF08FN21 | 17d | 0d | COST [79182 h]; PIPE FITTER [416 h] | 79,182 | MEW | TWR | F08 | MEP |
| CNF08MP18 |  | Drainage Pipes (High L) |  | 10d | 2016-12-24 | 2017-01-04 | CNF08MP17 FS+1d, CNF07MP18 | 16d | 0d | COST [121568 h]; PLUMBER [640 h] | 121,568.3 | MEW | TWR | F08 | MEP |
| CNF08MP20 |  | Water Supply Pipes (High L) |  | 10d | 2016-12-24 | 2017-01-04 | CNF08MP18 FF, CNF07MP20 | 16d | 0d | COST [141452 h]; PLUMBER [480 h] | 141,451.6 | MEW | TWR | F08 | MEP |
| CNF08MP26 |  | Acoustic Drainage Pipe Insulation |  | 8d | 2016-12-26 | 2017-01-04 | CNF08MP18 SS+2d, CNF07MP26 | 16d | 2d | COST [3763.1 h]; PLUMBER [256 h] | 3,763.1 | MEW | TWR | F08 | MEP |
| CNF08MP27 |  | Water Heaters Installation&Connection |  | 6d | 2017-01-03 | 2017-01-09 | CNF08MP23, CNF08MP20 SS+2d, ENPRC1002 | 12d | 0d | COST [558.9 h] | 558.9 | MEW | TWR | F08 | MEP |
| CNF08MP28 |  | MEP Clearance To Close Apartments Ceilings | milestone | 0d | 2017-01-09 | 2017-01-09 | CNF08MP23, CNF08MP20, CNF08MP19, CNF08MP25, CNF08MP22, CNF08MP18, CNF08MP24, CNF08MP26, CNF08MP27, CNF08MP15 | 12d | 0d |  |  | MEW | TWR | F08 | MEP |
| CNF08MP30 |  | MEP Clearance To Close Corridors Ceilings | milestone | 0d | 2017-01-15 | 2017-01-15 | CNF08MP28 FF+5d | 29d | 5d |  |  | MEW | TWR | F08 | MEP |
|  | 1.3 | **MEP 3rd Fix** |  |  | 2017-03-22 | 2017-05-13 |  |  |  |  |  |  |  |  |  |
| CNF08MP29 |  | Civil Clearance To Start Final Fix | milestone | 0d | 2017-03-22 | 2017-03-22 | CNF08FN43, CNF08MP30, CNF08MP28 | 79d | 32d |  |  | MEW | TWR | F08 | MEP |
| CNF08MP14 |  | Vertical Sprinkler Drops |  | 4d | 2017-05-01 | 2017-05-04 | CNF07MP14, CNF08MP29 | 51d | 0d | COST [4988.6 h]; PIPE FITTER [80 h] | 4,988.6 | MEW | TWR | F08 | MEP |
| CNF08MP31 |  | Hose Reel&Fire Extinguishers & Sprinklers |  | 4d | 2017-05-04 | 2017-05-08 | CNF07MP31, CNF08MP29 | 48d | 0d | COST [46832.8 h]; PIPE FITTER [80 h] | 46,832.8 | MEW | TWR | F08 | MEP |
| CNF08MP32 |  | Installation of DBS |  | 4d | 2017-05-04 | 2017-05-08 | CNF08MP29, CNF07MP32 | 44d | 0d | COST [9929.4 h]; ELECTRICIAN [64 h] | 9,929.4 | MEW | TWR | F08 | MEP |
| CNF08MP33 |  | Installation of Panels / SmDBS |  | 4d | 2017-05-04 | 2017-05-08 | CNF07MP33, CNF08MP32 FF, ENPRC1016 | 48d | 0d | COST [46476.1 h]; ELECTRICIAN [64 h] | 46,476.1 | MEW | TWR | F08 | MEP |
| CNF08MP34 |  | Installation of Fire Alarm Panel & Voice Alarm System |  | 4d | 2017-05-04 | 2017-05-08 | CNF08MP29, CNF07MP34, EN0PSPR40 FS+14d, ENPRC1016 | 48d | 0d | COST [20087.7 h]; ELECTRICIAN [80 h] | 20,087.7 | MEW | TWR | F08 | MEP |
| CNF08MP35 |  | Installation of Light Fitting & E.M Light |  | 4d | 2017-05-04 | 2017-05-08 | CNF08FN43, CNF08MP29, CNF07MP35, ENPRC1014 | 48d | 0d | COST [84000 h]; ELECTRICIAN [80 h] | 84,000 | LFX | TWR | F08 | MEP |
| CNF08MP36 |  | Installation of Wiring Accessories |  | 4d | 2017-05-04 | 2017-05-08 | CNF08MP35 FF, CNF07MP36 | 48d | 0d | COST [15564.6 h]; ELECTRICIAN [96 h] | 15,564.6 | MEW | TWR | F08 | MEP |
| CNF08MP37 |  | Installation of Grills&Diffusers |  | 4d | 2017-05-04 | 2017-05-08 | CNF08MP29, CNF07MP37 | 44d | 0d | COST [3325.4 h]; DUCTMAN [112 h] | 3,325.4 | MEW | TWR | F08 | MEP |
| CNF08MP38 |  | Installation of Telephone System |  | 4d | 2017-05-09 | 2017-05-13 | CNF08MP32, CNF07MP38 | 44d | 0d | COST [32690.3 h]; ELECTRICIAN [64 h] | 32,690.3 | MEW | TWR | F08 | MEP |
| CNF08MP39 |  | Installation of CCTV System |  | 4d | 2017-05-09 | 2017-05-13 | CNF08MP32, CNF07MP39, EN0PSPR44 FS+14d | 44d | 0d | COST [8707.3 h]; ELECTRICIAN [64 h] | 8,707.3 | MEW | TWR | F08 | MEP |
| CNF08MP40 |  | Thermostat Fixing |  | 4d | 2017-05-09 | 2017-05-13 | CNF08MP37, CNF07MP40 | 44d | 0d | COST [1381 h]; ELECTRICIAN [64 h] | 1,381 | MEW | TWR | F08 | MEP |
| CNF08MP41 |  | MEP Final Fix Clearance | milestone | 0d | 2017-05-13 | 2017-05-13 | CNF08MP39, CNF08MP36, CNF08MP37, CNF08MP40, CNF08MP38, CNF08MP35, CNF08MP31, CNF08MP34, CNF08MP33, CNF08MP32, CNF08MP14, CNF08FN44, CNF08FN91, CNF07MP41 | 80d | 4d |  |  | MEW | TWR | F08 | MEP |

| ID | WBS | Activity | Type | Duration | Start | Finish | Predecessors | Total float | Free float | Resources | Cost | TYPE OF WORK L4 | ZONE L1 | FLOOR L2 | CATEGORY OF WORK L3 |
| --- | --- | --- | --- | --- | --- | --- | --- | --- | --- | --- | --- | --- | --- | --- | --- |
|  | 9 | **9th Floor** |  |  | 2016-09-26 | 2017-10-01 |  |  |  |  |  |  |  |  |  |
|  | 1.5.1.1.2.3.21 | **Concrete** |  |  | 2016-09-26 | 2016-10-13 |  |  |  |  |  |  |  |  |  |
| CNF09CW10 |  | Slab Form Work |  | 5d | 2016-09-26 | 2016-10-01 | CNF08CW50 FF+1d, CNF08CW50 SS+1d | 0d |  | COST [130248 h]; Shutter Carpenter [1360 h]; Helper [680 h]; Form Work [2504 M2] | 130,247.5 | STR | TWR | F09 | CON |
| CNF09CW15 |  | Slab Rebar & Post Tension Tendons |  | 5d | 2016-09-28 | 2016-10-04 | ENCMSRA10, CNF09CW10 SS+1d, CNF09CW10 FF+2d | 0d |  | COST [307860 h]; Steel Fixer [1160 h]; Helper [600 h]; Steel Rebars [41200 Kg] | 307,860 | RFT | TWR | F09 | CON |
| CNF09CW90 |  | TECOM Steel Inspection prior to concrete pouring | milestone | 0d | 2016-10-04 | 2016-10-04 | CNF09CW15 FF, CNF09CW91 | 0d |  |  |  |  | TWR | F09 | CON |
| CNF09CW20 |  | Slab Casting |  | 2d | 2016-10-05 | 2016-10-06 | CNF08CW45, ENCMSRA50, CNF09CW90, CNF09CW15 | 0d |  | COST [280875 h] | 280,875.1 | RFC | TWR | F09 | CON |
| CNF09CW30 |  | Columns and Walls Rebar |  | 5d | 2016-10-06 | 2016-10-11 | CNF09CW20 SS+1d | 0d |  | COST [125710 h]; Steel Fixer [1080 h]; Helper [560 h]; Steel Rebars [53200 Kg] | 125,709.5 | RFT | TWR | F09 | CON |
| CNF09CW45 |  | PT Tensioning and Grouting |  | 5d | 2016-10-08 | 2016-10-12 | CNF09CW20 | 6d |  | COST |  |  | TWR | F09 | CON |
| CNF09CW35 |  | Columns and Walls Form Work |  | 4d | 2016-10-09 | 2016-10-12 | CNF09CW30 SS+1d, CNF09CW30 FF+1d | 0d |  | COST [64600 h]; Shutter Carpenter [608 h]; Helper [320 h]; Form Work [2504 M2] | 64,600 | STR | TWR | F09 | CON |
| CNF09CW50 |  | Columns Casting |  | 3d | 2016-10-11 | 2016-10-13 | CNF09CW35 SS+1d, CNF09CW35 FF+1d | 0d |  | COST [86421 h] | 86,421 | RFC | TWR | F09 | CON |
|  | 1 | **Finishes** |  |  | 2016-11-29 | 2017-10-01 |  |  |  |  |  |  |  |  |  |
|  | 1.5.2.2.1.1.1 | **General** |  |  | 2016-11-29 | 2017-09-03 |  |  |  |  |  |  |  |  |  |
| CNF09FN10 |  | Block Works |  | 15d | 2016-11-29 | 2016-12-19 | CNF12CW10, ENCMSPR51, CNF08FN10 | 1d | 0d | COST [389617 h]; Helper [1320 h]; Mason [2520 h]; Block [3733 M2] | 389,616.79 | B4-MAS | TWR | F09 | FNS |
| CNF09FN20 |  | Doors Sub Frames |  | 9d | 2016-12-12 | 2016-12-21 | CNF09FN10 SS+8d | 22d | 7d | COST [7164 h]; Sub-Frames [108 No] | 7,164 | B6-WDR | TWR | F09 | FNS |
| CNF09FN21 |  | Internal Walls Plaster Works |  | 12d | 2016-12-20 | 2017-01-03 | CNF09FN20 SS, CNF08FN21, CNF09MP16 | 15d | 0d | COST [121269 h]; Helper [672 h]; Mason [1344 h]; Plastering [3294 M2] | 121,268.81 | PLS | TWR | F09 | FNS |
| CNF09FN28 |  | Balconies Ceiling Plaster |  | 6d | 2017-01-04 | 2017-01-10 | CNF08FN28, CNF09FN21 | 28d | 0d | COST [33575.2 h]; Plastering [375 M2] | 33,575.25 | BCP | TWR | F09 | FNS |
| CNF09FN35 |  | Emulsion Paint for Balconies Ceiling |  | 3d | 2017-01-11 | 2017-01-14 | CNF08FN35, ENCMSPR57, CNF09FN28 | 28d | 0d | COST [5924 h]; Painter [96 h]; Paint [375 M2] | 5,924 | BLP | TWR | F09 | FNS |
| CNF09FN42 |  | Balconies Glazing & Aluminium Handrail |  | 15d | 2017-01-26 | 2017-02-12 | CNF08FN42, CNF09FN41 SS+2d, CNF09FN13, EN0PSRA14, EN0PSPR16 SS+75d | 24d | 0d | COST [210000 h]; Helper [120 h]; Aluminium Labor [120 h] | 210,000 | ALM | TWR | F09 | FNS |
| CNF09FN99 |  | Internal Signage |  | 3d | 2017-07-22 | 2017-07-24 | CNF09FN39, CNF08FN99 | 8d | 0d | COST [9303 h]; Signage Labor [96 h] | 9,303 | SGN | TWR | F09 | FNS |
| CNF09FN51 |  | Paint Final Coat |  | 3d | 2017-08-28 | 2017-09-03 | CNF09FN44, CNF09FN47, CNF09FN42, CNF09FN48, CNF09FN45, CNF09FN46, CNF08FN51 | 17d | 0d | COST [3000 h]; Painter [456 h]; Paint [3294 M2] | 3,000 | PFC | TWR | F09 | FNS |
|  | 1.5.2.2.1.1.2 | **Apartments** |  |  | 2017-01-04 | 2017-06-04 |  |  |  |  |  |  |  |  |  |
|  | 1.5.2.2.1.1.2.1 | **Dry Area** |  |  | 2017-01-04 | 2017-04-24 |  |  |  |  |  |  |  |  |  |
| CNF09FN29 |  | Wall Paint Primer & Stucco |  | 15d | 2017-01-04 | 2017-01-21 | ENCMSPR53, CNF09FN21 | 15d | 6d | COST [43043.6 h]; Painter [1080 h]; Paint [3294 M2] | 43,043.56 | PNT | TWR | F09 | FNS |
| CNF09FN41 |  | Aluminium Doors |  | 12d | 2017-01-04 | 2017-01-17 | CNF08FN41, CNF09FN21, EN0PSRA11, EN0PSPR13 SS+90d | 30d | 3d | Aluminium Labor [96 h]; Helper [192 h]; COST [470000 h] | 470,000 | ALM | TWR | F09 | FNS |
| CNF09FN38 |  | Gypsum Board for Ceiling |  | 12d | 2017-01-29 | 2017-02-11 | CNF09MP28, ENCMSPR54 FS+14d, CNF08FN38, CNF09FN29 | 9d | 0d | COST [156953 h]; False Ceiling Fixer [1056 h]; Gypsum Board [1300 M2] | 156,952.61 | GYP | TWR | F09 | FNS |
| CNF09FN31 |  | Paint for Ceiling |  | 12d | 2017-02-12 | 2017-02-25 | CNF08FN31, CNF09FN38 | 17d | 0d | COST [29459 h]; Painter [288 h]; Paint [1300 M2] | 29,459 | CPN | TWR | F09 | FNS |
| CNF09FN40 |  | Ceramic for Floors |  | 13d | 2017-02-16 | 2017-03-02 | CNF09FN41, CNF09FN38, CNF08FN40, EN0PCPR14 SS+60d | 5d | 0d | COST [135350 h]; Helper [208 h]; Mason [312 h]; Apartment Tiles [1300 M2] | 135,350.21 | TAP | TWR | F09 | FNS |
| CNF09FN90 |  | Door Frames |  | 7d | 2017-03-04 | 2017-03-11 | CNF08FN90, CNF09FN13, CNF09FN40 | 19d | 6d | Helper [112 h]; COST [107500 h]; Doors Carpenter [112 h] | 107,500 | DRI | TWR | F09 | FNS |
| CNF09FN43 |  | Door Shutters |  | 10d | 2017-03-23 | 2017-04-03 | CNF09FN90, CNF09FN40, CNF09FN13, CNF09FN41, CNF08FN43, EN0PSPR18 SS+75d | 9d | 0d | Helper [160 h]; COST [200000 h]; Doors Carpenter [160 h] | 200,000 | APD | TWR | F09 | FNS |
| CNF09FN44 |  | Door Ironmongeries |  | 10d | 2017-03-26 | 2017-04-05 | CNF08FN44, EN0PSPR202 SS+30d, CNF09FN43 SS | 29d | 0d | Finishings Carpenter [80 h]; Helper [80 h]; COST [28500 h] | 28,500 | DRI | TWR | F09 | FNS |
| CNF09FN91 |  | Thresholds |  | 10d | 2017-03-26 | 2017-04-05 | CNF08FN91, CNF09FN43 SS, EN0PCPR12 SS+75d | 29d | 0d | Finishings Carpenter [160 h]; Helper [160 h]; COST [24887.2 h] | 24,887.25 | THR | TWR | F09 | FNS |
| CNF09FN45 |  | Wooden Wardrobes |  | 11d | 2017-04-11 | 2017-04-24 | CNF08FN45, CNF09FN43, CNF09FN40, EN0PSPR38 SS+90d | 8d | 0d | Wooden Wardrobes Carpenter [88 h]; Helper [88 h]; COST [87100 h] | 87,100 | WRD | TWR | F09 | FNS |

| ID | WBS | Activity | Duration | Start | Finish | Predecessors | Total float | Free float | Resources | Cost | TYPE OF WORK L4 | ZONE L1 | FLOOR L2 | CATEGORY OF WORK L3 |
| --- | --- | --- | --- | --- | --- | --- | --- | --- | --- | --- | --- | --- | --- | --- |
|  | 1.5.2.2.1.1.2.2 | **Wet Area** |  | 2017-01-04 | 2017-06-04 |  |  |  |  |  |  |  |  |  |
| CNF09FN12 |  | Ceramic for Walls | 12d | 2017-01-04 | 2017-01-17 | CNF08FN12, CNF09FN21, EN0PCRA17, EN0PCPR15 SS+90d, EN0PCPR90 SS+60d | 37d | 0d | COST [164439 h]; Helper [384 h]; Mason [768 h]; Wet Area Tiles [1700 M2] | 164,438.55 | WLW | TWR | F09 | FNS |
| CNF09FN13 |  | Ceramic For Floors in Balconies | 6d | 2017-01-15 | 2017-01-21 | CNF09FN35, EN0PCPR13 SS+60d | 28d | 4d | COST [35088.2 h]; Helper [48 h]; Mason [96 h]; Balconies Floor Tiles [375 M2] | 35,088.15 | FLB | TWR | F09 | FNS |
| CNF09FN23 |  | False Ceiling | 15d | 2017-01-18 | 2017-02-04 | CNF09MP28, ENCMSPR55, CNF09FN12 | 37d | 9d | COST [46376.4 h]; False Ceiling Fixer [600 h]; False Ceiling [695 M2] | 46,376.44 | CWT | TWR | F09 | FNS |
| CNF09FN33 |  | Bathtubs | 5d | 2017-01-18 | 2017-01-23 | CNF09FN12, EN0PSPR204 SS+30d, CNF08FN33 | 51d | 10d | COST [35625 h] | 35,625 | bth | TWR | F09 | FNS |
| CNF09FN25 |  | Water Proofing | 12d | 2017-02-15 | 2017-02-28 | CNF09FN33 SS+1d, ENCMSPR56, CNF09FN23, CNF08FN25 | 28d | 0d | COST [102613 h]; Water Proofing [553 M2] | 102,613 | WPR | TWR | F09 | FNS |
| CNF09FN34 |  | Ceramic for Floor | 12d | 2017-03-01 | 2017-03-14 | CNF09FN33, CNF09FN25, CNF08FN34, CNSUB1070, EN0PCPR15 SS+90d, EN0PCPR90 SS+90d | 28d | 0d | COST [27945.1 h]; Helper [96 h]; Mason [96 h]; Wet Area Tiles [178 M2] | 27,945.08 | FLW | TWR | F09 | FNS |
| CNF09FN48 |  | Vanity Counter | 9d | 2017-04-04 | 2017-04-13 | CNF09FN13, CNF09FN43, CNF08FN48, EN0PSPR52 SS+45d | 26d | 1d | COST [86000 h]; Helper [216 h]; Vanity Counters Labor [216 h] | 86,000 | VNC | TWR | F09 | FNS |
| CNF09FN47 |  | Kitchen Cabinet | 11d | 2017-04-11 | 2017-04-24 | CNF09FN13, CNF09FN43, CNF08FN47, EN0PSRA36, EN0PSPR37 SS+90d | 4d | 0d | COST [93417 h]; Helper [88 h]; Kitchen Cabinet Carpenter [88 h] | 93,417 | KCB | TWR | F09 | FNS |
| CNF09FN46 |  | Sanitary Ware&Accessories | 6d | 2017-05-08 | 2017-05-14 | CNF09FN48 SS, CNF09FN43, CNF09FN13, CNF09FN33, CNF08FN46, ENPRC1005 | 16d | 0d | COST [100588 h] | 100,588.24 | SWR | TWR | F09 | FNS |
| CNF09FN49 |  | Glass Enclosure | 7d | 2017-05-21 | 2017-05-28 | CNF08FN49, CNF09FN46, EN0PSPR15 SS+75d | 11d | 0d | COST [50000 h]; Helper [56 h]; Glass Enclosure Labor [56 h] | 50,000 | ALM | TWR | F09 | FNS |
| CNF09FN50 |  | Mirrors & Toilet Accessories | 6d | 2017-05-29 | 2017-06-04 | CNF08FN50, CNF09FN46, CNF09FN49, EN0PSPR23 SS+45d | 20d | 1d | COST [86000 h]; Helper [96 h]; Mirrors Labor [48 h] | 86,000 | MRA | TWR | F09 | FNS |
|  | 1.5.2.2.1.1.3 | **Lift Lobby & Corridor** |  | 2017-02-05 | 2017-10-01 |  |  |  |  |  |  |  |  |  |
| CNF09FN11 |  | Ceiling Finishes | 12d | 2017-02-05 | 2017-02-18 | CNF08FN11, EN0PSPR200 SS+60d, CNF09MP30, EN0PSNM11 FS+14d | 24d | 0d | COST [46000 h]; False Ceiling Fixer [192 h] | 46,000 | IDC | TWR | F09 | FNS |
| CNF09FN30 |  | Wall Finishes | 12d | 2017-02-22 | 2017-03-07 | CNF08FN30, EN0PSPR201 SS+60d, CNF09FN21, CNF09FN11, EN0PSNM11 FS+14d | 21d | 0d | COST [59722 h]; Helper [192 h]; Mason [288 h] | 59,722 | IDW | TWR | F09 | FNS |
| CNF09FN39 |  | Floor Finishes | 10d | 2017-03-08 | 2017-03-19 | CNF08FN39, CNF09FN11, CNF09FN30, EN0PSPR30 SS+60d, EN0PSNM11 FS+14d | 36d | 2d | COST [52113 h]; Helper [80 h]; Mason [80 h] | 52,113 | IDF | TWR | F09 | FNS |
| CNF09FN93 |  | Carpet Laying | 3d | 2017-09-28 | 2017-10-01 | CNF08FN93, CNF09FN39, ATDCD1030 | 4d | 0d | COST [9109 h] | 9,109 | IDR | TWR | F09 | FNS |
|  | 1.5.2.2.1.1.4 | **Common Areas/Service Rooms** |  | 2017-05-10 | 2017-06-26 |  |  |  |  |  |  |  |  |  |
|  | 1 | **Service Rooms** |  | 2017-05-10 | 2017-06-07 |  |  |  |  |  |  |  |  |  |
| CNF09FN17 |  | Epoxy Primer Paint for Ceiling | 6d | 2017-05-10 | 2017-05-16 | CNF09FN31, ENCMSPR52, CNF08FN17 | 5d | 0d | COST [3833.81 h]; Painter [48 h] | 3,833.81 | EPC | TWR | F09 | FNS |
| CNF09FN18 |  | Acrylic Emulsion Primer Paint & Stucco for Wall | 6d | 2017-05-17 | 2017-05-23 | CNF09FN17 | 15d | 0d | COST [3248.62 h]; Painter [48 h] | 3,248.62 | SRW | TWR | F09 | FNS |
| CNF09FN24 |  | Epoxy Primer Paint for Floor | 6d | 2017-05-24 | 2017-05-30 | ENCMSPR52, CNF09FN18 | 15d | 3d | COST [2379.32 h]; Painter [48 h] | 2,379.32 | EPF | TWR | F09 | FNS |
| CNF09FN26 |  | Timber Doors | 4d | 2017-06-04 | 2017-06-07 | CNF09FN24, CNF09FN39, CNF08FN26 | 31d | 0d | COST [58000 h]; Doors Carpenter [32 h]; Helper [32 h] | 58,000 | SRD | TWR | F09 | FNS |
|  | 2 | **Stairs** |  | 2017-06-04 | 2017-06-26 |  |  |  |  |  |  |  |  |  |
| CNF09FN27 |  | Epoxy Primer Paint for Ceiling | 4d | 2017-06-04 | 2017-06-07 | ENCMSPR52, CNF09FN24, CNF08FN27 | 12d | 0d | COST [599 h]; Painter [32 h] | 599 | EPC | TWR | F09 | FNS |
| CNF09FN32 |  | Acrylic Emulsion Primer Paint & Stucco for Walls | 4d | 2017-06-08 | 2017-06-12 | CNF09FN27, CNF08FN32 | 12d | 0d | COST [3695.62 h]; Painter [32 h] | 3,695.62 | SRW | TWR | F09 | FNS |
| CNF09FN36 |  | Epoxy Primer Paint for Floor | 4d | 2017-06-13 | 2017-06-17 | ENCMSPR52, CNF09FN32 | 17d | 0d | COST [8129.16 h]; Painter [32 h] | 8,129.16 | EPF | TWR | F09 | FNS |
| CNF09FN80 |  | Stair Handrail | 4d | 2017-06-18 | 2017-06-21 | CNF09FN36 | 17d | 0d | COST [30000 h]; Helper [64 h]; Aluminium Labor [32 h] | 30,000 | B5-MTW | TWR | F09 | FNS |
| CNF09FN37 |  | Steel Doors | 4d | 2017-06-22 | 2017-06-26 | CNF09FN80, CNF09FN36, CNF09FN39, EN0PSPR31 SS+30d, CNF08FN37 | 17d | 0d | Steel Works Labor [32 h]; Helper [64 h]; COST [31730.8 h] | 31,730.81 | STD | TWR | F09 | FNS |

| ID | WBS | Activity | Type | Duration | Start | Finish | Predecessors | Total float | Free float | Resources | Cost | TYPE OF WORK L4 | ZONE L1 | FLOOR L2 | CATEGORY OF WORK L3 |
| --- | --- | --- | --- | --- | --- | --- | --- | --- | --- | --- | --- | --- | --- | --- | --- |
|  | 1.1 | **MEP** |  |  | 2016-09-28 | 2017-05-17 |  |  |  |  |  |  |  |  |  |
|  | 1.1 | **MEP 1st Fix** |  |  | 2016-09-28 | 2016-12-19 |  |  |  |  |  |  |  |  |  |
| CNF09CW91 |  | MEP Conduits for the slab |  | 5d | 2016-09-28 | 2016-10-04 | CNF09CW15 SS, CNF09CW15 FF | 0d |  | COST [214225 h]; ELECTRICIAN [800 h]; PLUMBER [400 h] | 214,225.1 | MEW | TWR | F09 | CON |
| CNF09FN19 |  | Walls Cutting & Chasing |  | 7d | 2016-12-12 | 2016-12-19 | CNF09FN10 SS+8d | 15d | 0d | COST [6151 h] | 6,151 | MEW | TWR | F09 | FNS |
| CNF09MP10 |  | Civil Clearance To Start 1st Fix | milestone | 0d | 2016-12-14 | 2016-12-14 | EN0PSRA67, EN0PSRA02, EN0PSRA70, EN0PSRA73, EN0PSRA41, EN0PSRA44, EN0PSRA49, EN0PSRA54, EN0PSRA58, EN0PSRA62, EN0PSRA76, EN0PSRA80, CNF09FN19 SS+2d | 15d | 0d |  |  | MEW | TWR | F09 | MEP |
| CNF09MP11 |  | Drainage Pipes ( In Walls) |  | 5d | 2016-12-14 | 2016-12-19 | CNF09MP10, CNF08MP11 | 15d | 0d | COST [15528 h]; PLUMBER [320 h] | 15,528 | MEW | TWR | F09 | MEP |
| CNF09MP12 |  | Water Supply Pipes ( In Walls) |  | 5d | 2016-12-14 | 2016-12-19 | CNF09MP10, CNF08MP12 | 15d | 0d | COST [26928.4 h]; PLUMBER [240 h] | 26,928.4 | MEW | TWR | F09 | MEP |
| CNF09MP13 |  | Sleeves,Conduites,Gi Box,DB Box In Wall |  | 5d | 2016-12-14 | 2016-12-19 | CNF09MP10, CNF08MP13 | 15d | 0d | COST [48200.5 h]; ELECTRICIAN [1200 h] | 48,200.5 | MEW | TWR | F09 | MEP |
| CNF09MP16 |  | MEP Clearance To Start Plaster | milestone | 0d | 2016-12-19 | 2016-12-19 | CNF09MP11, CNF09MP12, CNF09MP13 | 15d | 0d |  |  | MEW | TWR | F09 | MEP |
|  | 1.2 | **MEP 2nd Fix** |  |  | 2017-01-03 | 2017-01-22 |  |  |  |  |  |  |  |  |  |
| CNF09MP17 |  | Civil Clearance To Start 2nd Fix | milestone | 0d | 2017-01-03 | 2017-01-03 | CNF09FN21 | 19d | 0d |  |  | MEW | TWR | F09 | MEP |
| CNF09MP15 |  | Cable Tray / Trunking |  | 10d | 2017-01-04 | 2017-01-15 | CNF09MP17, CNF08MP15 | 20d | 1d | COST [153534 h]; ELECTRICIAN [320 h] | 153,534.2 | MEW | TWR | F09 | MEP |
| CNF09MP21 |  | Ducting Work Including Insulation |  | 10d | 2017-01-04 | 2017-01-15 | CNF08MP21, CNF09FN21 | 20d | 0d | COST [186091 h]; DUCTMAN [320 h] | 186,091.2 | MEW | TWR | F09 | MEP |
| CNF09MP22 |  | Installation of FCUs & Fans |  | 10d | 2017-01-04 | 2017-01-15 | CNF09MP21 FF, CNF08MP22, ENPRC1013 | 20d | 1d | COST [132302 h]; AC TECHNICIAN [480 h] | 132,302.1 | MEW | TWR | F09 | MEP |
| CNF09MP23 |  | Chilled Water Pipes (High L) |  | 10d | 2017-01-04 | 2017-01-15 | CNF08MP23, CNF09FN21 | 20d | 1d | COST [109870 h]; AC TECHNICIAN [512 h] | 109,870.1 | MEW | TWR | F09 | MEP |
| CNF09MP24 |  | LPG Piping |  | 10d | 2017-01-04 | 2017-01-15 | CNF08MP24, CNF09FN21, EN0PSPR11 FS+7d | 20d | 1d | COST [67153.8 h]; PIPE FITTER [240 h] | 67,153.8 | MEW | TWR | F09 | MEP |
| CNF09MP25 |  | Fire Fighting Pipes (Mains/Branches) |  | 10d | 2017-01-04 | 2017-01-15 | CNF08MP25, CNF09FN21 | 20d | 1d | COST [79182 h]; PIPE FITTER [320 h] | 79,182 | MEW | TWR | F09 | MEP |
| CNF09MP18 |  | Drainage Pipes (High L) |  | 10d | 2017-01-05 | 2017-01-16 | CNF09MP17 FS+1d, CNF08MP18 | 19d | 0d | COST [121568 h]; PLUMBER [400 h] | 121,568.3 | MEW | TWR | F09 | MEP |
| CNF09MP19 |  | Wires |  | 7d | 2017-01-05 | 2017-01-12 | CNF09MP13, CNF09MP17 FS+1d, CNF08MP19 | 22d | 3d | COST [153534 h]; ELECTRICIAN [1080 h] | 153,534.2 | MEW | TWR | F09 | MEP |
| CNF09MP20 |  | Water Supply Pipes (High L) |  | 10d | 2017-01-05 | 2017-01-16 | CNF09MP18 FF, CNF08MP20 | 19d | 0d | COST [141452 h]; PLUMBER [320 h] | 141,451.6 | MEW | TWR | F09 | MEP |
| CNF09MP26 |  | Acoustic Drainage Pipe Insulation |  | 8d | 2017-01-08 | 2017-01-16 | CNF09MP18 SS+2d, CNF08MP26 | 19d | 0d | COST [3763.1 h]; PLUMBER [256 h] | 3,763.1 | MEW | TWR | F09 | MEP |
| CNF09MP27 |  | Water Heaters Installation&Connection |  | 6d | 2017-01-08 | 2017-01-14 | CNF09MP20 SS+2d, ENPRC1002 | 21d | 2d | COST [558.9 h] | 558.9 | MEW | TWR | F09 | MEP |
| CNF09MP28 |  | MEP Clearance To Close Apartments Ceilings | milestone | 0d | 2017-01-16 | 2017-01-16 | CNF09MP23, CNF09MP20, CNF09MP19, CNF09MP25, CNF09MP22, CNF09MP18, CNF09MP24, CNF09MP26, CNF09MP27, CNF09MP15 | 19d | 0d |  |  | MEW | TWR | F09 | MEP |
| CNF09MP30 |  | MEP Clearance To Close Corridors Ceilings | milestone | 0d | 2017-01-22 | 2017-01-22 | CNF09MP28 FF+5d | 35d | 11d |  |  | MEW | TWR | F09 | MEP |

| ID | WBS | Activity | Type | Duration | Start | Finish | Predecessors | Total float | Free float | Resources | Cost | TYPE OF WORK L4 | ZONE L1 | FLOOR L2 | CATEGORY OF WORK L3 |
| --- | --- | --- | --- | --- | --- | --- | --- | --- | --- | --- | --- | --- | --- | --- | --- |
|  | 1.3 | **MEP 3rd Fix** |  |  | 2017-04-03 | 2017-05-17 |  |  |  |  |  |  |  |  |  |
| CNF09MP29 |  | Civil Clearance To Start Final Fix | milestone | 0d | 2017-04-03 | 2017-04-03 | CNF09FN43, CNF09MP30, CNF09MP28 | 73d | 26d |  |  | MEW | TWR | F09 | MEP |
| CNF09MP14 |  | Vertical Sprinkler Drops |  | 4d | 2017-05-06 | 2017-05-09 | CNF08MP14, CNF09MP29 | 51d | 0d | COST [4988.6 h]; PIPE FITTER [80 h] | 4,988.6 | MEW | TWR | F09 | MEP |
| CNF09MP31 |  | Hose Reel&Fire Extinguishers & Sprinklers |  | 4d | 2017-05-09 | 2017-05-13 | CNF08MP31, CNF09MP29 | 48d | 0d | COST [46832.8 h]; PIPE FITTER [80 h] | 46,832.8 | MEW | TWR | F09 | MEP |
| CNF09MP32 |  | Installation of DBS |  | 4d | 2017-05-09 | 2017-05-13 | CNF09MP29, CNF08MP32 | 44d | 0d | COST [9929.4 h]; ELECTRICIAN [64 h] | 9,929.4 | MEW | TWR | F09 | MEP |
| CNF09MP33 |  | Installation of Panels / SmDBS |  | 4d | 2017-05-09 | 2017-05-13 | CNF08MP33, CNF09MP32 FF, ENPRC1016 | 48d | 0d | COST [46476.1 h]; ELECTRICIAN [64 h] | 46,476.1 | MEW | TWR | F09 | MEP |
| CNF09MP34 |  | Installation of Fire Alarm Panel & Voice Alarm System |  | 4d | 2017-05-09 | 2017-05-13 | CNF09MP29, CNF08MP34, EN0PSPR40 FS+14d, ENPRC1016 | 48d | 0d | COST [20087.7 h]; ELECTRICIAN [80 h] | 20,087.7 | MEW | TWR | F09 | MEP |
| CNF09MP35 |  | Installation of Light Fitting & E.M Light |  | 4d | 2017-05-09 | 2017-05-13 | CNF09FN43, CNF09MP29, CNF08MP35, ENPRC1014 | 48d | 0d | COST [84000 h]; ELECTRICIAN [80 h] | 84,000 | LFX | TWR | F09 | MEP |
| CNF09MP36 |  | Installation of Wiring Accessories |  | 4d | 2017-05-09 | 2017-05-13 | CNF09MP35 FF, CNF08MP36 | 48d | 0d | COST [15564.6 h]; ELECTRICIAN [96 h] | 15,564.6 | MEW | TWR | F09 | MEP |
| CNF09MP37 |  | Installation of Grills&Diffusers |  | 4d | 2017-05-09 | 2017-05-13 | CNF09MP29, CNF08MP37 | 44d | 0d | COST [3325.4 h]; DUCTMAN [112 h] | 3,325.4 | MEW | TWR | F09 | MEP |
| CNF09MP38 |  | Installation of Telephone System |  | 4d | 2017-05-14 | 2017-05-17 | CNF09MP32, CNF08MP38 | 44d | 0d | COST [32690.3 h]; ELECTRICIAN [64 h] | 32,690.3 | MEW | TWR | F09 | MEP |
| CNF09MP39 |  | Installation of CCTV System |  | 4d | 2017-05-14 | 2017-05-17 | CNF09MP32, CNF08MP39, EN0PSPR44 FS+14d | 44d | 0d | COST [8707.3 h]; ELECTRICIAN [64 h] | 8,707.3 | MEW | TWR | F09 | MEP |
| CNF09MP40 |  | Thermostat Fixing |  | 4d | 2017-05-14 | 2017-05-17 | CNF09MP37, CNF08MP40 | 44d | 0d | COST [1381 h]; ELECTRICIAN [64 h] | 1,381 | MEW | TWR | F09 | MEP |
| CNF09MP41 |  | MEP Final Fix Clearance | milestone | 0d | 2017-05-17 | 2017-05-17 | CNF09MP39, CNF09MP36, CNF09MP37, CNF09MP40, CNF09MP38, CNF09MP35, CNF09MP31, CNF09MP34, CNF09MP33, CNF09MP32, CNF09MP14, CNF09FN44, CNF09FN91, CNF08MP41 | 76d | 4d |  |  | MEW | TWR | F09 | MEP |
|  | 10 | **10th Floor** |  |  | 2016-10-12 | 2017-10-04 |  |  |  |  |  |  |  |  |  |
|  | 1.5.1.1.2.3.21 | **Concrete** |  |  | 2016-10-12 | 2016-10-29 |  |  |  |  |  |  |  |  |  |
| CNF10CW10 |  | Slab Form Work |  | 5d | 2016-10-12 | 2016-10-17 | CNF09CW50 FF+1d, CNF09CW50 SS+1d | 0d |  | COST [130248 h]; Shutter Carpenter [1360 h]; Helper [680 h]; Form Work [2504 M2] | 130,247.5 | STR | TWR | F10 | CON |
| CNF10CW15 |  | Slab Rebar & Post Tension Tendons |  | 5d | 2016-10-15 | 2016-10-19 | ENCMSRA10, CNF10CW10 SS+1d, CNF10CW10 FF+2d | 0d |  | COST [307860 h]; Steel Fixer [1160 h]; Helper [600 h]; Steel Rebars [41200 Kg] | 307,860 | RFT | TWR | F10 | CON |
| CNF10CW90 |  | TECOM Steel Inspection prior to concrete pouring | milestone | 0d | 2016-10-19 | 2016-10-19 | CNF10CW15 FF, CNF10CW91 | 0d |  |  |  |  | TWR | F10 | CON |
| CNF10CW20 |  | Slab Casting |  | 2d | 2016-10-20 | 2016-10-22 | CNF09CW45, ENCMSRA50, CNF10CW90, CNF10CW15 | 0d |  | COST [280875 h] | 280,875.1 | RFC | TWR | F10 | CON |
| CNF10CW30 |  | Columns and Walls Rebar |  | 5d | 2016-10-22 | 2016-10-26 | CNF10CW20 SS+1d | 0d |  | COST [125710 h]; Steel Fixer [1080 h]; Helper [560 h]; Steel Rebars [53200 Kg] | 125,709.5 | RFT | TWR | F10 | CON |
| CNF10CW45 |  | PT Tensioning and Grouting |  | 5d | 2016-10-23 | 2016-10-27 | CNF10CW20 | 6d |  | COST |  |  | TWR | F10 | CON |
| CNF10CW35 |  | Columns and Walls Form Work |  | 4d | 2016-10-24 | 2016-10-27 | CNF10CW30 SS+1d, CNF10CW30 FF+1d | 0d |  | COST [64600 h]; Shutter Carpenter [608 h]; Helper [320 h]; Form Work [2504 M2] | 64,600 | STR | TWR | F10 | CON |
| CNF10CW50 |  | Columns Casting |  | 3d | 2016-10-26 | 2016-10-29 | CNF10CW35 SS+1d, CNF10CW35 FF+1d | 0d |  | COST [86421 h] | 86,421 | RFC | TWR | F10 | CON |

| ID | WBS | Activity | Duration | Start | Finish | Predecessors | Total float | Free float | Resources | Cost | TYPE OF WORK L4 | ZONE L1 | FLOOR L2 | CATEGORY OF WORK L3 |
| --- | --- | --- | --- | --- | --- | --- | --- | --- | --- | --- | --- | --- | --- | --- |
|  | 1 | **Finishes** |  | 2016-12-20 | 2017-10-04 |  |  |  |  |  |  |  |  |  |
|  | 1.5.2.2.1.1.1 | **General** |  | 2016-12-20 | 2017-09-06 |  |  |  |  |  |  |  |  |  |
| CNF10FN10 |  | Block Works | 15d | 2016-12-20 | 2017-01-07 | CNF13CW10, ENCMSPR51, CNF09FN10 | 1d | 0d | COST [389617 h]; Helper [1320 h]; Mason [2520 h]; Block [3733 M2] | 389,616.79 | B4-MAS | TWR | F10 | FNS |
| CNF10FN20 |  | Doors Sub Frames | 9d | 2016-12-29 | 2017-01-09 | CNF10FN10 SS+8d | 20d | 7d | COST [7164 h]; Sub-Frames [108 No] | 7,164 | B6-WDR | TWR | F10 | FNS |
| CNF10FN21 |  | Internal Walls Plaster Works | 12d | 2017-01-08 | 2017-01-21 | CNF10FN20 SS, CNF09FN21, CNF10MP16 | 13d | 0d | COST [121269 h]; Helper [672 h]; Mason [1344 h]; Plastering [3294 M2] | 121,268.81 | PLS | TWR | F10 | FNS |
| CNF10FN28 |  | Balconies Ceiling Plaster | 6d | 2017-01-22 | 2017-01-28 | CNF09FN28, CNF10FN21 | 28d | 0d | COST [33575.2 h]; Plastering [375 M2] | 33,575.25 | BCP | TWR | F10 | FNS |
| CNF10FN35 |  | Emulsion Paint for Balconies Ceiling | 3d | 2017-01-29 | 2017-01-31 | CNF09FN35, ENCMSPR57, CNF10FN28 | 28d | 0d | COST [5924 h]; Painter [96 h]; Paint [375 M2] | 5,924 | BLP | TWR | F10 | FNS |
| CNF10FN42 |  | Balconies Glazing & Aluminium Handrail | 15d | 2017-02-13 | 2017-03-01 | CNF09FN42, CNF10FN41 SS+2d, CNF10FN35, CNF10FN13, EN0PSRA14, EN0PSPR16 SS+75d | 24d | 0d | COST [210000 h]; Helper [120 h]; Aluminium Labor [120 h] | 210,000 | ALM | TWR | F10 | FNS |
| CNF10FN99 |  | Internal Signage | 3d | 2017-07-25 | 2017-07-27 | CNF10FN39, CNF09FN99 | 8d | 0d | COST [8647 h]; Signage Labor [96 h] | 8,647 | SGN | TWR | F10 | FNS |
| CNF10FN51 |  | Paint Final Coat | 3d | 2017-09-04 | 2017-09-06 | CNF10FN44, CNF10FN47, CNF10FN42, CNF10FN48, CNF10FN45, CNF10FN46, CNF09FN51 | 17d | 0d | COST [3000 h]; Painter [456 h]; Paint [3294 M2] | 3,000 | PFC | TWR | F10 | FNS |
|  | 1.5.2.2.1.1.2 | **Apartments** |  | 2017-01-22 | 2017-06-12 |  |  |  |  |  |  |  |  |  |
|  | 1.5.2.2.1.1.2.1 | **Dry Area** |  | 2017-01-22 | 2017-05-07 |  |  |  |  |  |  |  |  |  |
| CNF10FN29 |  | Wall Paint Primer & Stucco | 15d | 2017-01-22 | 2017-02-07 | ENCMSPR53, CNF10FN21 | 13d | 3d | COST [43043.6 h]; Painter [1080 h]; Paint [3294 M2] | 43,043.56 | PNT | TWR | F10 | FNS |
| CNF10FN41 |  | Aluminium Doors | 12d | 2017-01-22 | 2017-02-04 | CNF09FN41, CNF10FN21, EN0PSRA11, EN0PSPR13 SS+90d | 28d | 3d | Aluminium Labor [96 h]; Helper [192 h]; COST [470000 h] | 470,000 | ALM | TWR | F10 | FNS |
| CNF10FN38 |  | Gypsum Board for Ceiling | 12d | 2017-02-12 | 2017-02-25 | CNF10MP28, ENCMSPR54 FS+14d, CNF09FN38, CNF10FN29 | 10d | 0d | COST [156953 h]; False Ceiling Fixer [1056 h]; Gypsum Board [1300 M2] | 156,952.61 | GYP | TWR | F10 | FNS |
| CNF10FN31 |  | Paint for Ceiling | 12d | 2017-02-26 | 2017-03-11 | CNF09FN31, CNF10FN38 | 17d | 0d | COST [29459 h]; Painter [288 h]; Paint [1300 M2] | 29,459 | CPN | TWR | F10 | FNS |
| CNF10FN40 |  | Ceramic for Floors | 13d | 2017-03-04 | 2017-03-18 | CNF10FN41, CNF10FN38, CNF09FN40, EN0PCPR14 SS+90d | 5d | 0d | COST [135350 h]; Helper [208 h]; Mason [312 h]; Apartment Tiles [1300 M2] | 135,350.21 | TAP | TWR | F10 | FNS |
| CNF10FN90 |  | Door Frames | 7d | 2017-03-19 | 2017-03-26 | CNF09FN90, CNF10FN13, CNF10FN40 | 16d | 6d | Helper [112 h]; COST [107500 h]; Doors Carpenter [112 h] | 107,500 | DRI | TWR | F10 | FNS |
| CNF10FN43 |  | Door Shutters | 10d | 2017-04-04 | 2017-04-15 | CNF10FN90, CNF10FN40, CNF10FN13, CNF10FN41, CNF09FN43, EN0PSPR18 SS+105d | 9d | 0d | Helper [160 h]; COST [200000 h]; Doors Carpenter [160 h] | 200,000 | APD | TWR | F10 | FNS |
| CNF10FN44 |  | Door Ironmongeries | 10d | 2017-04-06 | 2017-04-17 | CNF09FN44, EN0PSPR202 SS+30d, CNF10FN43 SS | 29d | 0d | Finishings Carpenter [80 h]; Helper [80 h]; COST [28500 h] | 28,500 | DRI | TWR | F10 | FNS |
| CNF10FN91 |  | Thresholds | 10d | 2017-04-06 | 2017-04-17 | CNF09FN91, CNF10FN43 SS, EN0PCPR12 SS+75d | 29d | 0d | Finishings Carpenter [160 h]; Helper [160 h]; COST [24887.2 h] | 24,887.25 | THR | TWR | F10 | FNS |
| CNF10FN45 |  | Wooden Wardrobes | 11d | 2017-04-25 | 2017-05-07 | CNF09FN45, CNF10FN43, CNF10FN40, EN0PSPR38 SS+90d | 8d | 0d | Wooden Wardrobes Carpenter [88 h]; Helper [88 h]; COST [87100 h] | 87,100 | WRD | TWR | F10 | FNS |
|  | 1.5.2.2.1.1.2.2 | **Wet Area** |  | 2017-01-22 | 2017-06-12 |  |  |  |  |  |  |  |  |  |
| CNF10FN12 |  | Ceramic for Walls | 12d | 2017-01-22 | 2017-02-04 | CNF09FN12, CNF10FN21, EN0PCRA17, EN0PCPR15 SS+90d, EN0PCPR90 SS+60d | 34d | 0d | COST [164439 h]; Helper [384 h]; Mason [768 h]; Wet Area Tiles [1700 M2] | 164,438.55 | WLW | TWR | F10 | FNS |
| CNF10FN13 |  | Ceramic For Floors in Balconies | 6d | 2017-02-01 | 2017-02-07 | CNF10FN35, EN0PCPR13 SS+90d | 28d | 4d | COST [35088.2 h]; Helper [48 h]; Mason [96 h]; Balconies Floor Tiles [375 M2] | 35,088.15 | FLB | TWR | F10 | FNS |
| CNF10FN23 |  | False Ceiling | 15d | 2017-02-05 | 2017-02-21 | CNF10MP28, ENCMSPR55, CNF10FN12 | 34d | 6d | COST [46376.4 h]; False Ceiling Fixer [600 h]; False Ceiling [695 M2] | 46,376.44 | CWT | TWR | F10 | FNS |
| CNF10FN33 |  | Bathtubs | 5d | 2017-02-05 | 2017-02-09 | CNF10FN12, EN0PSPR204 SS+30d, CNF09FN33 | 48d | 10d | COST [35625 h] | 35,625 | bth | TWR | F10 | FNS |
| CNF10FN25 |  | Water Proofing | 12d | 2017-03-01 | 2017-03-14 | CNF10FN33 SS+1d, ENCMSPR56, CNF10FN23, CNF09FN25 | 28d | 0d | COST [102613 h]; Water Proofing [553 M2] | 102,613 | WPR | TWR | F10 | FNS |
| CNF10FN34 |  | Ceramic for Floor | 12d | 2017-03-15 | 2017-03-28 | CNF10FN33, CNF10FN25, CNF09FN34, CNSUB1070, EN0PCPR15 SS+90d, EN0PCPR90 SS+90d | 28d | 0d | COST [27945.1 h]; Helper [96 h]; Mason [96 h]; Wet Area Tiles [178 M2] | 27,945.08 | FLW | TWR | F10 | FNS |
| CNF10FN48 |  | Vanity Counter | 9d | 2017-04-16 | 2017-04-26 | CNF10FN13, CNF10FN43, CNF09FN48, EN0PSPR52 SS+60d | 25d | 1d | COST [86000 h]; Helper [216 h]; Vanity Counters Labor [216 h] | 86,000 | VNC | TWR | F10 | FNS |
| CNF10FN47 |  | Kitchen Cabinet | 11d | 2017-04-25 | 2017-05-07 | CNF10FN13, CNF10FN43, CNF09FN47, EN0PSRA36, EN0PSPR37 SS+90d | 4d | 0d | COST [93417 h]; Helper [88 h]; Kitchen Cabinet Carpenter [88 h] | 93,417 | KCB | TWR | F10 | FNS |
| CNF10FN46 |  | Sanitary Ware&Accessories | 6d | 2017-05-15 | 2017-05-21 | CNF10FN48 SS, CNF10FN43, CNF10FN13, CNF10FN33, CNF09FN46, ENPRC1005 | 17d | 0d | COST [100588 h] | 100,588.24 | SWR | TWR | F10 | FNS |
| CNF10FN49 |  | Glass Enclosure | 7d | 2017-05-29 | 2017-06-05 | CNF09FN49, CNF10FN46, EN0PSPR15 SS+75d | 11d | 0d | COST [50000 h]; Helper [56 h]; Glass Enclosure Labor [56 h] | 50,000 | ALM | TWR | F10 | FNS |
| CNF10FN50 |  | Mirrors & Toilet Accessories | 6d | 2017-06-06 | 2017-06-12 | CNF09FN50, CNF10FN46, CNF10FN49, EN0PSPR23 SS+45d | 19d | 1d | COST [86000 h]; Helper [96 h]; Mirrors Labor [48 h] | 86,000 | MRA | TWR | F10 | FNS |

| ID | WBS | Activity | Type | Duration | Start | Finish | Predecessors | Total float | Free float | Resources | Cost | TYPE OF WORK L4 | ZONE L1 | FLOOR L2 | CATEGORY OF WORK L3 |
| --- | --- | --- | --- | --- | --- | --- | --- | --- | --- | --- | --- | --- | --- | --- | --- |
|  | 1.5.2.2.1.1.3 | **Lift Lobby & Corridor** |  |  | 2017-02-19 | 2017-10-04 |  |  |  |  |  |  |  |  |  |
| CNF10FN11 |  | Ceiling Finishes |  | 12d | 2017-02-19 | 2017-03-04 | CNF09FN11, EN0PSPR200 SS+60d, CNF10MP30, EN0PSNM11 FS+14d | 24d | 0d | COST [46000 h]; False Ceiling Fixer [192 h] | 46,000 | IDC | TWR | F10 | FNS |
| CNF10FN30 |  | Wall Finishes |  | 12d | 2017-03-08 | 2017-03-21 | CNF09FN30, EN0PSPR201 SS+60d, CNF10FN21, CNF10FN11, EN0PSNM11 FS+14d | 21d | 0d | COST [59722 h]; Helper [192 h]; Mason [288 h] | 59,722 | IDW | TWR | F10 | FNS |
| CNF10FN39 |  | Floor Finishes |  | 10d | 2017-03-22 | 2017-04-02 | CNF09FN39, CNF10FN11, CNF10FN30, EN0PSPR30 SS+60d, EN0PSNM11 FS+14d | 34d | 2d | COST [52113 h]; Helper [80 h]; Mason [80 h] | 52,113 | IDF | TWR | F10 | FNS |
| CNF10FN93 |  | Carpet Laying |  | 3d | 2017-10-02 | 2017-10-04 | CNF09FN93, CNF10FN39, ATDCD1030 | 4d | 0d | COST [9109 h] | 9,109 | IDR | TWR | F10 | FNS |
|  | 1.5.2.2.1.1.4 | **Common Areas/Service Rooms** |  |  | 2017-05-17 | 2017-07-03 |  |  |  |  |  |  |  |  |  |
|  | 1 | **Service Rooms** |  |  | 2017-05-17 | 2017-06-12 |  |  |  |  |  |  |  |  |  |
| CNF10FN17 |  | Epoxy Primer Paint for Ceiling |  | 6d | 2017-05-17 | 2017-05-23 | CNF10FN31, ENCMSPR52, CNF09FN17 | 5d | 0d | COST [3833.81 h]; Painter [48 h] | 3,833.81 | EPC | TWR | F10 | FNS |
| CNF10FN18 |  | Acrylic Emulsion Primer Paint & Stucco for Wall |  | 6d | 2017-05-24 | 2017-05-30 | CNF10FN17 | 13d | 0d | COST [3248.62 h]; Painter [48 h] | 3,248.62 | SRW | TWR | F10 | FNS |
| CNF10FN24 |  | Epoxy Primer Paint for Floor |  | 6d | 2017-05-31 | 2017-06-06 | ENCMSPR52, CNF10FN18 | 13d | 1d | COST [2379.32 h]; Painter [48 h] | 2,379.32 | EPF | TWR | F10 | FNS |
| CNF10FN26 |  | Timber Doors |  | 4d | 2017-06-08 | 2017-06-12 | CNF10FN24, CNF10FN39, CNF09FN26 | 31d | 1d | COST [58000 h]; Doors Carpenter [32 h]; Helper [32 h] | 58,000 | SRD | TWR | F10 | FNS |
|  | 2 | **Stairs** |  |  | 2017-06-08 | 2017-07-03 |  |  |  |  |  |  |  |  |  |
| CNF10FN27 |  | Epoxy Primer Paint for Ceiling |  | 4d | 2017-06-08 | 2017-06-12 | ENCMSPR52, CNF10FN24, CNF09FN27 | 12d | 0d | COST [599 h]; Painter [32 h] | 599 | EPC | TWR | F10 | FNS |
| CNF10FN32 |  | Acrylic Emulsion Primer Paint & Stucco for Walls |  | 4d | 2017-06-13 | 2017-06-17 | CNF10FN27, CNF09FN32 | 12d | 0d | COST [3695.62 h]; Painter [32 h] | 3,695.62 | SRW | TWR | F10 | FNS |
| CNF10FN36 |  | Epoxy Primer Paint for Floor |  | 4d | 2017-06-18 | 2017-06-21 | ENCMSPR52, CNF10FN32 | 17d | 0d | COST [8129.16 h]; Painter [32 h] | 8,129.16 | EPF | TWR | F10 | FNS |
| CNF10FN80 |  | Stair Handrail |  | 4d | 2017-06-22 | 2017-06-26 | CNF10FN36 | 17d | 0d | COST [30000 h]; Helper [64 h]; Aluminium Labor [32 h] | 30,000 | B5-MTW | TWR | F10 | FNS |
| CNF10FN37 |  | Steel Doors |  | 4d | 2017-06-29 | 2017-07-03 | CNF10FN80, CNF10FN36, CNF10FN39, EN0PSPR31 SS+45d, CNF09FN37 | 17d | 1d | Steel Works Labor [32 h]; Helper [64 h]; COST [31730.8 h] | 31,730.81 | STD | TWR | F10 | FNS |
|  | 1.1 | **MEP** |  |  | 2016-10-15 | 2017-05-22 |  |  |  |  |  |  |  |  |  |
|  | 1.1 | **MEP 1st Fix** |  |  | 2016-10-15 | 2017-01-07 |  |  |  |  |  |  |  |  |  |
| CNF10CW91 |  | MEP Conduits for the slab |  | 5d | 2016-10-15 | 2016-10-19 | CNF10CW15 SS, CNF10CW15 FF | 0d |  | COST [214225 h]; ELECTRICIAN [800 h]; PLUMBER [320 h] | 214,225.1 | MEW | TWR | F10 | CON |
| CNF10FN19 |  | Walls Cutting & Chasing |  | 7d | 2016-12-29 | 2017-01-07 | CNF10FN10 SS+8d | 13d | 0d | COST [6151 h] | 6,151 | MEW | TWR | F10 | FNS |
| CNF10MP10 |  | Civil Clearance To Start 1st Fix | milestone | 0d | 2017-01-02 | 2017-01-02 | EN0PSRA67, EN0PSRA02, EN0PSRA70, EN0PSRA73, EN0PSRA41, EN0PSRA44, EN0PSRA49, EN0PSRA54, EN0PSRA58, EN0PSRA62, EN0PSRA76, EN0PSRA80, CNF10FN19 SS+2d | 13d | 0d |  |  | MEW | TWR | F10 | MEP |
| CNF10MP11 |  | Drainage Pipes ( In Walls) |  | 5d | 2017-01-02 | 2017-01-07 | CNF10MP10, CNF09MP11 | 13d | 0d | COST [15528 h]; PLUMBER [240 h] | 15,528 | MEW | TWR | F10 | MEP |
| CNF10MP12 |  | Water Supply Pipes ( In Walls) |  | 5d | 2017-01-02 | 2017-01-07 | CNF10MP10, CNF09MP12 | 13d | 0d | COST [26928.4 h]; PLUMBER [240 h] | 26,928.4 | MEW | TWR | F10 | MEP |
| CNF10MP13 |  | Sleeves,Conduites,Gi Box,DB Box In Wall |  | 5d | 2017-01-02 | 2017-01-07 | CNF10MP10, CNF09MP13 | 13d | 0d | COST [48200.5 h]; ELECTRICIAN [800 h] | 48,200.5 | MEW | TWR | F10 | MEP |
| CNF10MP16 |  | MEP Clearance To Start Plaster | milestone | 0d | 2017-01-07 | 2017-01-07 | CNF10MP11, CNF10MP12, CNF10MP13 | 13d | 0d |  |  | MEW | TWR | F10 | MEP |

| ID | WBS | Activity | Type | Duration | Start | Finish | Predecessors | Total float | Free float | Resources | Cost | TYPE OF WORK L4 | ZONE L1 | FLOOR L2 | CATEGORY OF WORK L3 |
| --- | --- | --- | --- | --- | --- | --- | --- | --- | --- | --- | --- | --- | --- | --- | --- |
|  | 1.2 | **MEP 2nd Fix** |  |  | 2017-01-21 | 2017-02-08 |  |  |  |  |  |  |  |  |  |
| CNF10MP17 |  | Civil Clearance To Start 2nd Fix | milestone | 0d | 2017-01-21 | 2017-01-21 | CNF10FN21 | 17d | 0d |  |  | MEW | TWR | F10 | MEP |
| CNF10MP15 |  | Cable Tray / Trunking |  | 10d | 2017-01-22 | 2017-02-01 | CNF10MP17, CNF09MP15 | 18d | 1d | COST [153534 h]; ELECTRICIAN [320 h] | 153,534.2 | MEW | TWR | F10 | MEP |
| CNF10MP21 |  | Ducting Work Including Insulation |  | 10d | 2017-01-22 | 2017-02-01 | CNF09MP21, CNF10FN21 | 18d | 0d | COST [186091 h]; DUCTMAN [640 h] | 186,091.2 | MEW | TWR | F10 | MEP |
| CNF10MP22 |  | Installation of FCUs & Fans |  | 10d | 2017-01-22 | 2017-02-01 | CNF10MP21 FF, CNF09MP22, ENPRC1013 | 18d | 1d | COST [132302 h]; AC TECHNICIAN [752 h] | 132,302.1 | MEW | TWR | F10 | MEP |
| CNF10MP23 |  | Chilled Water Pipes (High L) |  | 10d | 2017-01-22 | 2017-02-01 | CNF09MP23, CNF10FN21 | 18d | 1d | COST [109870 h]; AC TECHNICIAN [464 h] | 109,870.1 | MEW | TWR | F10 | MEP |
| CNF10MP24 |  | LPG Piping |  | 10d | 2017-01-22 | 2017-02-01 | CNF09MP24, CNF10FN21, EN0PSPR11 FS+7d | 18d | 1d | COST [67153.8 h]; PIPE FITTER [320 h] | 67,153.8 | MEW | TWR | F10 | MEP |
| CNF10MP25 |  | Fire Fighting Pipes (Mains/Branches) |  | 10d | 2017-01-22 | 2017-02-01 | CNF09MP25, CNF10FN21 | 18d | 1d | COST [79182 h]; PIPE FITTER [640 h] | 79,182 | MEW | TWR | F10 | MEP |
| CNF10MP18 |  | Drainage Pipes (High L) |  | 10d | 2017-01-23 | 2017-02-02 | CNF10MP17 FS+1d, CNF09MP18 | 17d | 0d | COST [121568 h]; PLUMBER [640 h] | 121,568.3 | MEW | TWR | F10 | MEP |
| CNF10MP19 |  | Wires |  | 7d | 2017-01-23 | 2017-01-30 | CNF10MP13, CNF10MP17 FS+1d, CNF09MP19 | 20d | 3d | COST [153534 h]; ELECTRICIAN [1080 h] | 153,534.2 | MEW | TWR | F10 | MEP |
| CNF10MP20 |  | Water Supply Pipes (High L) |  | 10d | 2017-01-23 | 2017-02-02 | CNF10MP18 FF, CNF09MP20 | 17d | 0d | COST [141452 h]; PLUMBER [480 h] | 141,451.6 | MEW | TWR | F10 | MEP |
| CNF10MP26 |  | Acoustic Drainage Pipe Insulation |  | 8d | 2017-01-25 | 2017-02-02 | CNF10MP18 SS+2d, CNF09MP26 | 17d | 0d | COST [3763.1 h]; PLUMBER [256 h] | 3,763.1 | MEW | TWR | F10 | MEP |
| CNF10MP27 |  | Water Heaters Installation&Connection |  | 6d | 2017-01-25 | 2017-01-31 | CNF10MP20 SS+2d, ENPRC1002 | 19d | 2d | COST [558.9 h] | 558.9 | MEW | TWR | F10 | MEP |
| CNF10MP28 |  | MEP Clearance To Close Apartments Ceilings | milestone | 0d | 2017-02-02 | 2017-02-02 | CNF10MP23, CNF10MP20, CNF10MP19, CNF10MP25, CNF10MP22, CNF10MP18, CNF10MP24, CNF10MP26, CNF10MP27, CNF10MP15 | 17d | 0d |  |  | MEW | TWR | F10 | MEP |
| CNF10MP30 |  | MEP Clearance To Close Corridors Ceilings | milestone | 0d | 2017-02-08 | 2017-02-08 | CNF10MP28 FF+5d | 32d | 8d |  |  | MEW | TWR | F10 | MEP |
|  | 1.3 | **MEP 3rd Fix** |  |  | 2017-04-15 | 2017-05-22 |  |  |  |  |  |  |  |  |  |
| CNF10MP29 |  | Civil Clearance To Start Final Fix | milestone | 0d | 2017-04-15 | 2017-04-15 | CNF10FN43, CNF10MP30, CNF10MP28 | 67d | 20d |  |  | MEW | TWR | F10 | MEP |
| CNF10MP14 |  | Vertical Sprinkler Drops |  | 4d | 2017-05-10 | 2017-05-14 | CNF09MP14, CNF10MP29 | 51d | 0d | COST [4988.6 h]; PIPE FITTER [80 h] | 4,988.6 | MEW | TWR | F10 | MEP |
| CNF10MP31 |  | Hose Reel&Fire Extinguishers & Sprinklers |  | 4d | 2017-05-14 | 2017-05-17 | CNF09MP31, CNF10MP29 | 48d | 0d | COST [46832.8 h]; PIPE FITTER [80 h] | 46,832.8 | MEW | TWR | F10 | MEP |
| CNF10MP32 |  | Installation of DBS |  | 4d | 2017-05-14 | 2017-05-17 | CNF10MP29, CNF09MP32 | 44d | 0d | COST [9929.4 h]; ELECTRICIAN [64 h] | 9,929.4 | MEW | TWR | F10 | MEP |
| CNF10MP33 |  | Installation of Panels / SmDBS |  | 4d | 2017-05-14 | 2017-05-17 | CNF09MP33, CNF10MP32 FF, ENPRC1016 | 48d | 0d | COST [46476.1 h]; ELECTRICIAN [64 h] | 46,476.1 | MEW | TWR | F10 | MEP |
| CNF10MP34 |  | Installation of Fire Alarm Panel & Voice Alarm System |  | 4d | 2017-05-14 | 2017-05-17 | CNF10MP29, CNF09MP34, EN0PSPR40 FS+14d, ENPRC1016 | 48d | 0d | COST [20087.7 h]; ELECTRICIAN [80 h] | 20,087.7 | MEW | TWR | F10 | MEP |
| CNF10MP35 |  | Installation of Light Fitting & E.M Light |  | 4d | 2017-05-14 | 2017-05-17 | CNF10MP29, CNF09MP35, ENPRC1014, CNF10FN43 | 48d | 0d | COST [84000 h]; ELECTRICIAN [80 h] | 84,000 | LFX | TWR | F10 | MEP |
| CNF10MP36 |  | Installation of Wiring Accessories |  | 4d | 2017-05-14 | 2017-05-17 | CNF10MP35 FF, CNF09MP36 | 48d | 0d | COST [15564.6 h]; ELECTRICIAN [96 h] | 15,564.6 | MEW | TWR | F10 | MEP |
| CNF10MP37 |  | Installation of Grills&Diffusers |  | 4d | 2017-05-14 | 2017-05-17 | CNF10MP29, CNF09MP37 | 44d | 0d | COST [3325.4 h]; DUCTMAN [112 h] | 3,325.4 | MEW | TWR | F10 | MEP |
| CNF10MP38 |  | Installation of Telephone System |  | 4d | 2017-05-18 | 2017-05-22 | CNF10MP32, CNF09MP38 | 44d | 0d | COST [32690.3 h]; ELECTRICIAN [64 h] | 32,690.3 | MEW | TWR | F10 | MEP |
| CNF10MP39 |  | Installation of CCTV System |  | 4d | 2017-05-18 | 2017-05-22 | CNF10MP32, CNF09MP39, EN0PSPR44 FS+14d | 44d | 0d | COST [8707.3 h]; ELECTRICIAN [64 h] | 8,707.3 | MEW | TWR | F10 | MEP |
| CNF10MP40 |  | Thermostat Fixing |  | 4d | 2017-05-18 | 2017-05-22 | CNF10MP37, CNF09MP40 | 44d | 0d | COST [1381 h]; ELECTRICIAN [64 h] | 1,381 | MEW | TWR | F10 | MEP |
| CNF10MP41 |  | MEP Final Fix Clearance | milestone | 0d | 2017-05-22 | 2017-05-22 | CNF10MP39, CNF10MP36, CNF10MP37, CNF10MP40, CNF10MP38, CNF10MP35, CNF10MP31, CNF10MP34, CNF10MP33, CNF10MP32, CNF10MP14, CNF10FN44, CNF10FN91, CNF09MP41 | 72d | 4d |  |  | MEW | TWR | F10 | MEP |

| ID | WBS | Activity | Type | Duration | Start | Finish | Predecessors | Total float | Free float | Resources | Cost | TYPE OF WORK L4 | ZONE L1 | FLOOR L2 | CATEGORY OF WORK L3 |
| --- | --- | --- | --- | --- | --- | --- | --- | --- | --- | --- | --- | --- | --- | --- | --- |
|  | 11 | **11th Floor** |  |  | 2016-10-27 | 2017-10-08 |  |  |  |  |  |  |  |  |  |
|  | 1.5.1.1.2.3.21 | **Concrete** |  |  | 2016-10-27 | 2016-11-13 |  |  |  |  |  |  |  |  |  |
| CNF11CW10 |  | Slab Form Work |  | 5d | 2016-10-27 | 2016-11-01 | CNF10CW50 FF+1d, CNF10CW50 SS+1d | 0d |  | COST [130248 h]; Shutter Carpenter [1360 h]; Helper [680 h]; Form Work [2504 M2] | 130,247.5 | STR | TWR | F11 | CON |
| CNF11CW15 |  | Slab Rebar & Post Tension Tendons |  | 5d | 2016-10-30 | 2016-11-03 | ENCMSRA10, CNF11CW10 SS+1d, CNF11CW10 FF+2d | 0d |  | COST [307860 h]; Steel Fixer [1160 h]; Helper [600 h]; Steel Rebars [41200 Kg] | 307,860 | RFT | TWR | F11 | CON |
| CNF11CW90 |  | TECOM Steel Inspection prior to concrete pouring | milestone | 0d | 2016-11-03 | 2016-11-03 | CNF11CW15 FF, CNF11CW91 | 0d |  |  |  |  | TWR | F11 | CON |
| CNF11CW20 |  | Slab Casting |  | 2d | 2016-11-05 | 2016-11-06 | CNF10CW45, ENCMSRA50, CNF11CW90, CNF11CW15 | 0d |  | COST [280875 h] | 280,875.1 | RFC | TWR | F11 | CON |
| CNF11CW30 |  | Columns and Walls Rebar |  | 5d | 2016-11-06 | 2016-11-10 | CNF11CW20 SS+1d | 0d |  | COST [125710 h]; Steel Fixer [1080 h]; Helper [560 h]; Steel Rebars [53200 Kg] | 125,709.5 | RFT | TWR | F11 | CON |
| CNF11CW45 |  | PT Tensioning and Grouting |  | 5d | 2016-11-07 | 2016-11-12 | CNF11CW20 | 6d |  | COST |  |  | TWR | F11 | CON |
| CNF11CW35 |  | Columns and Walls Form Work |  | 4d | 2016-11-08 | 2016-11-12 | CNF11CW30 SS+1d, CNF11CW30 FF+1d | 0d |  | COST [64600 h]; Shutter Carpenter [608 h]; Helper [320 h]; Form Work [2504 M2] | 64,600 | STR | TWR | F11 | CON |
| CNF11CW50 |  | Columns Casting |  | 3d | 2016-11-10 | 2016-11-13 | CNF11CW35 SS+1d, CNF11CW35 FF+1d | 0d |  | COST [86421 h] | 86,421 | RFC | TWR | F11 | CON |
|  | 1 | **Finishes** |  |  | 2017-01-08 | 2017-10-08 |  |  |  |  |  |  |  |  |  |
|  | 1.5.2.2.1.1.1 | **General** |  |  | 2017-01-08 | 2017-09-10 |  |  |  |  |  |  |  |  |  |
| CNF11FN10 |  | Block Works |  | 15d | 2017-01-08 | 2017-01-24 | CNF14CW10, ENCMSPR51, CNF10FN10 | 1d | 0d | COST [389617 h]; Helper [1320 h]; Mason [2520 h]; Block [3733 M2] | 389,616.79 | B4-MAS | TWR | F11 | FNS |
| CNF11FN20 |  | Doors Sub Frames |  | 9d | 2017-01-17 | 2017-01-26 | CNF11FN10 SS+8d | 18d | 7d | COST [7164 h]; Sub-Frames [108 No] | 7,164 | B6-WDR | TWR | F11 | FNS |
| CNF11FN21 |  | Internal Walls Plaster Works |  | 12d | 2017-01-25 | 2017-02-07 | CNF11MP16, CNF11FN20 SS, CNF10FN21 | 11d | 0d | COST [121269 h]; Helper [672 h]; Mason [1344 h]; Plastering [3294 M2] | 121,268.81 | PLS | TWR | F11 | FNS |
| CNF11FN28 |  | Balconies Ceiling Plaster |  | 6d | 2017-02-08 | 2017-02-14 | CNF10FN28, CNF11FN21 | 28d | 0d | COST [33575.2 h]; Plastering [375 M2] | 33,575.25 | BCP | TWR | F11 | FNS |
| CNF11FN35 |  | Emulsion Paint for Balconies Ceiling |  | 3d | 2017-02-15 | 2017-02-18 | CNF10FN35, ENCMSPR57, CNF11FN28 | 28d | 0d | COST [5924 h]; Painter [96 h]; Paint [375 M2] | 5,924 | BLP | TWR | F11 | FNS |
| CNF11FN42 |  | Balconies Glazing & Aluminium Handrail |  | 15d | 2017-03-02 | 2017-03-19 | CNF10FN42, CNF11FN41 SS+2d, CNF11FN13, EN0PSRA14, EN0PSPR16 SS+75d | 24d | 0d | COST [210000 h]; Helper [120 h]; Aluminium Labor [120 h] | 210,000 | ALM | TWR | F11 | FNS |
| CNF11FN99 |  | Internal Signage |  | 3d | 2017-07-29 | 2017-07-31 | CNF11FN39, CNF10FN99 | 8d | 0d | COST [9303 h]; Signage Labor [96 h] | 9,303 | SGN | TWR | F11 | FNS |
| CNF11FN51 |  | Paint Final Coat |  | 3d | 2017-09-07 | 2017-09-10 | CNF11FN44, CNF11FN47, CNF11FN42, CNF11FN48, CNF11FN45, CNF11FN46, CNF10FN51 | 17d | 0d | COST [3000 h]; Painter [456 h]; Paint [3294 M2] | 3,000 | PFC | TWR | F11 | FNS |
|  | 1.5.2.2.1.1.2 | **Apartments** |  |  | 2017-02-08 | 2017-06-20 |  |  |  |  |  |  |  |  |  |
|  | 1.5.2.2.1.1.2.1 | **Dry Area** |  |  | 2017-02-08 | 2017-05-20 |  |  |  |  |  |  |  |  |  |
| CNF11FN29 |  | Wall Paint Primer & Stucco |  | 15d | 2017-02-08 | 2017-02-25 | ENCMSPR53, CNF11FN21 | 11d | 0d | COST [43043.6 h]; Painter [1080 h]; Paint [3294 M2] | 43,043.56 | PNT | TWR | F11 | FNS |
| CNF11FN41 |  | Aluminium Doors |  | 12d | 2017-02-08 | 2017-02-21 | CNF10FN41, CNF11FN21, EN0PSRA11, EN0PSPR13 SS+90d | 26d | 3d | Aluminium Labor [96 h]; Helper [192 h]; COST [470000 h] | 470,000 | ALM | TWR | F11 | FNS |
| CNF11FN38 |  | Gypsum Board for Ceiling |  | 12d | 2017-02-26 | 2017-03-11 | CNF11MP28, ENCMSPR54 FS+14d, CNF10FN38, CNF11FN29 | 11d | 0d | COST [156953 h]; False Ceiling Fixer [1056 h]; Gypsum Board [1300 M2] | 156,952.61 | GYP | TWR | F11 | FNS |
| CNF11FN31 |  | Paint for Ceiling |  | 12d | 2017-03-12 | 2017-03-25 | CNF10FN31, CNF11FN38 | 17d | 3d | COST [29459 h]; Painter [288 h]; Paint [1300 M2] | 29,459 | CPN | TWR | F11 | FNS |
| CNF11FN40 |  | Ceramic for Floors |  | 13d | 2017-03-19 | 2017-04-02 | CNF11FN41, CNF11FN38, CNF10FN40, EN0PCPR14 SS+90d | 5d | 0d | COST [135350 h]; Helper [208 h]; Mason [312 h]; Apartment Tiles [1300 M2] | 135,350.21 | TAP | TWR | F11 | FNS |
| CNF11FN90 |  | Door Frames |  | 7d | 2017-04-03 | 2017-04-10 | CNF10FN90, CNF11FN13, CNF11FN40 | 13d | 4d | Helper [112 h]; COST [107500 h]; Doors Carpenter [112 h] | 107,500 | DRI | TWR | F11 | FNS |
| CNF11FN43 |  | Door Shutters |  | 10d | 2017-04-16 | 2017-04-27 | CNF11FN90, CNF11FN40, CNF11FN13, CNF11FN41, CNF10FN43, EN0PSPR18 SS+105d | 9d | 0d | Helper [160 h]; COST [200000 h]; Doors Carpenter [160 h] | 200,000 | APD | TWR | F11 | FNS |
| CNF11FN44 |  | Door Ironmongeries |  | 10d | 2017-04-18 | 2017-04-30 | CNF10FN44, EN0PSPR202 SS+30d, CNF11FN43 SS | 29d | 0d | Finishings Carpenter [80 h]; Helper [80 h]; COST [28500 h] | 28,500 | DRI | TWR | F11 | FNS |
| CNF11FN91 |  | Thresholds |  | 10d | 2017-04-18 | 2017-04-30 | CNF10FN91, CNF11FN43 SS, EN0PCPR12 SS+75d | 29d | 0d | Finishings Carpenter [160 h]; Helper [160 h]; COST [24887.2 h] | 24,887.25 | THR | TWR | F11 | FNS |
| CNF11FN45 |  | Wooden Wardrobes |  | 11d | 2017-05-08 | 2017-05-20 | CNF10FN45, CNF11FN43, CNF11FN40, EN0PSPR38 SS+90d | 8d | 0d | Wooden Wardrobes Carpenter [88 h]; Helper [88 h]; COST [87100 h] | 87,100 | WRD | TWR | F11 | FNS |

| ID | WBS | Activity | Duration | Start | Finish | Predecessors | Total float | Free float | Resources | Cost | TYPE OF WORK L4 | ZONE L1 | FLOOR L2 | CATEGORY OF WORK L3 |
| --- | --- | --- | --- | --- | --- | --- | --- | --- | --- | --- | --- | --- | --- | --- |
|  | 1.5.2.2.1.1.2.2 | **Wet Area** |  | 2017-02-08 | 2017-06-20 |  |  |  |  |  |  |  |  |  |
| CNF11FN12 |  | Ceramic for Walls | 12d | 2017-02-08 | 2017-02-21 | CNF10FN12, CNF11FN21, EN0PCRA17, EN0PCPR15 SS+90d, EN0PCPR90 SS+90d | 31d | 0d | COST [164439 h]; Helper [384 h]; Mason [768 h]; Wet Area Tiles [1700 M2] | 164,438.55 | WLW | TWR | F11 | FNS |
| CNF11FN13 |  | Ceramic For Floors in Balconies | 6d | 2017-02-19 | 2017-02-25 | CNF11FN35, EN0PCPR13 SS+90d | 28d | 4d | COST [35088.2 h]; Helper [96 h]; Mason [384 h]; Balconies Floor Tiles [375 M2] | 35,088.15 | FLB | TWR | F11 | FNS |
| CNF11FN23 |  | False Ceiling | 15d | 2017-02-22 | 2017-03-11 | CNF11MP28, ENCMSPR55, CNF11FN12 | 31d | 3d | COST [46376.4 h]; False Ceiling Fixer [600 h]; False Ceiling [695 M2] | 46,376.44 | CWT | TWR | F11 | FNS |
| CNF11FN33 |  | Bathtubs | 5d | 2017-02-22 | 2017-02-27 | CNF11FN12, EN0PSPR204 SS+30d, CNF10FN33 | 45d | 10d | COST [35625 h] | 35,625 | bth | TWR | F11 | FNS |
| CNF11FN25 |  | Water Proofing | 12d | 2017-03-15 | 2017-03-28 | CNF11FN33 SS+1d, ENCMSPR56, CNF11FN23, CNF10FN25 | 28d | 0d | COST [102613 h]; Water Proofing [553 M2] | 102,613 | WPR | TWR | F11 | FNS |
| CNF11FN34 |  | Ceramic for Floor | 12d | 2017-03-29 | 2017-04-11 | CNF11FN33, CNF11FN25, CNF10FN34, CNSUB1070, EN0PCPR15 SS+90d, EN0PCPR90 SS+90d | 28d | 0d | COST [27945.1 h]; Helper [96 h]; Mason [96 h]; Wet Area Tiles [178 M2] | 27,945.08 | FLW | TWR | F11 | FNS |
| CNF11FN48 |  | Vanity Counter | 9d | 2017-04-29 | 2017-05-08 | CNF11FN13, CNF11FN43, CNF10FN48, EN0PSPR52 SS+60d | 24d | 3d | COST [86000 h]; Helper [216 h]; Vanity Counters Labor [216 h] | 86,000 | VNC | TWR | F11 | FNS |
| CNF11FN47 |  | Kitchen Cabinet | 11d | 2017-05-08 | 2017-05-20 | CNF11FN13, CNF11FN43, CNF10FN47, EN0PSRA36, EN0PSPR37 SS+90d | 4d | 0d | COST [93417 h]; Helper [88 h]; Kitchen Cabinet Carpenter [88 h] | 93,417 | KCB | TWR | F11 | FNS |
| CNF11FN46 |  | Sanitary Ware&Accessories | 6d | 2017-05-22 | 2017-05-28 | CNF11FN48 SS, CNF11FN43, CNF11FN13, CNF11FN33, CNF10FN46, ENPRC1005 | 18d | 0d | COST [100588 h] | 100,588.24 | SWR | TWR | F11 | FNS |
| CNF11FN49 |  | Glass Enclosure | 7d | 2017-06-06 | 2017-06-13 | CNF10FN49, CNF11FN46, EN0PSPR15 SS+75d | 11d | 0d | COST [50000 h]; Helper [56 h]; Glass Enclosure Labor [56 h] | 50,000 | ALM | TWR | F11 | FNS |
| CNF11FN50 |  | Mirrors & Toilet Accessories | 6d | 2017-06-14 | 2017-06-20 | CNF10FN50, CNF11FN46, CNF11FN49, EN0PSPR23 SS+45d | 18d | 1d | COST [86000 h]; Helper [96 h]; Mirrors Labor [48 h] | 86,000 | MRA | TWR | F11 | FNS |
|  | 1.5.2.2.1.1.3 | **Lift Lobby & Corridor** |  | 2017-03-05 | 2017-10-08 |  |  |  |  |  |  |  |  |  |
| CNF11FN11 |  | Ceiling Finishes | 12d | 2017-03-05 | 2017-03-18 | CNF10FN11, EN0PSPR200 SS+60d, CNF11MP30, EN0PSNM11 FS+14d | 24d | 0d | COST [46000 h]; False Ceiling Fixer [192 h] | 46,000 | IDC | TWR | F11 | FNS |
| CNF11FN30 |  | Wall Finishes | 12d | 2017-03-22 | 2017-04-04 | CNF10FN30, EN0PSPR201 SS+60d, CNF11FN21, CNF11FN11, EN0PSNM11 FS+14d | 21d | 0d | COST [59722 h]; Helper [192 h]; Mason [288 h] | 59,722 | IDW | TWR | F11 | FNS |
| CNF11FN39 |  | Floor Finishes | 10d | 2017-04-05 | 2017-04-16 | CNF10FN39, CNF11FN11, CNF11FN30, EN0PSPR30 SS+60d, EN0PSNM11 FS+14d | 32d | 2d | COST [52113 h]; Helper [80 h]; Mason [80 h] | 52,113 | IDF | TWR | F11 | FNS |
| CNF11FN93 |  | Carpet Laying | 3d | 2017-10-05 | 2017-10-08 | CNF10FN93, CNF11FN39, ATDCD1030 | 4d | 0d | COST [9109 h] | 9,109 | IDR | TWR | F11 | FNS |
|  | 1.5.2.2.1.1.4 | **Common Areas/Service Rooms** |  | 2017-05-24 | 2017-07-09 |  |  |  |  |  |  |  |  |  |
|  | 1 | **Service Rooms** |  | 2017-05-24 | 2017-06-18 |  |  |  |  |  |  |  |  |  |
| CNF11FN17 |  | Epoxy Primer Paint for Ceiling | 6d | 2017-05-24 | 2017-05-30 | CNF11FN31, ENCMSPR52, CNF10FN17 | 5d | 0d | COST [3833.81 h]; Painter [48 h] | 3,833.81 | EPC | TWR | F11 | FNS |
| CNF11FN18 |  | Acrylic Emulsion Primer Paint & Stucco for Wall | 6d | 2017-05-31 | 2017-06-06 | CNF11FN17 | 11d | 0d | COST [3248.62 h]; Painter [48 h] | 3,248.62 | SRW | TWR | F11 | FNS |
| CNF11FN24 |  | Epoxy Primer Paint for Floor | 6d | 2017-06-07 | 2017-06-13 | ENCMSPR52, CNF11FN18 | 11d | 0d | COST [2379.32 h]; Painter [48 h] | 2,379.32 | EPF | TWR | F11 | FNS |
| CNF11FN26 |  | Timber Doors | 4d | 2017-06-14 | 2017-06-18 | CNF11FN24, CNF11FN39, CNF10FN26 | 30d | 2d | COST [58000 h]; Doors Carpenter [32 h]; Helper [32 h] | 58,000 | SRD | TWR | F11 | FNS |
|  | 2 | **Stairs** |  | 2017-06-14 | 2017-07-09 |  |  |  |  |  |  |  |  |  |
| CNF11FN27 |  | Epoxy Primer Paint for Ceiling | 4d | 2017-06-14 | 2017-06-18 | ENCMSPR52, CNF11FN24, CNF10FN27 | 11d | 0d | COST [599 h]; Painter [32 h] | 599 | EPC | TWR | F11 | FNS |
| CNF11FN32 |  | Acrylic Emulsion Primer Paint & Stucco for Walls | 4d | 2017-06-19 | 2017-06-22 | CNF11FN27, CNF10FN32 | 11d | 0d | COST [3695.62 h]; Painter [32 h] | 3,695.62 | SRW | TWR | F11 | FNS |
| CNF11FN36 |  | Epoxy Primer Paint for Floor | 4d | 2017-06-24 | 2017-06-29 | ENCMSPR52, CNF11FN32 | 16d | 0d | COST [8129.16 h]; Painter [32 h] | 8,129.16 | EPF | TWR | F11 | FNS |
| CNF11FN80 |  | Stair Handrail | 4d | 2017-07-01 | 2017-07-04 | CNF11FN36 | 16d | 0d | COST [30000 h]; Helper [64 h]; Aluminium Labor [32 h] | 30,000 | B5-MTW | TWR | F11 | FNS |
| CNF11FN37 |  | Steel Doors | 4d | 2017-07-05 | 2017-07-09 | CNF11FN80, CNF11FN36, CNF11FN39, EN0PSPR31 SS+45d, CNF10FN37 | 16d | 2d | Steel Works Labor [32 h]; Helper [64 h]; COST [31730.8 h] | 31,730.81 | STD | TWR | F11 | FNS |

| ID | WBS | Activity | Type | Duration | Start | Finish | Predecessors | Total float | Free float | Resources | Cost | TYPE OF WORK L4 | ZONE L1 | FLOOR L2 | CATEGORY OF WORK L3 |
| --- | --- | --- | --- | --- | --- | --- | --- | --- | --- | --- | --- | --- | --- | --- | --- |
|  | 1.1 | **MEP** |  |  | 2016-10-30 | 2017-05-27 |  |  |  |  |  |  |  |  |  |
|  | 1.1 | **MEP 1st Fix** |  |  | 2016-10-30 | 2017-01-24 |  |  |  |  |  |  |  |  |  |
| CNF11CW91 |  | MEP Conduits for the slab |  | 5d | 2016-10-30 | 2016-11-03 | CNF11CW15 SS, CNF11CW15 FF | 0d |  | COST [214225 h]; ELECTRICIAN [800 h]; PLUMBER [400 h] | 214,225.1 | MEW | TWR | F11 | CON |
| CNF11FN19 |  | Walls Cutting & Chasing |  | 7d | 2017-01-17 | 2017-01-24 | CNF11FN10 SS+8d | 11d | 0d | COST [6151 h] | 6,151 | MEW | TWR | F11 | FNS |
| CNF11MP10 |  | Civil Clearance To Start 1st Fix | milestone | 0d | 2017-01-19 | 2017-01-19 | EN0PSRA67, EN0PSRA02, EN0PSRA70, EN0PSRA73, EN0PSRA41, EN0PSRA44, EN0PSRA49, EN0PSRA54, EN0PSRA58, EN0PSRA62, EN0PSRA76, EN0PSRA80, CNF11FN19 SS+2d | 11d | 0d |  |  | MEW | TWR | F11 | MEP |
| CNF11MP11 |  | Drainage Pipes ( In Walls) |  | 5d | 2017-01-19 | 2017-01-24 | CNF11MP10, CNF10MP11 | 11d | 0d | COST [15528 h]; PLUMBER [240 h] | 15,528 | MEW | TWR | F11 | MEP |
| CNF11MP12 |  | Water Supply Pipes ( In Walls) |  | 5d | 2017-01-19 | 2017-01-24 | CNF11MP10, CNF10MP12 | 11d | 0d | COST [26928.4 h]; PLUMBER [240 h] | 26,928.4 | MEW | TWR | F11 | MEP |
| CNF11MP13 |  | Sleeves,Conduites,Gi Box,DB Box In Wall |  | 5d | 2017-01-19 | 2017-01-24 | CNF11MP10, CNF10MP13 | 11d | 0d | COST [48200.5 h]; ELECTRICIAN [800 h] | 48,200.5 | MEW | TWR | F11 | MEP |
| CNF11MP16 |  | MEP Clearance To Start Plaster | milestone | 0d | 2017-01-24 | 2017-01-24 | CNF11MP11, CNF11MP12, CNF11MP13 | 11d | 0d |  |  | MEW | TWR | F11 | MEP |
|  | 1.2 | **MEP 2nd Fix** |  |  | 2017-02-07 | 2017-02-26 |  |  |  |  |  |  |  |  |  |
| CNF11MP17 |  | Civil Clearance To Start 2nd Fix | milestone | 0d | 2017-02-07 | 2017-02-07 | CNF11FN21 | 15d | 0d |  |  | MEW | TWR | F11 | MEP |
| CNF11MP15 |  | Cable Tray / Trunking |  | 10d | 2017-02-08 | 2017-02-19 | CNF11MP17, CNF10MP15 | 16d | 1d | COST [153534 h]; ELECTRICIAN [320 h] | 153,534.2 | MEW | TWR | F11 | MEP |
| CNF11MP21 |  | Ducting Work Including Insulation |  | 10d | 2017-02-08 | 2017-02-19 | CNF10MP21, CNF11FN21 | 16d | 0d | COST [186091 h]; DUCTMAN [640 h] | 186,091.2 | MEW | TWR | F11 | MEP |
| CNF11MP22 |  | Installation of FCUs & Fans |  | 10d | 2017-02-08 | 2017-02-19 | CNF11MP21 FF, CNF10MP22, ENPRC1013 | 16d | 1d | COST [132302 h]; AC TECHNICIAN [480 h] | 132,302.1 | MEW | TWR | F11 | MEP |
| CNF11MP23 |  | Chilled Water Pipes (High L) |  | 10d | 2017-02-08 | 2017-02-19 | CNF10MP23, CNF11FN21 | 16d | 1d | COST [109870 h]; AC TECHNICIAN [640 h] | 109,870.1 | MEW | TWR | F11 | MEP |
| CNF11MP24 |  | LPG Piping |  | 10d | 2017-02-08 | 2017-02-19 | CNF10MP24, CNF11FN21, EN0PSPR11 FS+7d | 16d | 1d | COST [67153.8 h]; PIPE FITTER [320 h] | 67,153.8 | MEW | TWR | F11 | MEP |
| CNF11MP25 |  | Fire Fighting Pipes (Mains/Branches) |  | 10d | 2017-02-08 | 2017-02-19 | CNF10MP25, CNF11FN21 | 16d | 1d | COST [79182 h]; PIPE FITTER [480 h] | 79,182 | MEW | TWR | F11 | MEP |
| CNF11MP18 |  | Drainage Pipes (High L) |  | 10d | 2017-02-09 | 2017-02-20 | CNF11MP17 FS+1d, CNF10MP18 | 15d | 0d | COST [121568 h]; PLUMBER [640 h] | 121,568.3 | MEW | TWR | F11 | MEP |
| CNF11MP19 |  | Wires |  | 7d | 2017-02-09 | 2017-02-16 | CNF11MP13, CNF11MP17 FS+1d, CNF10MP19 | 18d | 3d | COST [153534 h]; ELECTRICIAN [1232 h] | 153,534.2 | MEW | TWR | F11 | MEP |
| CNF11MP20 |  | Water Supply Pipes (High L) |  | 10d | 2017-02-09 | 2017-02-20 | CNF11MP18 FF, CNF10MP20 | 15d | 0d | COST [141452 h]; PLUMBER [480 h] | 141,451.6 | MEW | TWR | F11 | MEP |
| CNF11MP26 |  | Acoustic Drainage Pipe Insulation |  | 8d | 2017-02-12 | 2017-02-20 | CNF11MP18 SS+2d, CNF10MP26 | 15d | 0d | COST [3763.1 h]; PLUMBER [256 h] | 3,763.1 | MEW | TWR | F11 | MEP |
| CNF11MP27 |  | Water Heaters Installation&Connection |  | 6d | 2017-02-12 | 2017-02-18 | CNF11MP20 SS+2d, ENPRC1002 | 17d | 2d | COST [558.9 h] | 558.9 | MEW | TWR | F11 | MEP |
| CNF11MP28 |  | MEP Clearance To Close Apartments Ceilings | milestone | 0d | 2017-02-20 | 2017-02-20 | CNF11MP23, CNF11MP20, CNF11MP19, CNF11MP25, CNF11MP22, CNF11MP18, CNF11MP24, CNF11MP26, CNF11MP27, CNF11MP15 | 15d | 0d |  |  | MEW | TWR | F11 | MEP |
| CNF11MP30 |  | MEP Clearance To Close Corridors Ceilings | milestone | 0d | 2017-02-26 | 2017-02-26 | CNF11MP28 FF+5d | 29d | 5d |  |  | MEW | TWR | F11 | MEP |

| ID | WBS | Activity | Type | Duration | Start | Finish | Predecessors | Total float | Free float | Resources | Cost | TYPE OF WORK L4 | ZONE L1 | FLOOR L2 | CATEGORY OF WORK L3 |
| --- | --- | --- | --- | --- | --- | --- | --- | --- | --- | --- | --- | --- | --- | --- | --- |
|  | 1.3 | **MEP 3rd Fix** |  |  | 2017-04-27 | 2017-05-27 |  |  |  |  |  |  |  |  |  |
| CNF11MP29 |  | Civil Clearance To Start Final Fix | milestone | 0d | 2017-04-27 | 2017-04-27 | CNF11FN43, CNF11MP30, CNF11MP28 | 61d | 14d |  |  | MEW | TWR | F11 | MEP |
| CNF11MP14 |  | Vertical Sprinkler Drops |  | 4d | 2017-05-15 | 2017-05-18 | CNF10MP14, CNF11MP29 | 51d | 0d | COST [4988.6 h]; PIPE FITTER [80 h] | 4,988.6 | MEW | TWR | F11 | MEP |
| CNF11MP31 |  | Hose Reel&Fire Extinguishers & Sprinklers |  | 4d | 2017-05-18 | 2017-05-22 | CNF10MP31, CNF11MP29 | 48d | 0d | COST [46832.8 h]; PIPE FITTER [80 h] | 46,832.8 | MEW | TWR | F11 | MEP |
| CNF11MP32 |  | Installation of DBS |  | 4d | 2017-05-18 | 2017-05-22 | CNF11MP29, CNF10MP32 | 44d | 0d | COST [9929.4 h]; ELECTRICIAN [64 h] | 9,929.4 | MEW | TWR | F11 | MEP |
| CNF11MP33 |  | Installation of Panels / SmDBS |  | 4d | 2017-05-18 | 2017-05-22 | CNF10MP33, CNF11MP32 FF, ENPRC1016 | 48d | 0d | COST [46476.1 h]; ELECTRICIAN [64 h] | 46,476.1 | MEW | TWR | F11 | MEP |
| CNF11MP34 |  | Installation of Fire Alarm Panel & Voice Alarm System |  | 4d | 2017-05-18 | 2017-05-22 | CNF11MP29, CNF10MP34, EN0PSPR40 FS+14d, ENPRC1016 | 48d | 0d | COST [20087.7 h]; ELECTRICIAN [80 h] | 20,087.7 | MEW | TWR | F11 | MEP |
| CNF11MP35 |  | Installation of Light Fitting & E.M Light |  | 4d | 2017-05-18 | 2017-05-22 | CNF11MP29, CNF10MP35, ENPRC1014, CNF11FN43 | 48d | 0d | COST [84000 h]; ELECTRICIAN [80 h] | 84,000 | LFX | TWR | F11 | MEP |
| CNF11MP36 |  | Installation of Wiring Accessories |  | 4d | 2017-05-18 | 2017-05-22 | CNF11MP35 FF, CNF10MP36 | 48d | 0d | COST [15564.6 h]; ELECTRICIAN [96 h] | 15,564.6 | MEW | TWR | F11 | MEP |
| CNF11MP37 |  | Installation of Grills&Diffusers |  | 4d | 2017-05-18 | 2017-05-22 | CNF11MP29, CNF10MP37 | 44d | 0d | COST [3325.4 h]; DUCTMAN [112 h] | 3,325.4 | MEW | TWR | F11 | MEP |
| CNF11MP38 |  | Installation of Telephone System |  | 4d | 2017-05-23 | 2017-05-27 | CNF11MP32, CNF10MP38 | 44d | 0d | COST [32690.3 h]; ELECTRICIAN [64 h] | 32,690.3 | MEW | TWR | F11 | MEP |
| CNF11MP39 |  | Installation of CCTV System |  | 4d | 2017-05-23 | 2017-05-27 | CNF11MP32, CNF10MP39, EN0PSPR44 FS+14d | 44d | 0d | COST [8707.3 h]; ELECTRICIAN [64 h] | 8,707.3 | MEW | TWR | F11 | MEP |
| CNF11MP40 |  | Thermostat Fixing |  | 4d | 2017-05-23 | 2017-05-27 | CNF11MP37, CNF10MP40 | 44d | 0d | COST [1381 h]; ELECTRICIAN [64 h] | 1,381 | MEW | TWR | F11 | MEP |
| CNF11MP41 |  | MEP Final Fix Clearance | milestone | 0d | 2017-05-27 | 2017-05-27 | CNF11MP39, CNF11MP36, CNF11MP37, CNF11MP40, CNF11MP38, CNF11MP35, CNF11MP31, CNF11MP34, CNF11MP33, CNF11MP32, CNF11MP14, CNF11FN44, CNF11FN91, CNF10MP41 | 68d | 4d |  |  | MEW | TWR | F11 | MEP |
|  | 12 | **12th Floor** |  |  | 2016-11-12 | 2017-10-11 |  |  |  |  |  |  |  |  |  |
|  | 1.5.1.1.2.3.21 | **Concrete** |  |  | 2016-11-12 | 2016-11-28 |  |  |  |  |  |  |  |  |  |
| CNF12CW10 |  | Slab Form Work |  | 5d | 2016-11-12 | 2016-11-16 | CNF11CW50 FF+1d, CNF11CW50 SS+1d | 0d |  | COST [130248 h]; Shutter Carpenter [1360 h]; Helper [680 h]; Form Work [2504 M2] | 130,247.5 | STR | TWR | F12 | CON |
| CNF12CW15 |  | Slab Rebar & Post Tension Tendons |  | 5d | 2016-11-14 | 2016-11-19 | ENCMSRA10, CNF12CW10 SS+1d, CNF12CW10 FF+2d | 0d |  | COST [307860 h]; Steel Fixer [1160 h]; Helper [600 h]; Steel Rebars [41200 Kg] | 307,860 | RFT | TWR | F12 | CON |
| CNF12CW90 |  | TECOM Steel Inspection prior to concrete pouring | milestone | 0d | 2016-11-19 | 2016-11-19 | CNF12CW15 FF, CNF12CW91 | 0d |  |  |  |  | TWR | F12 | CON |
| CNF12CW20 |  | Slab Casting |  | 2d | 2016-11-20 | 2016-11-21 | CNF11CW45, ENCMSRA50, CNF12CW90, CNF12CW15 | 0d |  | COST [280875 h] | 280,875.1 | RFC | TWR | F12 | CON |
| CNF12CW30 |  | Columns and Walls Rebar |  | 5d | 2016-11-21 | 2016-11-26 | CNF12CW20 SS+1d | 0d |  | COST [109074 h]; Steel Fixer [1080 h]; Helper [560 h]; Steel Rebars [53200 Kg] | 109,074 | RFT | TWR | F12 | CON |
| CNF12CW45 |  | PT Tensioning and Grouting |  | 5d | 2016-11-22 | 2016-11-27 | CNF12CW20 | 6d |  | COST |  |  | TWR | F12 | CON |
| CNF12CW35 |  | Columns and Walls Form Work |  | 4d | 2016-11-23 | 2016-11-27 | CNF12CW30 SS+1d, CNF12CW30 FF+1d | 0d |  | COST [62950 h]; Shutter Carpenter [608 h]; Helper [320 h]; Form Work [2504 M2] | 62,950 | STR | TWR | F12 | CON |
| CNF12CW50 |  | Columns Casting |  | 3d | 2016-11-26 | 2016-11-28 | CNF12CW35 SS+1d, CNF12CW35 FF+1d | 0d |  | COST [80297.8 h] | 80,297.75 | RFC | TWR | F12 | CON |

| ID | WBS | Activity | Duration | Start | Finish | Predecessors | Total float | Free float | Resources | Cost | TYPE OF WORK L4 | ZONE L1 | FLOOR L2 | CATEGORY OF WORK L3 |
| --- | --- | --- | --- | --- | --- | --- | --- | --- | --- | --- | --- | --- | --- | --- |
|  | 1 | **Finishes** |  | 2017-01-25 | 2017-10-11 |  |  |  |  |  |  |  |  |  |
|  | 1.5.2.2.1.1.1 | **General** |  | 2017-01-25 | 2017-09-13 |  |  |  |  |  |  |  |  |  |
| CNF12FN10 |  | Block Works | 15d | 2017-01-25 | 2017-02-11 | CNF15CW10, ENCMSPR51, CNF11FN10 | 1d | 0d | COST [389617 h]; Helper [1320 h]; Mason [2520 h]; Block [3733 M2] | 389,616.79 | B4-MAS | TWR | F12 | FNS |
| CNF12FN20 |  | Doors Sub Frames | 9d | 2017-02-04 | 2017-02-13 | CNF12FN10 SS+8d | 16d | 7d | COST [7164 h]; Sub-Frames [108 No] | 7,164 | B6-WDR | TWR | F12 | FNS |
| CNF12FN21 |  | Internal Walls Plaster Works | 12d | 2017-02-12 | 2017-02-25 | CNF12FN20 SS, CNF11FN21, CNF12MP16 | 9d | 0d | COST [121269 h]; Helper [672 h]; Mason [1344 h]; Plastering [3294 M2] | 121,268.81 | PLS | TWR | F12 | FNS |
| CNF12FN28 |  | Balconies Ceiling Plaster | 6d | 2017-02-26 | 2017-03-04 | CNF11FN28, CNF12FN21 | 28d | 0d | COST [33575.2 h]; Plastering [375 M2] | 33,575.25 | BCP | TWR | F12 | FNS |
| CNF12FN35 |  | Emulsion Paint for Balconies Ceiling | 3d | 2017-03-05 | 2017-03-07 | CNF11FN35, ENCMSPR57, CNF12FN28 | 28d | 0d | COST [5924 h]; Painter [96 h]; Paint [375 M2] | 5,924 | BLP | TWR | F12 | FNS |
| CNF12FN42 |  | Balconies Glazing & Aluminium Handrail | 15d | 2017-03-20 | 2017-04-05 | CNF11FN42, CNF12FN41 SS+2d, CNF12FN13, EN0PSRA14, EN0PSPR16 SS+90d | 24d | 0d | COST [210000 h]; Helper [120 h]; Aluminium Labor [120 h] | 210,000 | ALM | TWR | F12 | FNS |
| CNF12FN99 |  | Internal Signage | 3d | 2017-08-01 | 2017-08-03 | CNF12FN39, CNF11FN99 | 8d | 0d | COST [9303 h]; Signage Labor [96 h] | 9,303 | SGN | TWR | F12 | FNS |
| CNF12FN51 |  | Paint Final Coat | 3d | 2017-09-11 | 2017-09-13 | CNF12FN44, CNF12FN47, CNF12FN42, CNF12FN48, CNF12FN45, CNF12FN46, CNF11FN51 | 17d | 0d | COST [3000 h]; Painter [456 h]; Paint [3294 M2] | 3,000 | PFC | TWR | F12 | FNS |
|  | 1.5.2.2.1.1.2 | **Apartments** |  | 2017-02-26 | 2017-07-01 |  |  |  |  |  |  |  |  |  |
|  | 1.5.2.2.1.1.2.1 | **Dry Area** |  | 2017-02-26 | 2017-06-01 |  |  |  |  |  |  |  |  |  |
| CNF12FN29 |  | Wall Paint Primer & Stucco | 15d | 2017-02-26 | 2017-03-14 | ENCMSPR53, CNF12FN21 | 9d | 0d | COST [43043.6 h]; Painter [1080 h]; Paint [3294 M2] | 43,043.56 | PNT | TWR | F12 | FNS |
| CNF12FN41 |  | Aluminium Doors | 12d | 2017-02-26 | 2017-03-11 | CNF11FN41, CNF12FN21, EN0PSRA11, EN0PSPR13 SS+90d | 24d | 3d | Aluminium Labor [96 h]; Helper [192 h]; COST [470000 h] | 470,000 | ALM | TWR | F12 | FNS |
| CNF12FN38 |  | Gypsum Board for Ceiling | 12d | 2017-03-15 | 2017-03-28 | CNF12MP28, ENCMSPR54 FS+14d, CNF11FN38, CNF12FN29 | 9d | 0d | COST [156953 h]; False Ceiling Fixer [1056 h]; Gypsum Board [1300 M2] | 156,952.61 | GYP | TWR | F12 | FNS |
| CNF12FN31 |  | Paint for Ceiling | 12d | 2017-03-29 | 2017-04-11 | CNF11FN31, CNF12FN38 | 14d | 3d | COST [29459 h]; Painter [288 h]; Paint [1300 M2] | 29,459 | CPN | TWR | F12 | FNS |
| CNF12FN40 |  | Ceramic for Floors | 13d | 2017-04-03 | 2017-04-17 | CNF12FN41, CNF12FN38, CNF11FN40, EN0PCPR14 SS+90d | 5d | 0d | COST [135350 h]; Helper [208 h]; Mason [312 h]; Apartment Tiles [1300 M2] | 135,350.21 | TAP | TWR | F12 | FNS |
| CNF12FN90 |  | Door Frames | 7d | 2017-04-18 | 2017-04-26 | CNF11FN90, CNF12FN13, CNF12FN40 | 10d | 1d | Helper [112 h]; COST [107500 h]; Doors Carpenter [112 h] | 107,500 | DRI | TWR | F12 | FNS |
| CNF12FN43 |  | Door Shutters | 12d | 2017-04-29 | 2017-05-11 | CNF12FN90, CNF12FN40, CNF12FN13, CNF12FN41, CNF11FN43, EN0PSPR18 SS+105d | 9d | 0d | Helper [192 h]; COST [200000 h]; Doors Carpenter [192 h] | 200,000 | APD | TWR | F12 | FNS |
| CNF12FN44 |  | Door Ironmongeries | 10d | 2017-05-01 | 2017-05-11 | CNF11FN44, EN0PSPR202 SS+30d, CNF12FN43 SS | 29d | 0d | Finishings Carpenter [80 h]; Helper [80 h]; COST [28500 h] | 28,500 | DRI | TWR | F12 | FNS |
| CNF12FN91 |  | Thresholds | 10d | 2017-05-01 | 2017-05-11 | CNF11FN91, CNF12FN43 SS, EN0PCPR12 SS+75d | 29d | 0d | Finishings Carpenter [160 h]; Helper [160 h]; COST [24887.2 h] | 24,887.25 | THR | TWR | F12 | FNS |
| CNF12FN45 |  | Wooden Wardrobes | 11d | 2017-05-21 | 2017-06-01 | CNF11FN45, CNF12FN43, CNF12FN40, EN0PSPR38 SS+90d | 8d | 0d | Wooden Wardrobes Carpenter [88 h]; Helper [88 h]; COST [87100 h] | 87,100 | WRD | TWR | F12 | FNS |
|  | 1.5.2.2.1.1.2.2 | **Wet Area** |  | 2017-02-26 | 2017-07-01 |  |  |  |  |  |  |  |  |  |
| CNF12FN12 |  | Ceramic for Walls | 12d | 2017-02-26 | 2017-03-11 | CNF11FN12, CNF12FN21, EN0PCRA17, EN0PCPR15 SS+90d, EN0PCPR90 SS+90d | 28d | 0d | COST [164439 h]; Helper [384 h]; Mason [768 h]; Wet Area Tiles [1700 M2] | 164,438.55 | WLW | TWR | F12 | FNS |
| CNF12FN13 |  | Ceramic For Floors in Balconies | 6d | 2017-03-08 | 2017-03-14 | CNF12FN35, EN0PCPR13 SS+90d | 28d | 4d | COST [35088.2 h]; Helper [48 h]; Mason [96 h]; Balconies Floor Tiles [375 M2] | 35,088.15 | FLB | TWR | F12 | FNS |
| CNF12FN23 |  | False Ceiling | 15d | 2017-03-12 | 2017-03-28 | CNF12MP28, ENCMSPR55, CNF12FN12 | 28d | 0d | COST [46376.4 h]; False Ceiling Fixer [600 h]; False Ceiling [695 M2] | 46,376.44 | CWT | TWR | F12 | FNS |
| CNF12FN33 |  | Bathtubs | 5d | 2017-03-12 | 2017-03-16 | CNF12FN12, EN0PSPR204 SS+30d, CNF11FN33 | 42d | 10d | COST [35625 h] | 35,625 | bth | TWR | F12 | FNS |
| CNF12FN25 |  | Water Proofing | 12d | 2017-03-29 | 2017-04-11 | CNF12FN33 SS+1d, ENCMSPR56, CNF12FN23, CNF11FN25 | 28d | 0d | COST [102613 h]; Water Proofing [553 M2] | 102,613 | WPR | TWR | F12 | FNS |
| CNF12FN34 |  | Ceramic for Floor | 12d | 2017-04-12 | 2017-04-26 | CNF12FN33, CNF12FN25, CNF11FN34, CNSUB1070, EN0PCPR15 SS+90d, EN0PCPR90 SS+90d | 28d | 3d | COST [27945.1 h]; Helper [96 h]; Mason [96 h]; Wet Area Tiles [178 M2] | 27,945.08 | FLW | TWR | F12 | FNS |
| CNF12FN48 |  | Vanity Counter | 9d | 2017-05-13 | 2017-05-22 | CNF12FN13, CNF12FN43, CNF11FN48, EN0PSPR52 SS+60d | 21d | 3d | COST [86000 h]; Helper [216 h]; Vanity Counters Labor [216 h] | 86,000 | VNC | TWR | F12 | FNS |
| CNF12FN47 |  | Kitchen Cabinet | 11d | 2017-05-21 | 2017-06-01 | CNF12FN13, CNF12FN43, CNF11FN47, EN0PSRA36, EN0PSPR37 SS+90d | 4d | 0d | COST [93417 h]; Helper [88 h]; Kitchen Cabinet Carpenter [88 h] | 93,417 | KCB | TWR | F12 | FNS |
| CNF12FN46 |  | Sanitary Ware&Accessories | 6d | 2017-05-29 | 2017-06-04 | CNF12FN48 SS, CNF12FN43, CNF12FN13, CNF12FN33, CNF11FN46, ENPRC1005 | 19d | 0d | COST [100588 h] | 100,588.24 | SWR | TWR | F12 | FNS |
| CNF12FN49 |  | Glass Enclosure | 7d | 2017-06-14 | 2017-06-21 | CNF11FN49, CNF12FN46, EN0PSPR15 SS+75d | 11d | 0d | COST [50000 h]; Helper [56 h]; Glass Enclosure Labor [56 h] | 50,000 | ALM | TWR | F12 | FNS |
| CNF12FN50 |  | Mirrors & Toilet Accessories | 6d | 2017-06-22 | 2017-07-01 | CNF11FN50, CNF12FN46, CNF12FN49, EN0PSPR23 SS+45d | 17d | 1d | COST [86000 h]; Helper [96 h]; Mirrors Labor [48 h] | 86,000 | MRA | TWR | F12 | FNS |

| ID | WBS | Activity | Type | Duration | Start | Finish | Predecessors | Total float | Free float | Resources | Cost | TYPE OF WORK L4 | ZONE L1 | FLOOR L2 | CATEGORY OF WORK L3 |
| --- | --- | --- | --- | --- | --- | --- | --- | --- | --- | --- | --- | --- | --- | --- | --- |
|  | 1.5.2.2.1.1.3 | **Lift Lobby & Corridor** |  |  | 2017-03-19 | 2017-10-11 |  |  |  |  |  |  |  |  |  |
| CNF12FN11 |  | Ceiling Finishes |  | 12d | 2017-03-19 | 2017-04-01 | CNF11FN11, EN0PSPR200 SS+75d, CNF12MP30, EN0PSNM11 FS+14d | 24d | 1d | COST [46000 h]; False Ceiling Fixer [192 h] | 46,000 | IDC | TWR | F12 | FNS |
| CNF12FN30 |  | Wall Finishes |  | 12d | 2017-04-05 | 2017-04-18 | CNF11FN30, EN0PSPR201 SS+75d, CNF12FN21, CNF12FN11, EN0PSNM11 FS+14d | 21d | 0d | COST [59722 h]; Helper [192 h]; Mason [288 h] | 59,722 | IDW | TWR | F12 | FNS |
| CNF12FN39 |  | Floor Finishes |  | 10d | 2017-04-19 | 2017-05-01 | CNF11FN39, CNF12FN11, CNF12FN30, EN0PSPR30 SS+75d, EN0PSNM11 FS+14d | 30d | 2d | COST [52113 h]; Helper [80 h]; Mason [80 h] | 52,113 | IDF | TWR | F12 | FNS |
| CNF12FN93 |  | Carpet Laying |  | 3d | 2017-10-09 | 2017-10-11 | CNF11FN93, CNF12FN39, ATDCD1030 | 4d | 0d | COST [9109 h] | 9,109 | IDR | TWR | F12 | FNS |
|  | 1.5.2.2.1.1.4 | **Common Areas/Service Rooms** |  |  | 2017-05-31 | 2017-07-16 |  |  |  |  |  |  |  |  |  |
|  | 1 | **Service Rooms** |  |  | 2017-05-31 | 2017-06-25 |  |  |  |  |  |  |  |  |  |
| CNF12FN17 |  | Epoxy Primer Paint for Ceiling |  | 6d | 2017-05-31 | 2017-06-06 | CNF12FN31, ENCMSPR52, CNF11FN17 | 5d | 0d | COST [3833.81 h]; Painter [48 h] | 3,833.81 | EPC | TWR | F12 | FNS |
| CNF12FN18 |  | Acrylic Emulsion Primer Paint & Stucco for Wall |  | 6d | 2017-06-07 | 2017-06-13 | CNF12FN17 | 9d | 0d | COST [3248.62 h]; Painter [48 h] | 3,248.62 | SRW | TWR | F12 | FNS |
| CNF12FN24 |  | Epoxy Primer Paint for Floor |  | 6d | 2017-06-14 | 2017-06-20 | ENCMSPR52, CNF12FN18 | 9d | 0d | COST [2379.32 h]; Painter [48 h] | 2,379.32 | EPF | TWR | F12 | FNS |
| CNF12FN26 |  | Timber Doors |  | 4d | 2017-06-21 | 2017-06-25 | CNF12FN24, CNF12FN39, CNF11FN26 | 28d | 2d | COST [58000 h]; Doors Carpenter [32 h]; Helper [32 h] | 58,000 | SRD | TWR | F12 | FNS |
|  | 2 | **Stairs** |  |  | 2017-06-21 | 2017-07-16 |  |  |  |  |  |  |  |  |  |
| CNF12FN27 |  | Epoxy Primer Paint for Ceiling |  | 4d | 2017-06-21 | 2017-06-25 | ENCMSPR52, CNF12FN24, CNF11FN27 | 9d | 0d | COST [599 h]; Painter [32 h] | 599 | EPC | TWR | F12 | FNS |
| CNF12FN32 |  | Acrylic Emulsion Primer Paint & Stucco for Walls |  | 4d | 2017-06-26 | 2017-07-02 | CNF12FN27, CNF11FN32 | 9d | 0d | COST [3695.62 h]; Painter [32 h] | 3,695.62 | SRW | TWR | F12 | FNS |
| CNF12FN36 |  | Epoxy Primer Paint for Floor |  | 4d | 2017-07-03 | 2017-07-06 | ENCMSPR52, CNF12FN32 | 14d | 0d | COST [8129.16 h]; Painter [32 h] | 8,129.16 | EPF | TWR | F12 | FNS |
| CNF12FN80 |  | Stair Handrail |  | 4d | 2017-07-08 | 2017-07-11 | CNF12FN36 | 14d | 0d | COST [30000 h]; Helper [64 h]; Aluminium Labor [32 h] | 30,000 | B5-MTW | TWR | F12 | FNS |
| CNF12FN37 |  | Steel Doors |  | 4d | 2017-07-12 | 2017-07-16 | CNF12FN80, CNF12FN36, CNF12FN39, EN0PSPR31 SS+45d, CNF11FN37 | 14d | 2d | Steel Works Labor [32 h]; Helper [64 h]; COST [31730.8 h] | 31,730.81 | STD | TWR | F12 | FNS |
|  | 1.1 | **MEP** |  |  | 2016-11-14 | 2017-05-31 |  |  |  |  |  |  |  |  |  |
|  | 1.1 | **MEP 1st Fix** |  |  | 2016-11-14 | 2017-02-11 |  |  |  |  |  |  |  |  |  |
| CNF12CW91 |  | MEP Conduits for the slab |  | 5d | 2016-11-14 | 2016-11-19 | CNF12CW15 SS, CNF12CW15 FF | 0d |  | COST [214225 h]; ELECTRICIAN [800 h]; PLUMBER [400 h] | 214,225.1 | MEW | TWR | F12 | CON |
| CNF12FN19 |  | Walls Cutting & Chasing |  | 7d | 2017-02-04 | 2017-02-11 | CNF12FN10 SS+8d | 9d | 0d | COST [6151 h] | 6,151 | MEW | TWR | F12 | FNS |
| CNF12MP10 |  | Civil Clearance To Start 1st Fix | milestone | 0d | 2017-02-06 | 2017-02-06 | EN0PSRA67, EN0PSRA02, EN0PSRA70, EN0PSRA73, EN0PSRA41, EN0PSRA44, EN0PSRA49, EN0PSRA54, EN0PSRA58, EN0PSRA62, EN0PSRA76, EN0PSRA80, CNF12FN19 SS+2d | 9d | 0d |  |  | MEW | TWR | F12 | MEP |
| CNF12MP11 |  | Drainage Pipes ( In Walls) |  | 5d | 2017-02-06 | 2017-02-11 | CNF12MP10, CNF11MP11 | 9d | 0d | COST [15528 h]; PLUMBER [400 h] | 15,528 | MEW | TWR | F12 | MEP |
| CNF12MP12 |  | Water Supply Pipes ( In Walls) |  | 5d | 2017-02-06 | 2017-02-11 | CNF12MP10, CNF11MP12 | 9d | 0d | COST [26928.4 h]; PLUMBER [400 h] | 26,928.4 | MEW | TWR | F12 | MEP |
| CNF12MP13 |  | Sleeves,Conduites,Gi Box,DB Box In Wall |  | 5d | 2017-02-06 | 2017-02-11 | CNF12MP10, CNF11MP13 | 9d | 0d | COST [48200.5 h]; ELECTRICIAN [1200 h] | 48,200.5 | MEW | TWR | F12 | MEP |
| CNF12MP16 |  | MEP Clearance To Start Plaster | milestone | 0d | 2017-02-11 | 2017-02-11 | CNF12MP11, CNF12MP12, CNF12MP13 | 9d | 0d |  |  | MEW | TWR | F12 | MEP |

| ID | WBS | Activity | Type | Duration | Start | Finish | Predecessors | Total float | Free float | Resources | Cost | TYPE OF WORK L4 | ZONE L1 | FLOOR L2 | CATEGORY OF WORK L3 |
| --- | --- | --- | --- | --- | --- | --- | --- | --- | --- | --- | --- | --- | --- | --- | --- |
|  | 1.2 | **MEP 2nd Fix** |  |  | 2017-02-25 | 2017-03-15 |  |  |  |  |  |  |  |  |  |
| CNF12MP17 |  | Civil Clearance To Start 2nd Fix | milestone | 0d | 2017-02-25 | 2017-02-25 | CNF12FN21 | 13d | 0d |  |  | MEW | TWR | F12 | MEP |
| CNF12MP15 |  | Cable Tray / Trunking |  | 10d | 2017-02-26 | 2017-03-08 | CNF12MP17, CNF11MP15 | 14d | 1d | COST [153534 h]; ELECTRICIAN [400 h] | 153,534.2 | MEW | TWR | F12 | MEP |
| CNF12MP21 |  | Ducting Work Including Insulation |  | 10d | 2017-02-26 | 2017-03-08 | CNF11MP21, CNF12FN21 | 14d | 0d | COST [186091 h]; DUCTMAN [768 h] | 186,091.2 | MEW | TWR | F12 | MEP |
| CNF12MP22 |  | Installation of FCUs & Fans |  | 10d | 2017-02-26 | 2017-03-08 | CNF12MP21 FF, CNF11MP22, ENPRC1013 | 14d | 1d | COST [132302 h]; AC TECHNICIAN [736 h] | 132,302.1 | MEW | TWR | F12 | MEP |
| CNF12MP23 |  | Chilled Water Pipes (High L) |  | 10d | 2017-02-26 | 2017-03-08 | CNF11MP23, CNF12FN21 | 14d | 1d | COST [109870 h]; AC TECHNICIAN [640 h] | 109,870.1 | MEW | TWR | F12 | MEP |
| CNF12MP24 |  | LPG Piping |  | 10d | 2017-02-26 | 2017-03-08 | CNF11MP24, CNF12FN21, EN0PSPR11 FS+7d | 14d | 1d | COST [67153.8 h]; PIPE FITTER [320 h] | 67,153.8 | MEW | TWR | F12 | MEP |
| CNF12MP25 |  | Fire Fighting Pipes (Mains/Branches) |  | 10d | 2017-02-26 | 2017-03-08 | CNF11MP25, CNF12FN21 | 14d | 1d | COST [79182 h]; PIPE FITTER [480 h] | 79,182 | MEW | TWR | F12 | MEP |
| CNF12MP18 |  | Drainage Pipes (High L) |  | 10d | 2017-02-27 | 2017-03-09 | CNF12MP17 FS+1d, CNF11MP18 | 13d | 0d | COST [121568 h]; PLUMBER [640 h] | 121,568.3 | MEW | TWR | F12 | MEP |
| CNF12MP19 |  | Wires |  | 7d | 2017-02-27 | 2017-03-06 | CNF12MP13, CNF12MP17 FS+1d, CNF11MP19 | 16d | 3d | COST [153534 h]; ELECTRICIAN [1232 h] | 153,534.2 | MEW | TWR | F12 | MEP |
| CNF12MP20 |  | Water Supply Pipes (High L) |  | 10d | 2017-02-27 | 2017-03-09 | CNF12MP18 FF, CNF11MP20 | 13d | 0d | COST [141452 h]; PLUMBER [480 h] | 141,451.6 | MEW | TWR | F12 | MEP |
| CNF12MP26 |  | Acoustic Drainage Pipe Insulation |  | 8d | 2017-03-01 | 2017-03-09 | CNF12MP18 SS+2d, CNF11MP26 | 13d | 0d | COST [3763.1 h]; PLUMBER [256 h] | 3,763.1 | MEW | TWR | F12 | MEP |
| CNF12MP27 |  | Water Heaters Installation&Connection |  | 6d | 2017-03-01 | 2017-03-07 | CNF12MP20 SS+2d, ENPRC1002 | 15d | 2d | COST [558.9 h] | 558.9 | MEW | TWR | F12 | MEP |
| CNF12MP28 |  | MEP Clearance To Close Apartments Ceilings | milestone | 0d | 2017-03-09 | 2017-03-09 | CNF12MP23, CNF12MP20, CNF12MP19, CNF12MP25, CNF12MP22, CNF12MP18, CNF12MP24, CNF12MP26, CNF12MP27, CNF12MP15 | 13d | 0d |  |  | MEW | TWR | F12 | MEP |
| CNF12MP30 |  | MEP Clearance To Close Corridors Ceilings | milestone | 0d | 2017-03-15 | 2017-03-15 | CNF12MP28 FF+5d | 26d | 2d |  |  | MEW | TWR | F12 | MEP |
|  | 1.3 | **MEP 3rd Fix** |  |  | 2017-05-11 | 2017-05-31 |  |  |  |  |  |  |  |  |  |
| CNF12MP29 |  | Civil Clearance To Start Final Fix | milestone | 0d | 2017-05-11 | 2017-05-11 | CNF12FN43, CNF12MP30, CNF12MP28 | 53d | 6d |  |  | MEW | TWR | F12 | MEP |
| CNF12MP14 |  | Vertical Sprinkler Drops |  | 4d | 2017-05-20 | 2017-05-23 | CNF11MP14, CNF12MP29 | 51d | 2d | COST [4988.6 h]; PIPE FITTER [80 h] | 4,988.6 | MEW | TWR | F12 | MEP |
| CNF12MP31 |  | Hose Reel&Fire Extinguishers & Sprinklers |  | 4d | 2017-05-23 | 2017-05-27 | CNF11MP31, CNF12MP29 | 48d | 0d | COST [46832.8 h]; PIPE FITTER [80 h] | 46,832.8 | MEW | TWR | F12 | MEP |
| CNF12MP32 |  | Installation of DBS |  | 4d | 2017-05-23 | 2017-05-27 | CNF12MP29, CNF11MP32 | 44d | 0d | COST [9929.4 h]; ELECTRICIAN [64 h] | 9,929.4 | MEW | TWR | F12 | MEP |
| CNF12MP33 |  | Installation of Panels / SmDBS |  | 4d | 2017-05-23 | 2017-05-27 | CNF11MP33, CNF12MP32 FF, ENPRC1016 | 48d | 0d | COST [46476.1 h]; ELECTRICIAN [64 h] | 46,476.1 | MEW | TWR | F12 | MEP |
| CNF12MP34 |  | Installation of Fire Alarm Panel & Voice Alarm System |  | 4d | 2017-05-23 | 2017-05-27 | CNF12MP29, CNF11MP34, EN0PSPR40 FS+14d, ENPRC1016 | 48d | 0d | COST [20087.7 h]; ELECTRICIAN [80 h] | 20,087.7 | MEW | TWR | F12 | MEP |
| CNF12MP35 |  | Installation of Light Fitting & E.M Light |  | 4d | 2017-05-23 | 2017-05-27 | CNF12MP29, CNF11MP35, ENPRC1014, CNF12FN43 | 48d | 0d | COST [84000 h]; ELECTRICIAN [80 h] | 84,000 | LFX | TWR | F12 | MEP |
| CNF12MP36 |  | Installation of Wiring Accessories |  | 4d | 2017-05-23 | 2017-05-27 | CNF12MP35 FF, CNF11MP36 | 48d | 0d | COST [15564.6 h]; ELECTRICIAN [96 h] | 15,564.6 | MEW | TWR | F12 | MEP |
| CNF12MP37 |  | Installation of Grills&Diffusers |  | 4d | 2017-05-23 | 2017-05-27 | CNF12MP29, CNF11MP37 | 44d | 0d | COST [3325.4 h]; DUCTMAN [112 h] | 3,325.4 | MEW | TWR | F12 | MEP |
| CNF12MP38 |  | Installation of Telephone System |  | 4d | 2017-05-28 | 2017-05-31 | CNF12MP32, CNF11MP38 | 44d | 0d | COST [32690.3 h]; ELECTRICIAN [64 h] | 32,690.3 | MEW | TWR | F12 | MEP |
| CNF12MP39 |  | Installation of CCTV System |  | 4d | 2017-05-28 | 2017-05-31 | CNF12MP32, CNF11MP39, EN0PSPR44 FS+14d | 44d | 0d | COST [8707.3 h]; ELECTRICIAN [64 h] | 8,707.3 | MEW | TWR | F12 | MEP |
| CNF12MP40 |  | Thermostat Fixing |  | 4d | 2017-05-28 | 2017-05-31 | CNF12MP37, CNF11MP40 | 44d | 0d | COST [1381 h]; ELECTRICIAN [64 h] | 1,381 | MEW | TWR | F12 | MEP |
| CNF12MP41 |  | MEP Final Fix Clearance | milestone | 0d | 2017-05-31 | 2017-05-31 | CNF12MP39, CNF12MP36, CNF12MP37, CNF12MP40, CNF12MP38, CNF12MP35, CNF12MP31, CNF12MP34, CNF12MP33, CNF12MP32, CNF12MP14, CNF12FN44, CNF12FN91, CNF11MP41 | 64d | 4d |  |  | MEW | TWR | F12 | MEP |

| ID | WBS | Activity | Type | Duration | Start | Finish | Predecessors | Total float | Free float | Resources | Cost | TYPE OF WORK L4 | ZONE L1 | FLOOR L2 | CATEGORY OF WORK L3 |
| --- | --- | --- | --- | --- | --- | --- | --- | --- | --- | --- | --- | --- | --- | --- | --- |
|  | 13 | **13th Floor** |  |  | 2016-11-27 | 2017-10-15 |  |  |  |  |  |  |  |  |  |
|  | 1.5.1.1.2.3.21 | **Concrete** |  |  | 2016-11-27 | 2016-12-17 |  |  |  |  |  |  |  |  |  |
| CNF13CW10 |  | Slab Form Work |  | 5d | 2016-11-27 | 2016-12-04 | CNF12CW50 FF+1d, CNF12CW50 SS+1d | 0d |  | COST [130248 h]; Shutter Carpenter [1360 h]; Helper [680 h]; Form Work [2504 M2] | 130,247.5 | STR | TWR | F13 | CON |
| CNF13CW15 |  | Slab Rebar & Post Tension Tendons |  | 5d | 2016-11-29 | 2016-12-06 | ENCMSRA10, CNF13CW10 SS+1d, CNF13CW10 FF+2d | 0d |  | COST [307860 h]; Steel Fixer [1160 h]; Helper [600 h]; Steel Rebars [41200 Kg] | 307,860 | RFT | TWR | F13 | CON |
| CNF13CW90 |  | TECOM Steel Inspection prior to concrete pouring | milestone | 0d | 2016-12-06 | 2016-12-06 | CNF13CW15 FF, CNF13CW91 | 0d |  |  |  |  | TWR | F13 | CON |
| CNF13CW20 |  | Slab Casting |  | 2d | 2016-12-07 | 2016-12-08 | CNF12CW45, ENCMSRA50, CNF13CW90, CNF13CW15 | 0d |  | COST [280875 h] | 280,875.1 | RFC | TWR | F13 | CON |
| CNF13CW30 |  | Columns and Walls Rebar |  | 5d | 2016-12-08 | 2016-12-14 | CNF13CW20 SS+1d | 0d |  | COST [110960 h]; Steel Fixer [1080 h]; Helper [560 h]; Steel Rebars [53200 Kg] | 110,960.5 | RFT | TWR | F13 | CON |
| CNF13CW45 |  | PT Tensioning and Grouting |  | 5d | 2016-12-10 | 2016-12-15 | CNF13CW20 | 6d |  | COST |  |  | TWR | F13 | CON |
| CNF13CW35 |  | Columns and Walls Form Work |  | 4d | 2016-12-12 | 2016-12-15 | CNF13CW30 SS+1d, CNF13CW30 FF+1d | 0d |  | COST [62950 h]; Shutter Carpenter [608 h]; Helper [320 h]; Form Work [2504 M2] | 62,950 | STR | TWR | F13 | CON |
| CNF13CW50 |  | Columns Casting |  | 3d | 2016-12-14 | 2016-12-17 | CNF13CW35 SS+1d, CNF13CW35 FF+1d | 0d |  | COST [80297.8 h] | 80,297.75 | RFC | TWR | F13 | CON |
|  | 1 | **Finishes** |  |  | 2017-02-12 | 2017-10-15 |  |  |  |  |  |  |  |  |  |
|  | 1.5.2.2.1.1.1 | **General** |  |  | 2017-02-12 | 2017-09-17 |  |  |  |  |  |  |  |  |  |
| CNF13FN10 |  | Block Works |  | 15d | 2017-02-12 | 2017-02-28 | CNF16CW10, ENCMSPR51, CNF12FN10 | 1d | 0d | COST [389617 h]; Helper [1320 h]; Mason [2520 h]; Block [3733 M2] | 389,616.79 | B4-MAS | TWR | F13 | FNS |
| CNF13FN20 |  | Doors Sub Frames |  | 9d | 2017-02-21 | 2017-03-02 | CNF13FN10 SS+8d | 14d | 7d | COST [7164 h]; Sub-Frames [108 No] | 7,164 | B6-WDR | TWR | F13 | FNS |
| CNF13FN21 |  | Internal Walls Plaster Works |  | 12d | 2017-03-01 | 2017-03-14 | CNF13FN20 SS, CNF12FN21, CNF13MP16 | 7d | 0d | COST [121269 h]; Helper [672 h]; Mason [1344 h]; Plastering [3294 M2] | 121,268.81 | PLS | TWR | F13 | FNS |
| CNF13FN28 |  | Balconies Ceiling Plaster |  | 6d | 2017-03-15 | 2017-03-21 | CNF12FN28, CNF13FN21 | 28d | 0d | COST [33575.2 h]; Plastering [375 M2] | 33,575.25 | BCP | TWR | F13 | FNS |
| CNF13FN35 |  | Emulsion Paint for Balconies Ceiling |  | 3d | 2017-03-22 | 2017-03-25 | CNF12FN35, ENCMSPR57, CNF13FN28 | 28d | 0d | COST [5924 h]; Painter [96 h]; Paint [375 M2] | 5,924 | BLP | TWR | F13 | FNS |
| CNF13FN42 |  | Balconies Glazing & Aluminium Handrail |  | 15d | 2017-04-06 | 2017-04-24 | CNF12FN42, CNF13FN41 SS+2d, CNF13FN35, CNF13FN13, EN0PSRA14, EN0PSPR16 SS+90d | 24d | 0d | COST [210000 h]; Helper [120 h]; Aluminium Labor [120 h] | 210,000 | ALM | TWR | F13 | FNS |
| CNF13FN99 |  | Internal Signage |  | 3d | 2017-08-05 | 2017-08-07 | CNF13FN39, CNF12FN99 | 8d | 0d | COST [8647 h]; Signage Labor [96 h] | 8,647 | SGN | TWR | F13 | FNS |
| CNF13FN51 |  | Paint Final Coat |  | 3d | 2017-09-14 | 2017-09-17 | CNF13FN44, CNF13FN47, CNF13FN42, CNF13FN48, CNF13FN45, CNF13FN46, CNF12FN51 | 17d | 0d | COST [3000 h]; Painter [456 h]; Paint [3294 M2] | 3,000 | PFC | TWR | F13 | FNS |
|  | 1.5.2.2.1.1.2 | **Apartments** |  |  | 2017-03-15 | 2017-07-09 |  |  |  |  |  |  |  |  |  |
|  | 1.5.2.2.1.1.2.1 | **Dry Area** |  |  | 2017-03-15 | 2017-06-14 |  |  |  |  |  |  |  |  |  |
| CNF13FN29 |  | Wall Paint Primer & Stucco |  | 15d | 2017-03-15 | 2017-04-01 | ENCMSPR53, CNF13FN21 | 7d | 0d | COST [43043.6 h]; Painter [1080 h]; Paint [3294 M2] | 43,043.56 | PNT | TWR | F13 | FNS |
| CNF13FN41 |  | Aluminium Doors |  | 12d | 2017-03-15 | 2017-03-28 | CNF12FN41, CNF13FN21, EN0PSRA11, EN0PSPR13 SS+90d | 22d | 3d | Aluminium Labor [96 h]; Helper [192 h]; COST [470000 h] | 470,000 | ALM | TWR | F13 | FNS |
| CNF13FN38 |  | Gypsum Board for Ceiling |  | 12d | 2017-04-02 | 2017-04-15 | CNF13MP28, ENCMSPR54 FS+14d, CNF12FN38, CNF13FN29 | 7d | 0d | COST [156953 h]; False Ceiling Fixer [1056 h]; Gypsum Board [1300 M2] | 156,952.61 | GYP | TWR | F13 | FNS |
| CNF13FN31 |  | Paint for Ceiling |  | 12d | 2017-04-16 | 2017-04-30 | CNF12FN31, CNF13FN38 | 11d | 3d | COST [29459 h]; Painter [288 h]; Paint [1300 M2] | 29,459 | CPN | TWR | F13 | FNS |
| CNF13FN40 |  | Ceramic for Floors |  | 13d | 2017-04-18 | 2017-05-03 | CNF13FN41, CNF13FN38, CNF12FN40, EN0PCPR14 SS+90d | 5d | 0d | COST [135350 h]; Helper [208 h]; Mason [312 h]; Apartment Tiles [1300 M2] | 135,350.21 | TAP | TWR | F13 | FNS |
| CNF13FN90 |  | Door Frames |  | 7d | 2017-05-04 | 2017-05-11 | CNF12FN90, CNF13FN13, CNF13FN40 | 9d | 0d | Helper [112 h]; COST [107500 h]; Doors Carpenter [112 h] | 107,500 | DRI | TWR | F13 | FNS |
| CNF13FN43 |  | Door Shutters |  | 12d | 2017-05-13 | 2017-05-25 | CNF13FN90, CNF13FN40, CNF13FN13, CNF13FN41, CNF12FN43, EN0PSPR18 SS+120d | 9d | 0d | Helper [192 h]; COST [200000 h]; Doors Carpenter [192 h] | 200,000 | APD | TWR | F13 | FNS |
| CNF13FN44 |  | Door Ironmongeries |  | 10d | 2017-05-13 | 2017-05-23 | CNF12FN44, EN0PSPR202 SS+30d, CNF13FN43 SS | 29d | 3d | Finishings Carpenter [80 h]; Helper [80 h]; COST [28500 h] | 28,500 | DRI | TWR | F13 | FNS |
| CNF13FN91 |  | Thresholds |  | 10d | 2017-05-13 | 2017-05-23 | CNF12FN91, CNF13FN43 SS, EN0PCPR12 SS+75d | 29d | 3d | Finishings Carpenter [160 h]; Helper [160 h]; COST [24887.2 h] | 24,887.25 | THR | TWR | F13 | FNS |
| CNF13FN45 |  | Wooden Wardrobes |  | 11d | 2017-06-03 | 2017-06-14 | CNF12FN45, CNF13FN43, CNF13FN40, EN0PSPR38 SS+90d | 8d | 0d | Wooden Wardrobes Carpenter [88 h]; Helper [88 h]; COST [87100 h] | 87,100 | WRD | TWR | F13 | FNS |

| ID | WBS | Activity | Duration | Start | Finish | Predecessors | Total float | Free float | Resources | Cost | TYPE OF WORK L4 | ZONE L1 | FLOOR L2 | CATEGORY OF WORK L3 |
| --- | --- | --- | --- | --- | --- | --- | --- | --- | --- | --- | --- | --- | --- | --- |
|  | 1.5.2.2.1.1.2.2 | **Wet Area** |  | 2017-03-15 | 2017-07-09 |  |  |  |  |  |  |  |  |  |
| CNF13FN12 |  | Ceramic for Walls | 12d | 2017-03-15 | 2017-03-28 | CNF12FN12, CNF13FN21, EN0PCRA17, EN0PCPR15 SS+120d, EN0PCPR90 SS+90d | 25d | 0d | COST [164439 h]; Helper [384 h]; Mason [768 h]; Wet Area Tiles [1700 M2] | 164,438.55 | WLW | TWR | F13 | FNS |
| CNF13FN13 |  | Ceramic For Floors in Balconies | 6d | 2017-03-26 | 2017-04-01 | CNF13FN35, EN0PCPR13 SS+90d | 28d | 4d | COST [35088.2 h]; Helper [48 h]; Mason [96 h]; Balconies Floor Tiles [375 M2] | 35,088.15 | FLB | TWR | F13 | FNS |
| CNF13FN23 |  | False Ceiling | 15d | 2017-03-29 | 2017-04-15 | CNF13MP28, ENCMSPR55, CNF13FN12 | 25d | 0d | COST [46376.4 h]; False Ceiling Fixer [600 h]; False Ceiling [695 M2] | 46,376.44 | CWT | TWR | F13 | FNS |
| CNF13FN33 |  | Bathtubs | 5d | 2017-03-29 | 2017-04-03 | CNF13FN12, EN0PSPR204 SS+30d, CNF12FN33 | 39d | 10d | COST [35625 h] | 35,625 | bth | TWR | F13 | FNS |
| CNF13FN25 |  | Water Proofing | 12d | 2017-04-16 | 2017-04-30 | CNF13FN33 SS+1d, ENCMSPR56, CNF13FN23, CNF12FN25 | 25d | 0d | COST [102613 h]; Water Proofing [553 M2] | 102,613 | WPR | TWR | F13 | FNS |
| CNF13FN34 |  | Ceramic for Floor | 12d | 2017-05-01 | 2017-05-14 | CNF13FN33, CNF13FN25, CNF12FN34, CNSUB1070, EN0PCPR15 SS+120d, EN0PCPR90 SS+120d | 25d | 3d | COST [27945.1 h]; Helper [96 h]; Mason [96 h]; Wet Area Tiles [178 M2] | 27,945.08 | FLW | TWR | F13 | FNS |
| CNF13FN48 |  | Vanity Counter | 9d | 2017-05-27 | 2017-06-05 | CNF13FN13, CNF13FN43, CNF12FN48, EN0PSPR52 SS+75d | 18d | 4d | COST [86000 h]; Helper [216 h]; Vanity Counters Labor [216 h] | 86,000 | VNC | TWR | F13 | FNS |
| CNF13FN47 |  | Kitchen Cabinet | 11d | 2017-06-03 | 2017-06-14 | CNF13FN13, CNF13FN43, CNF12FN47, EN0PSRA36, EN0PSPR37 SS+90d | 4d | 0d | COST [93417 h]; Helper [88 h]; Kitchen Cabinet Carpenter [88 h] | 93,417 | KCB | TWR | F13 | FNS |
| CNF13FN46 |  | Sanitary Ware&Accessories | 6d | 2017-06-05 | 2017-06-11 | CNF13FN48 SS, CNF13FN43, CNF13FN13, CNF13FN33, CNF12FN46, ENPRC1005 | 20d | 0d | COST [100588 h] | 100,588.24 | SWR | TWR | F13 | FNS |
| CNF13FN49 |  | Glass Enclosure | 7d | 2017-06-22 | 2017-07-02 | CNF12FN49, CNF13FN46, EN0PSPR15 SS+75d | 11d | 0d | COST [50000 h]; Helper [56 h]; Glass Enclosure Labor [56 h] | 50,000 | ALM | TWR | F13 | FNS |
| CNF13FN50 |  | Mirrors & Toilet Accessories | 6d | 2017-07-03 | 2017-07-09 | CNF12FN50, CNF13FN46, CNF13FN49, EN0PSPR23 SS+45d | 16d | 1d | COST [86000 h]; Helper [96 h]; Mirrors Labor [48 h] | 86,000 | MRA | TWR | F13 | FNS |
|  | 1.5.2.2.1.1.3 | **Lift Lobby & Corridor** |  | 2017-04-03 | 2017-10-15 |  |  |  |  |  |  |  |  |  |
| CNF13FN11 |  | Ceiling Finishes | 12d | 2017-04-03 | 2017-04-16 | CNF12FN11, EN0PSPR200 SS+75d, CNF13MP30, EN0PSNM11 FS+14d | 23d | 2d | COST [46000 h]; False Ceiling Fixer [192 h] | 46,000 | IDC | TWR | F13 | FNS |
| CNF13FN30 |  | Wall Finishes | 12d | 2017-04-19 | 2017-05-03 | CNF12FN30, EN0PSPR201 SS+75d, CNF13FN21, CNF13FN11, EN0PSNM11 FS+14d | 21d | 0d | COST [59722 h]; Helper [192 h]; Mason [288 h] | 59,722 | IDW | TWR | F13 | FNS |
| CNF13FN39 |  | Floor Finishes | 10d | 2017-05-04 | 2017-05-15 | CNF12FN39, CNF13FN11, CNF13FN30, EN0PSPR30 SS+75d, EN0PSNM11 FS+14d | 28d | 3d | COST [52113 h]; Helper [80 h]; Mason [80 h] | 52,113 | IDF | TWR | F13 | FNS |
| CNF13FN93 |  | Carpet Laying | 3d | 2017-10-12 | 2017-10-15 | CNF12FN93, CNF13FN39, ATDCD1030 | 4d | 0d | COST [9109 h] | 9,109 | IDR | TWR | F13 | FNS |
|  | 1.5.2.2.1.1.4 | **Common Areas/Service Rooms** |  | 2017-06-07 | 2017-07-23 |  |  |  |  |  |  |  |  |  |
|  | 1 | **Service Rooms** |  | 2017-06-07 | 2017-07-04 |  |  |  |  |  |  |  |  |  |
| CNF13FN17 |  | Epoxy Primer Paint for Ceiling | 6d | 2017-06-07 | 2017-06-13 | CNF13FN31, ENCMSPR52, CNF12FN17 | 5d | 0d | COST [3833.81 h]; Painter [48 h] | 3,833.81 | EPC | TWR | F13 | FNS |
| CNF13FN18 |  | Acrylic Emulsion Primer Paint & Stucco for Wall | 6d | 2017-06-14 | 2017-06-20 | CNF13FN17 | 7d | 0d | COST [3248.62 h]; Painter [48 h] | 3,248.62 | SRW | TWR | F13 | FNS |
| CNF13FN24 |  | Epoxy Primer Paint for Floor | 6d | 2017-06-21 | 2017-06-29 | ENCMSPR52, CNF13FN18 | 7d | 0d | COST [2379.32 h]; Painter [48 h] | 2,379.32 | EPF | TWR | F13 | FNS |
| CNF13FN26 |  | Timber Doors | 4d | 2017-07-01 | 2017-07-04 | CNF13FN24, CNF13FN39, CNF12FN26 | 26d | 2d | COST [58000 h]; Doors Carpenter [32 h]; Helper [32 h] | 58,000 | SRD | TWR | F13 | FNS |
|  | 2 | **Stairs** |  | 2017-07-01 | 2017-07-23 |  |  |  |  |  |  |  |  |  |
| CNF13FN27 |  | Epoxy Primer Paint for Ceiling | 4d | 2017-07-01 | 2017-07-04 | ENCMSPR52, CNF13FN24, CNF12FN27 | 7d | 0d | COST [599 h]; Painter [32 h] | 599 | EPC | TWR | F13 | FNS |
| CNF13FN32 |  | Acrylic Emulsion Primer Paint & Stucco for Walls | 4d | 2017-07-05 | 2017-07-09 | CNF13FN27, CNF12FN32 | 7d | 0d | COST [3695.62 h]; Painter [32 h] | 3,695.62 | SRW | TWR | F13 | FNS |
| CNF13FN36 |  | Epoxy Primer Paint for Floor | 4d | 2017-07-10 | 2017-07-13 | ENCMSPR52, CNF13FN32 | 12d | 0d | COST [8129.16 h]; Painter [32 h] | 8,129.16 | EPF | TWR | F13 | FNS |
| CNF13FN80 |  | Stair Handrail | 4d | 2017-07-15 | 2017-07-18 | CNF13FN36 | 12d | 0d | COST [30000 h]; Helper [64 h]; Aluminium Labor [32 h] | 30,000 | B5-MTW | TWR | F13 | FNS |
| CNF13FN37 |  | Steel Doors | 4d | 2017-07-19 | 2017-07-23 | CNF13FN80, CNF13FN36, CNF13FN39, EN0PSPR31 SS+45d, CNF12FN37 | 12d | 2d | Steel Works Labor [32 h]; Helper [64 h]; COST [31730.8 h] | 31,730.81 | STD | TWR | F13 | FNS |

| ID | WBS | Activity | Type | Duration | Start | Finish | Predecessors | Total float | Free float | Resources | Cost | TYPE OF WORK L4 | ZONE L1 | FLOOR L2 | CATEGORY OF WORK L3 |
| --- | --- | --- | --- | --- | --- | --- | --- | --- | --- | --- | --- | --- | --- | --- | --- |
|  | 1.1 | **MEP** |  |  | 2016-11-29 | 2017-06-05 |  |  |  |  |  |  |  |  |  |
|  | 1.1 | **MEP 1st Fix** |  |  | 2016-11-29 | 2017-02-28 |  |  |  |  |  |  |  |  |  |
| CNF13CW91 |  | MEP Conduits for the slab |  | 5d | 2016-11-29 | 2016-12-06 | CNF13CW15 SS, CNF13CW15 FF | 0d |  | COST [214225 h]; ELECTRICIAN [800 h]; PLUMBER [400 h] | 214,225.1 | MEW | TWR | F13 | CON |
| CNF13FN19 |  | Walls Cutting & Chasing |  | 7d | 2017-02-21 | 2017-02-28 | CNF13FN10 SS+8d | 7d | 0d | COST [6151 h] | 6,151 | MEW | TWR | F13 | FNS |
| CNF13MP10 |  | Civil Clearance To Start 1st Fix | milestone | 0d | 2017-02-23 | 2017-02-23 | EN0PSRA67, EN0PSRA02, EN0PSRA70, EN0PSRA73, EN0PSRA41, EN0PSRA44, EN0PSRA49, EN0PSRA54, EN0PSRA58, EN0PSRA62, EN0PSRA76, EN0PSRA80, CNF13FN19 SS+2d | 7d | 0d |  |  | MEW | TWR | F13 | MEP |
| CNF13MP11 |  | Drainage Pipes ( In Walls) |  | 5d | 2017-02-23 | 2017-02-28 | CNF13MP10, CNF12MP11 | 7d | 0d | COST [15528 h]; PLUMBER [400 h] | 15,528 | MEW | TWR | F13 | MEP |
| CNF13MP12 |  | Water Supply Pipes ( In Walls) |  | 5d | 2017-02-23 | 2017-02-28 | CNF13MP10, CNF12MP12 | 7d | 0d | COST [26928.4 h]; PLUMBER [400 h] | 26,928.4 | MEW | TWR | F13 | MEP |
| CNF13MP13 |  | Sleeves,Conduites,Gi Box,DB Box In Wall |  | 5d | 2017-02-23 | 2017-02-28 | CNF13MP10, CNF12MP13 | 7d | 0d | COST [48200.5 h]; ELECTRICIAN [1200 h] | 48,200.5 | MEW | TWR | F13 | MEP |
| CNF13MP16 |  | MEP Clearance To Start Plaster | milestone | 0d | 2017-02-28 | 2017-02-28 | CNF13MP11, CNF13MP12, CNF13MP13 | 7d | 0d |  |  | MEW | TWR | F13 | MEP |
|  | 1.2 | **MEP 2nd Fix** |  |  | 2017-03-14 | 2017-04-02 |  |  |  |  |  |  |  |  |  |
| CNF13MP17 |  | Civil Clearance To Start 2nd Fix | milestone | 0d | 2017-03-14 | 2017-03-14 | CNF13FN21 | 11d | 0d |  |  | MEW | TWR | F13 | MEP |
| CNF13MP15 |  | Cable Tray / Trunking |  | 10d | 2017-03-15 | 2017-03-26 | CNF13MP17, CNF12MP15 | 12d | 1d | COST [153534 h]; ELECTRICIAN [160 h] | 153,534.2 | MEW | TWR | F13 | MEP |
| CNF13MP21 |  | Ducting Work Including Insulation |  | 10d | 2017-03-15 | 2017-03-26 | CNF12MP21, CNF13FN21 | 12d | 0d | COST [186091 h]; DUCTMAN [640 h] | 186,091.2 | MEW | TWR | F13 | MEP |
| CNF13MP22 |  | Installation of FCUs & Fans |  | 10d | 2017-03-15 | 2017-03-26 | CNF13MP21 FF, CNF12MP22, ENPRC1013 | 12d | 1d | COST [132302 h]; AC TECHNICIAN [480 h] | 132,302.1 | MEW | TWR | F13 | MEP |
| CNF13MP23 |  | Chilled Water Pipes (High L) |  | 10d | 2017-03-15 | 2017-03-26 | CNF12MP23, CNF13FN21 | 12d | 1d | COST [109870 h]; AC TECHNICIAN [640 h] | 109,870.1 | MEW | TWR | F13 | MEP |
| CNF13MP24 |  | LPG Piping |  | 10d | 2017-03-15 | 2017-03-26 | CNF12MP24, CNF13FN21, EN0PSPR11 FS+7d | 12d | 1d | COST [67153.8 h]; PIPE FITTER [320 h] | 67,153.8 | MEW | TWR | F13 | MEP |
| CNF13MP25 |  | Fire Fighting Pipes (Mains/Branches) |  | 10d | 2017-03-15 | 2017-03-26 | CNF12MP25, CNF13FN21 | 12d | 1d | COST [79182 h]; PIPE FITTER [480 h] | 79,182 | MEW | TWR | F13 | MEP |
| CNF13MP18 |  | Drainage Pipes (High L) |  | 10d | 2017-03-16 | 2017-03-27 | CNF13MP17 FS+1d, CNF12MP18 | 11d | 0d | COST [121568 h]; PLUMBER [640 h] | 121,568.3 | MEW | TWR | F13 | MEP |
| CNF13MP19 |  | Wires |  | 7d | 2017-03-16 | 2017-03-23 | CNF13MP13, CNF13MP17 FS+1d, CNF12MP19 | 14d | 3d | COST [153534 h]; ELECTRICIAN [1232 h] | 153,534.2 | MEW | TWR | F13 | MEP |
| CNF13MP20 |  | Water Supply Pipes (High L) |  | 10d | 2017-03-16 | 2017-03-27 | CNF13MP18 FF, CNF12MP20 | 11d | 0d | COST [141452 h]; PLUMBER [480 h] | 141,451.6 | MEW | TWR | F13 | MEP |
| CNF13MP26 |  | Acoustic Drainage Pipe Insulation |  | 8d | 2017-03-19 | 2017-03-27 | CNF13MP18 SS+2d, CNF12MP26 | 11d | 0d | COST [3763.1 h]; PLUMBER [256 h] | 3,763.1 | MEW | TWR | F13 | MEP |
| CNF13MP27 |  | Water Heaters Installation&Connection |  | 6d | 2017-03-19 | 2017-03-25 | CNF13MP20 SS+2d, ENPRC1002 | 13d | 2d | COST [558.9 h] | 558.9 | MEW | TWR | F13 | MEP |
| CNF13MP28 |  | MEP Clearance To Close Apartments Ceilings | milestone | 0d | 2017-03-27 | 2017-03-27 | CNF13MP23, CNF13MP20, CNF13MP19, CNF13MP25, CNF13MP22, CNF13MP18, CNF13MP24, CNF13MP26, CNF13MP27, CNF13MP15 | 11d | 0d |  |  | MEW | TWR | F13 | MEP |
| CNF13MP30 |  | MEP Clearance To Close Corridors Ceilings | milestone | 0d | 2017-04-02 | 2017-04-02 | CNF13MP28 FF+5d | 23d | 0d |  |  | MEW | TWR | F13 | MEP |

| ID | WBS | Activity | Type | Duration | Start | Finish | Predecessors | Total float | Free float | Resources | Cost | TYPE OF WORK L4 | ZONE L1 | FLOOR L2 | CATEGORY OF WORK L3 |
| --- | --- | --- | --- | --- | --- | --- | --- | --- | --- | --- | --- | --- | --- | --- | --- |
|  | 1.3 | **MEP 3rd Fix** |  |  | 2017-05-25 | 2017-06-05 |  |  |  |  |  |  |  |  |  |
| CNF13MP29 |  | Civil Clearance To Start Final Fix | milestone | 0d | 2017-05-25 | 2017-05-25 | CNF13FN43, CNF13MP30, CNF13MP28 | 45d | 0d |  |  | MEW | TWR | F13 | MEP |
| CNF13MP14 |  | Vertical Sprinkler Drops |  | 4d | 2017-05-27 | 2017-05-30 | CNF12MP14, CNF13MP29 | 49d | 5d | COST [4988.6 h]; PIPE FITTER [80 h] | 4,988.6 | MEW | TWR | F13 | MEP |
| CNF13MP31 |  | Hose Reel&Fire Extinguishers & Sprinklers |  | 4d | 2017-05-28 | 2017-05-31 | CNF12MP31, CNF13MP29 | 48d | 4d | COST [46832.8 h]; PIPE FITTER [80 h] | 46,832.8 | MEW | TWR | F13 | MEP |
| CNF13MP32 |  | Installation of DBS |  | 4d | 2017-05-28 | 2017-05-31 | CNF13MP29, CNF12MP32 | 44d | 0d | COST [9929.4 h]; ELECTRICIAN [64 h] | 9,929.4 | MEW | TWR | F13 | MEP |
| CNF13MP33 |  | Installation of Panels / SmDBS |  | 4d | 2017-05-28 | 2017-05-31 | CNF12MP33, CNF13MP32 FF, ENPRC1016 | 48d | 4d | COST [46476.1 h]; ELECTRICIAN [64 h] | 46,476.1 | MEW | TWR | F13 | MEP |
| CNF13MP34 |  | Installation of Fire Alarm Panel & Voice Alarm System |  | 4d | 2017-05-28 | 2017-05-31 | CNF13MP29, CNF12MP34, EN0PSPR40 FS+14d, ENPRC1016 | 48d | 4d | COST [20087.7 h]; ELECTRICIAN [80 h] | 20,087.7 | MEW | TWR | F13 | MEP |
| CNF13MP35 |  | Installation of Light Fitting & E.M Light |  | 4d | 2017-05-28 | 2017-05-31 | CNF13MP29, CNF12MP35, ENPRC1014, CNF13FN43 | 48d | 0d | COST [84000 h]; ELECTRICIAN [80 h] | 84,000 | LFX | TWR | F13 | MEP |
| CNF13MP36 |  | Installation of Wiring Accessories |  | 4d | 2017-05-28 | 2017-05-31 | CNF13MP35 FF, CNF12MP36 | 48d | 4d | COST [15564.6 h]; ELECTRICIAN [96 h] | 15,564.6 | MEW | TWR | F13 | MEP |
| CNF13MP37 |  | Installation of Grills&Diffusers |  | 4d | 2017-05-28 | 2017-05-31 | CNF13MP29, CNF12MP37 | 44d | 0d | COST [3325.4 h]; DUCTMAN [112 h] | 3,325.4 | MEW | TWR | F13 | MEP |
| CNF13MP38 |  | Installation of Telephone System |  | 4d | 2017-06-01 | 2017-06-05 | CNF13MP32, CNF12MP38 | 44d | 0d | COST [32690.3 h]; ELECTRICIAN [64 h] | 32,690.3 | MEW | TWR | F13 | MEP |
| CNF13MP39 |  | Installation of CCTV System |  | 4d | 2017-06-01 | 2017-06-05 | CNF13MP32, CNF12MP39, EN0PSPR44 FS+14d | 44d | 0d | COST [8707.3 h]; ELECTRICIAN [64 h] | 8,707.3 | MEW | TWR | F13 | MEP |
| CNF13MP40 |  | Thermostat Fixing |  | 4d | 2017-06-01 | 2017-06-05 | CNF13MP37, CNF12MP40 | 44d | 0d | COST [1381 h]; ELECTRICIAN [64 h] | 1,381 | MEW | TWR | F13 | MEP |
| CNF13MP41 |  | MEP Final Fix Clearance | milestone | 0d | 2017-06-05 | 2017-06-05 | CNF13MP39, CNF13MP36, CNF13MP37, CNF13MP40, CNF13MP38, CNF13MP35, CNF13MP31, CNF13MP34, CNF13MP33, CNF13MP32, CNF13MP14, CNF13FN44, CNF13FN91, CNF12MP41 | 60d | 12d |  |  | MEW | TWR | F13 | MEP |
|  | 14 | **14th Floor** |  |  | 2016-12-15 | 2017-10-18 |  |  |  |  |  |  |  |  |  |
|  | 1.5.1.1.2.3.21 | **Concrete** |  |  | 2016-12-15 | 2017-01-02 |  |  |  |  |  |  |  |  |  |
| CNF14CW10 |  | Slab Form Work |  | 5d | 2016-12-15 | 2016-12-20 | CNF13CW50 FF+1d, CNF13CW50 SS+1d | 0d |  | COST [130248 h]; Shutter Carpenter [1360 h]; Helper [680 h]; Form Work [2504 M2] | 130,247.5 | STR | TWR | F14 | CON |
| CNF14CW15 |  | Slab Rebar & Post Tension Tendons |  | 5d | 2016-12-18 | 2016-12-22 | ENCMSRA10, CNF14CW10 SS+1d, CNF14CW10 FF+2d | 0d |  | COST [307860 h]; Steel Fixer [1160 h]; Helper [600 h]; Steel Rebars [41200 Kg] | 307,860 | RFT | TWR | F14 | CON |
| CNF14CW90 |  | TECOM Steel Inspection prior to concrete pouring | milestone | 0d | 2016-12-22 | 2016-12-22 | CNF14CW15 FF, CNF14CW91 | 0d |  |  |  |  | TWR | F14 | CON |
| CNF14CW20 |  | Slab Casting |  | 2d | 2016-12-24 | 2016-12-25 | CNF13CW45, ENCMSRA50, CNF14CW90, CNF14CW15 | 0d |  | COST [280875 h] | 280,875.1 | RFC | TWR | F14 | CON |
| CNF14CW30 |  | Columns and Walls Rebar |  | 5d | 2016-12-25 | 2016-12-29 | CNF14CW20 SS+1d | 6d | 0d | COST [107359 h]; Steel Fixer [1080 h]; Helper [560 h]; Steel Rebars [53200 Kg] | 107,359 | RFT | TWR | F14 | CON |
| CNF14CW45 |  | PT Tensioning and Grouting |  | 5d | 2016-12-26 | 2016-12-31 | CNF14CW20 | 12d | 6d | COST |  |  | TWR | F14 | CON |
| CNF14CW35 |  | Columns and Walls Form Work |  | 4d | 2016-12-27 | 2016-12-31 | CNF14CW30 SS+1d, CNF14CW30 FF+1d | 6d | 0d | COST [62050 h]; Shutter Carpenter [608 h]; Helper [320 h]; Form Work [2504 M2] | 62,050 | STR | TWR | F14 | CON |
| CNF14CW50 |  | Columns Casting |  | 3d | 2016-12-29 | 2017-01-02 | CNF14CW35 SS+1d, CNF14CW35 FF+1d | 6d | 0d | COST [77489.5 h] | 77,489.5 | RFC | TWR | F14 | CON |

| ID | WBS | Activity | Duration | Start | Finish | Predecessors | Total float | Free float | Resources | Cost | TYPE OF WORK L4 | ZONE L1 | FLOOR L2 | CATEGORY OF WORK L3 |
| --- | --- | --- | --- | --- | --- | --- | --- | --- | --- | --- | --- | --- | --- | --- |
|  | 1 | **Finishes** |  | 2017-03-01 | 2017-10-18 |  |  |  |  |  |  |  |  |  |
|  | 1.5.2.2.1.1.1 | **General** |  | 2017-03-01 | 2017-09-20 |  |  |  |  |  |  |  |  |  |
| CNF14FN10 |  | Block Works | 15d | 2017-03-01 | 2017-03-18 | CNF17CW10, ENCMSPR51, CNF13FN10 | 1d | 0d | COST [389617 h]; Helper [1320 h]; Mason [2520 h]; Block [3733 M2] | 389,616.79 | B4-MAS | TWR | F14 | FNS |
| CNF14FN20 |  | Doors Sub Frames | 9d | 2017-03-11 | 2017-03-20 | CNF14FN10 SS+8d | 12d | 7d | COST [7164 h]; Sub-Frames [108 No] | 7,164 | B6-WDR | TWR | F14 | FNS |
| CNF14FN21 |  | Internal Walls Plaster Works | 12d | 2017-03-19 | 2017-04-01 | CNF14FN20 SS, CNF13FN21, CNF14MP16 | 5d | 0d | COST [121269 h]; Helper [672 h]; Mason [1344 h]; Plastering [3294 M2] | 121,268.81 | PLS | TWR | F14 | FNS |
| CNF14FN28 |  | Balconies Ceiling Plaster | 6d | 2017-04-02 | 2017-04-08 | CNF13FN28, CNF14FN21 | 28d | 0d | COST [33575.2 h]; Plastering [375 M2] | 33,575.25 | BCP | TWR | F14 | FNS |
| CNF14FN35 |  | Emulsion Paint for Balconies Ceiling | 3d | 2017-04-09 | 2017-04-11 | CNF13FN35, ENCMSPR57, CNF14FN28 | 28d | 0d | COST [5924 h]; Painter [96 h]; Paint [375 M2] | 5,924 | BLP | TWR | F14 | FNS |
| CNF14FN42 |  | Balconies Glazing & Aluminium Handrail | 15d | 2017-04-25 | 2017-05-11 | CNF13FN42, CNF14FN41 SS+2d, CNF14FN13, EN0PSRA14, EN0PSPR16 SS+90d | 24d | 0d | COST [210000 h]; Helper [120 h]; Aluminium Labor [120 h] | 210,000 | ALM | TWR | F14 | FNS |
| CNF14FN99 |  | Internal Signage | 3d | 2017-08-08 | 2017-08-10 | CNF14FN39, CNF13FN99 | 8d | 0d | COST [8483 h]; Signage Labor [96 h] | 8,483 | SGN | TWR | F14 | FNS |
| CNF14FN51 |  | Paint Final Coat | 3d | 2017-09-18 | 2017-09-20 | CNF14FN44, CNF14FN47, CNF14FN42, CNF14FN48, CNF14FN45, CNF14FN46, CNF13FN51 | 17d | 0d | COST [3000 h]; Painter [456 h]; Paint [3294 M2] | 3,000 | PFC | TWR | F14 | FNS |
|  | 1.5.2.2.1.1.2 | **Apartments** |  | 2017-04-02 | 2017-07-17 |  |  |  |  |  |  |  |  |  |
|  | 1.5.2.2.1.1.2.1 | **Dry Area** |  | 2017-04-02 | 2017-06-29 |  |  |  |  |  |  |  |  |  |
| CNF14FN29 |  | Wall Paint Primer & Stucco | 15d | 2017-04-02 | 2017-04-18 | ENCMSPR53, CNF14FN21 | 5d | 0d | COST [43043.6 h]; Painter [1080 h]; Paint [3294 M2] | 43,043.56 | PNT | TWR | F14 | FNS |
| CNF14FN41 |  | Aluminium Doors | 12d | 2017-04-02 | 2017-04-15 | CNF13FN41, CNF14FN21, EN0PSRA11, EN0PSPR13 SS+120d | 20d | 3d | Aluminium Labor [96 h]; Helper [192 h]; COST [470000 h] | 470,000 | ALM | TWR | F14 | FNS |
| CNF14FN38 |  | Gypsum Board for Ceiling | 12d | 2017-04-19 | 2017-05-03 | CNF14MP28, ENCMSPR54 FS+14d, CNF13FN38, CNF14FN29 | 5d | 0d | COST [156953 h]; False Ceiling Fixer [1056 h]; Gypsum Board [1300 M2] | 156,952.61 | GYP | TWR | F14 | FNS |
| CNF14FN31 |  | Paint for Ceiling | 12d | 2017-05-04 | 2017-05-17 | CNF13FN31, CNF14FN38 | 8d | 3d | COST [29459 h]; Painter [288 h]; Paint [1300 M2] | 29,459 | CPN | TWR | F14 | FNS |
| CNF14FN40 |  | Ceramic for Floors | 13d | 2017-05-04 | 2017-05-18 | CNF14FN41, CNF14FN38, CNF13FN40, EN0PCPR14 SS+120d | 5d | 0d | COST [135350 h]; Helper [208 h]; Mason [312 h]; Apartment Tiles [1300 M2] | 135,350.21 | TAP | TWR | F14 | FNS |
| CNF14FN90 |  | Door Frames | 7d | 2017-05-20 | 2017-05-27 | CNF13FN90, CNF14FN13, CNF14FN40 | 8d | 0d | Helper [112 h]; COST [107500 h]; Doors Carpenter [112 h] | 107,500 | DRI | TWR | F14 | FNS |
| CNF14FN43 |  | Door Shutters | 12d | 2017-05-28 | 2017-06-10 | CNF14FN90, CNF14FN40, CNF14FN13, CNF14FN41, CNF13FN43, EN0PSPR18 SS+120d | 8d | 0d | Helper [192 h]; COST [200000 h]; Doors Carpenter [192 h] | 200,000 | APD | TWR | F14 | FNS |
| CNF14FN44 |  | Door Ironmongeries | 10d | 2017-05-28 | 2017-06-07 | CNF13FN44, EN0PSPR202 SS+45d, CNF14FN43 SS | 26d | 5d | Finishings Carpenter [80 h]; Helper [80 h]; COST [28500 h] | 28,500 | DRI | TWR | F14 | FNS |
| CNF14FN91 |  | Thresholds | 10d | 2017-05-28 | 2017-06-07 | CNF13FN91, CNF14FN43 SS, EN0PCPR12 SS+90d | 26d | 5d | Finishings Carpenter [160 h]; Helper [160 h]; COST [24887.2 h] | 24,887.25 | THR | TWR | F14 | FNS |
| CNF14FN45 |  | Wooden Wardrobes | 11d | 2017-06-15 | 2017-06-29 | CNF13FN45, CNF14FN43, CNF14FN40, EN0PSPR38 SS+120d | 8d | 0d | Wooden Wardrobes Carpenter [88 h]; Helper [88 h]; COST [87100 h] | 87,100 | WRD | TWR | F14 | FNS |
|  | 1.5.2.2.1.1.2.2 | **Wet Area** |  | 2017-04-02 | 2017-07-17 |  |  |  |  |  |  |  |  |  |
| CNF14FN12 |  | Ceramic for Walls | 12d | 2017-04-02 | 2017-04-15 | CNF13FN12, CNF14FN21, EN0PCRA17, EN0PCPR15 SS+120d, EN0PCPR90 SS+90d | 22d | 0d | COST [164439 h]; Helper [384 h]; Mason [768 h]; Wet Area Tiles [1700 M2] | 164,438.55 | WLW | TWR | F14 | FNS |
| CNF14FN13 |  | Ceramic For Floors in Balconies | 6d | 2017-04-12 | 2017-04-18 | CNF14FN35, EN0PCPR13 SS+90d | 28d | 4d | COST [35088.2 h]; Helper [48 h]; Mason [96 h]; Balconies Floor Tiles [375 M2] | 35,088.15 | FLB | TWR | F14 | FNS |
| CNF14FN23 |  | False Ceiling | 15d | 2017-04-16 | 2017-05-03 | CNF14MP28, ENCMSPR55, CNF14FN12 | 22d | 0d | COST [46376.4 h]; False Ceiling Fixer [600 h]; False Ceiling [695 M2] | 46,376.44 | CWT | TWR | F14 | FNS |
| CNF14FN33 |  | Bathtubs | 5d | 2017-04-16 | 2017-04-20 | CNF14FN12, EN0PSPR204 SS+45d, CNF13FN33 | 36d | 10d | COST [35625 h] | 35,625 | bth | TWR | F14 | FNS |
| CNF14FN25 |  | Water Proofing | 12d | 2017-05-04 | 2017-05-17 | CNF14FN33 SS+1d, ENCMSPR56, CNF14FN23, CNF13FN25 | 22d | 0d | COST [102613 h]; Water Proofing [553 M2] | 102,613 | WPR | TWR | F14 | FNS |
| CNF14FN34 |  | Ceramic for Floor | 12d | 2017-05-18 | 2017-05-31 | CNF14FN33, CNF14FN25, CNF13FN34, CNSUB1070, EN0PCPR15 SS+120d, EN0PCPR90 SS+120d | 22d | 3d | COST [27945.1 h]; Helper [96 h]; Mason [96 h]; Wet Area Tiles [178 M2] | 27,945.08 | FLW | TWR | F14 | FNS |
| CNF14FN48 |  | Vanity Counter | 9d | 2017-06-11 | 2017-06-20 | CNF14FN13, CNF14FN43, CNF13FN48, EN0PSPR52 SS+75d | 14d | 1d | COST [86000 h]; Helper [216 h]; Vanity Counters Labor [216 h] | 86,000 | VNC | TWR | F14 | FNS |
| CNF14FN46 |  | Sanitary Ware&Accessories | 6d | 2017-06-12 | 2017-06-18 | CNF14FN48 SS, CNF14FN43, CNF14FN13, CNF14FN33, CNF13FN46, ENPRC1005 | 21d | 6d | COST [100588 h] | 100,588.24 | SWR | TWR | F14 | FNS |
| CNF14FN47 |  | Kitchen Cabinet | 11d | 2017-06-15 | 2017-06-29 | CNF14FN13, CNF14FN43, CNF13FN47, EN0PSRA36, EN0PSPR37 SS+120d | 4d | 0d | COST [93417 h]; Helper [88 h]; Kitchen Cabinet Carpenter [88 h] | 93,417 | KCB | TWR | F14 | FNS |
| CNF14FN49 |  | Glass Enclosure | 7d | 2017-07-03 | 2017-07-10 | CNF13FN49, CNF14FN46, EN0PSPR15 SS+90d | 11d | 0d | COST [50000 h]; Helper [56 h]; Glass Enclosure Labor [56 h] | 50,000 | ALM | TWR | F14 | FNS |
| CNF14FN50 |  | Mirrors & Toilet Accessories | 6d | 2017-07-11 | 2017-07-17 | CNF13FN50, CNF14FN46, CNF14FN49, EN0PSPR23 SS+60d | 15d | 1d | COST [86000 h]; Helper [96 h]; Mirrors Labor [48 h] | 86,000 | MRA | TWR | F14 | FNS |

| ID | WBS | Activity | Type | Duration | Start | Finish | Predecessors | Total float | Free float | Resources | Cost | TYPE OF WORK L4 | ZONE L1 | FLOOR L2 | CATEGORY OF WORK L3 |
| --- | --- | --- | --- | --- | --- | --- | --- | --- | --- | --- | --- | --- | --- | --- | --- |
|  | 1.5.2.2.1.1.3 | **Lift Lobby & Corridor** |  |  | 2017-04-20 | 2017-10-18 |  |  |  |  |  |  |  |  |  |
| CNF14FN11 |  | Ceiling Finishes |  | 12d | 2017-04-20 | 2017-05-04 | CNF13FN11, EN0PSPR200 SS+75d, CNF14MP30, EN0PSNM11 FS+14d | 20d | 0d | COST [46000 h]; False Ceiling Fixer [192 h] | 46,000 | IDC | TWR | F14 | FNS |
| CNF14FN30 |  | Wall Finishes |  | 12d | 2017-05-06 | 2017-05-18 | CNF13FN30, EN0PSPR201 SS+75d, CNF14FN21, CNF14FN11, EN0PSNM11 FS+14d | 20d | 0d | COST [59722 h]; Helper [192 h]; Mason [288 h] | 59,722 | IDW | TWR | F14 | FNS |
| CNF14FN39 |  | Floor Finishes |  | 10d | 2017-05-20 | 2017-05-30 | CNF13FN39, CNF14FN11, CNF14FN30, EN0PSPR30 SS+75d, EN0PSNM11 FS+14d | 25d | 5d | COST [52113 h]; Helper [80 h]; Mason [80 h] | 52,113 | IDF | TWR | F14 | FNS |
| CNF14FN93 |  | Carpet Laying |  | 3d | 2017-10-16 | 2017-10-18 | CNF13FN93, CNF14FN39, ATDCD1030 | 4d | 0d | COST [9109 h] | 9,109 | IDR | TWR | F14 | FNS |
|  | 1.5.2.2.1.1.4 | **Common Areas/Service Rooms** |  |  | 2017-06-14 | 2017-07-30 |  |  |  |  |  |  |  |  |  |
|  | 1 | **Service Rooms** |  |  | 2017-06-14 | 2017-07-11 |  |  |  |  |  |  |  |  |  |
| CNF14FN17 |  | Epoxy Primer Paint for Ceiling |  | 6d | 2017-06-14 | 2017-06-20 | CNF14FN31, ENCMSPR52, CNF13FN17 | 5d | 0d | COST [3833.81 h]; Painter [48 h] | 3,833.81 | EPC | TWR | F14 | FNS |
| CNF14FN18 |  | Acrylic Emulsion Primer Paint & Stucco for Wall |  | 6d | 2017-06-21 | 2017-06-29 | CNF14FN17 | 5d | 0d | COST [3248.62 h]; Painter [48 h] | 3,248.62 | SRW | TWR | F14 | FNS |
| CNF14FN24 |  | Epoxy Primer Paint for Floor |  | 6d | 2017-07-01 | 2017-07-06 | ENCMSPR52, CNF14FN18 | 5d | 0d | COST [2379.32 h]; Painter [48 h] | 2,379.32 | EPF | TWR | F14 | FNS |
| CNF14FN26 |  | Timber Doors |  | 4d | 2017-07-08 | 2017-07-11 | CNF14FN24, CNF13FN26 | 24d | 0d | COST [58000 h]; Doors Carpenter [32 h]; Helper [32 h] | 58,000 | SRD | TWR | F14 | FNS |
|  | 2 | **Stairs** |  |  | 2017-07-08 | 2017-07-30 |  |  |  |  |  |  |  |  |  |
| CNF14FN27 |  | Epoxy Primer Paint for Ceiling |  | 4d | 2017-07-08 | 2017-07-11 | ENCMSPR52, CNF14FN24, CNF13FN27 | 5d | 0d | COST [599 h]; Painter [32 h] | 599 | EPC | TWR | F14 | FNS |
| CNF14FN32 |  | Acrylic Emulsion Primer Paint & Stucco for Walls |  | 4d | 2017-07-12 | 2017-07-16 | CNF14FN27, CNF13FN32 | 5d | 0d | COST [3695.62 h]; Painter [32 h] | 3,695.62 | SRW | TWR | F14 | FNS |
| CNF14FN36 |  | Epoxy Primer Paint for Floor |  | 4d | 2017-07-17 | 2017-07-20 | ENCMSPR52, CNF14FN32 | 10d | 0d | COST [8129.16 h]; Painter [32 h] | 8,129.16 | EPF | TWR | F14 | FNS |
| CNF14FN80 |  | Stair Handrail |  | 4d | 2017-07-22 | 2017-07-25 | CNF14FN36 | 10d | 0d | COST [30000 h]; Helper [64 h]; Aluminium Labor [32 h] | 30,000 | B5-MTW | TWR | F14 | FNS |
| CNF14FN37 |  | Steel Doors |  | 4d | 2017-07-26 | 2017-07-30 | CNF14FN80, CNF14FN36, EN0PSPR31 SS+45d, CNF13FN37 | 10d | 0d | Steel Works Labor [32 h]; Helper [64 h]; COST [31730.8 h] | 31,730.81 | STD | TWR | F14 | FNS |
|  | 1.1 | **MEP** |  |  | 2016-12-18 | 2017-06-19 |  |  |  |  |  |  |  |  |  |
|  | 1.1 | **MEP 1st Fix** |  |  | 2016-12-18 | 2017-03-18 |  |  |  |  |  |  |  |  |  |
| CNF14CW91 |  | MEP Conduits for the slab |  | 5d | 2016-12-18 | 2016-12-22 | CNF14CW15 SS, CNF14CW15 FF | 0d |  | COST [214225 h]; ELECTRICIAN [800 h]; PLUMBER [320 h] | 214,225.1 | MEW | TWR | F14 | CON |
| CNF14FN19 |  | Walls Cutting & Chasing |  | 7d | 2017-03-11 | 2017-03-18 | CNF14FN10 SS+8d | 5d | 0d | COST [6151 h] | 6,151 | MEW | TWR | F14 | FNS |
| CNF14MP10 |  | Civil Clearance To Start 1st Fix | milestone | 0d | 2017-03-13 | 2017-03-13 | EN0PSRA67, EN0PSRA02, EN0PSRA70, EN0PSRA73, EN0PSRA41, EN0PSRA44, EN0PSRA49, EN0PSRA54, EN0PSRA58, EN0PSRA62, EN0PSRA76, EN0PSRA80, CNF14FN19 SS+2d | 5d | 0d |  |  | MEW | TWR | F14 | MEP |
| CNF14MP11 |  | Drainage Pipes ( In Walls) |  | 5d | 2017-03-13 | 2017-03-18 | CNF14MP10, CNF13MP11 | 5d | 0d | COST [15528 h]; PLUMBER [400 h] | 15,528 | MEW | TWR | F14 | MEP |
| CNF14MP12 |  | Water Supply Pipes ( In Walls) |  | 5d | 2017-03-13 | 2017-03-18 | CNF14MP10, CNF13MP12 | 5d | 0d | COST [26928.4 h]; PLUMBER [400 h] | 26,928.4 | MEW | TWR | F14 | MEP |
| CNF14MP13 |  | Sleeves,Conduites,Gi Box,DB Box In Wall |  | 5d | 2017-03-13 | 2017-03-18 | CNF14MP10, CNF13MP13 | 5d | 0d | COST [48200.5 h]; ELECTRICIAN [1440 h] | 48,200.5 | MEW | TWR | F14 | MEP |
| CNF14MP16 |  | MEP Clearance To Start Plaster | milestone | 0d | 2017-03-18 | 2017-03-18 | CNF14MP11, CNF14MP12, CNF14MP13 | 5d | 0d |  |  | MEW | TWR | F14 | MEP |

| ID | WBS | Activity | Type | Duration | Start | Finish | Predecessors | Total float | Free float | Resources | Cost | TYPE OF WORK L4 | ZONE L1 | FLOOR L2 | CATEGORY OF WORK L3 |
| --- | --- | --- | --- | --- | --- | --- | --- | --- | --- | --- | --- | --- | --- | --- | --- |
|  | 1.2 | **MEP 2nd Fix** |  |  | 2017-04-01 | 2017-04-19 |  |  |  |  |  |  |  |  |  |
| CNF14MP17 |  | Civil Clearance To Start 2nd Fix | milestone | 0d | 2017-04-01 | 2017-04-01 | CNF14FN21 | 9d | 0d |  |  | MEW | TWR | F14 | MEP |
| CNF14MP15 |  | Cable Tray / Trunking |  | 10d | 2017-04-02 | 2017-04-12 | CNF14MP17, CNF13MP15 | 10d | 1d | COST [153534 h]; ELECTRICIAN [240 h] | 153,534.2 | MEW | TWR | F14 | MEP |
| CNF14MP21 |  | Ducting Work Including Insulation |  | 10d | 2017-04-02 | 2017-04-12 | CNF13MP21, CNF14FN21 | 10d | 0d | COST [186091 h]; DUCTMAN [160 h] | 186,091.2 | MEW | TWR | F14 | MEP |
| CNF14MP22 |  | Installation of FCUs & Fans |  | 10d | 2017-04-02 | 2017-04-12 | CNF14MP21 FF, CNF13MP22, ENPRC1013 | 10d | 1d | COST [132302 h]; AC TECHNICIAN [320 h] | 132,302.1 | MEW | TWR | F14 | MEP |
| CNF14MP23 |  | Chilled Water Pipes (High L) |  | 10d | 2017-04-02 | 2017-04-12 | CNF13MP23, CNF14FN21 | 10d | 1d | COST [109870 h]; AC TECHNICIAN [400 h] | 109,870.1 | MEW | TWR | F14 | MEP |
| CNF14MP24 |  | LPG Piping |  | 10d | 2017-04-02 | 2017-04-12 | CNF13MP24, CNF14FN21, EN0PSPR11 FS+7d | 10d | 1d | COST [67153.8 h]; PIPE FITTER [80 h] | 67,153.8 | MEW | TWR | F14 | MEP |
| CNF14MP25 |  | Fire Fighting Pipes (Mains/Branches) |  | 10d | 2017-04-02 | 2017-04-12 | CNF13MP25, CNF14FN21 | 10d | 1d | COST [79182 h]; PIPE FITTER [80 h] | 79,182 | MEW | TWR | F14 | MEP |
| CNF14MP18 |  | Drainage Pipes (High L) |  | 10d | 2017-04-03 | 2017-04-13 | CNF14MP17 FS+1d, CNF13MP18 | 9d | 0d | COST [121568 h]; PLUMBER [360 h] | 121,568.3 | MEW | TWR | F14 | MEP |
| CNF14MP19 |  | Wires |  | 7d | 2017-04-03 | 2017-04-10 | CNF14MP13, CNF14MP17 FS+1d, CNF13MP19 | 12d | 3d | COST [153534 h]; ELECTRICIAN [280 h] | 153,534.2 | MEW | TWR | F14 | MEP |
| CNF14MP20 |  | Water Supply Pipes (High L) |  | 10d | 2017-04-03 | 2017-04-13 | CNF14MP18 FF, CNF13MP20 | 9d | 0d | COST [141452 h]; PLUMBER [280 h] | 141,451.6 | MEW | TWR | F14 | MEP |
| CNF14MP26 |  | Acoustic Drainage Pipe Insulation |  | 8d | 2017-04-05 | 2017-04-13 | CNF14MP18 SS+2d, CNF13MP26 | 9d | 0d | COST [3763.1 h]; PLUMBER [256 h] | 3,763.1 | MEW | TWR | F14 | MEP |
| CNF14MP27 |  | Water Heaters Installation&Connection |  | 6d | 2017-04-05 | 2017-04-11 | CNF14MP20 SS+2d, ENPRC1002 | 11d | 2d | COST [558.9 h] | 558.9 | MEW | TWR | F14 | MEP |
| CNF14MP28 |  | MEP Clearance To Close Apartments Ceilings | milestone | 0d | 2017-04-13 | 2017-04-13 | CNF14MP23, CNF14MP20, CNF14MP19, CNF14MP25, CNF14MP22, CNF14MP18, CNF14MP24, CNF14MP26, CNF14MP27, CNF14MP15 | 9d | 0d |  |  | MEW | TWR | F14 | MEP |
| CNF14MP30 |  | MEP Clearance To Close Corridors Ceilings | milestone | 0d | 2017-04-19 | 2017-04-19 | CNF14MP28 FF+5d | 20d | 0d |  |  | MEW | TWR | F14 | MEP |
|  | 1.3 | **MEP 3rd Fix** |  |  | 2017-06-10 | 2017-06-19 |  |  |  |  |  |  |  |  |  |
| CNF14MP29 |  | Civil Clearance To Start Final Fix | milestone | 0d | 2017-06-10 | 2017-06-10 | CNF14FN43, CNF14MP30, CNF14MP28 | 36d | 0d |  |  | MEW | TWR | F14 | MEP |
| CNF14MP14 |  | Vertical Sprinkler Drops |  | 4d | 2017-06-11 | 2017-06-14 | CNF13MP14, CNF14MP29 | 40d | 4d | COST [4988.6 h]; PIPE FITTER [128 h] | 4,988.6 | MEW | TWR | F14 | MEP |
| CNF14MP31 |  | Hose Reel&Fire Extinguishers & Sprinklers |  | 4d | 2017-06-11 | 2017-06-14 | CNF13MP31, CNF14MP29 | 40d | 4d | COST [46832.8 h]; PIPE FITTER [128 h] | 46,832.8 | MEW | TWR | F14 | MEP |
| CNF14MP32 |  | Installation of DBS |  | 4d | 2017-06-11 | 2017-06-14 | CNF14MP29, CNF13MP32 | 36d | 0d | COST [9929.4 h]; ELECTRICIAN [64 h] | 9,929.4 | MEW | TWR | F14 | MEP |
| CNF14MP33 |  | Installation of Panels / SmDBS |  | 4d | 2017-06-11 | 2017-06-14 | CNF13MP33, CNF14MP32 FF, ENPRC1016 | 40d | 4d | COST [46476.1 h]; ELECTRICIAN [64 h] | 46,476.1 | MEW | TWR | F14 | MEP |
| CNF14MP34 |  | Installation of Fire Alarm Panel & Voice Alarm System |  | 4d | 2017-06-11 | 2017-06-14 | CNF14MP29, CNF13MP34, EN0PSPR40 FS+14d, ENPRC1016 | 40d | 4d | COST [20087.7 h]; ELECTRICIAN [160 h] | 20,087.7 | MEW | TWR | F14 | MEP |
| CNF14MP35 |  | Installation of Light Fitting & E.M Light |  | 4d | 2017-06-11 | 2017-06-14 | CNF14MP29, CNF13MP35, ENPRC1014, CNF14FN43 | 40d | 0d | COST [84000 h]; ELECTRICIAN [160 h] | 84,000 | LFX | TWR | F14 | MEP |
| CNF14MP36 |  | Installation of Wiring Accessories |  | 4d | 2017-06-11 | 2017-06-14 | CNF14MP35 FF, CNF13MP36 | 40d | 4d | COST [15564.6 h]; ELECTRICIAN [96 h] | 15,564.6 | MEW | TWR | F14 | MEP |
| CNF14MP37 |  | Installation of Grills&Diffusers |  | 4d | 2017-06-11 | 2017-06-14 | CNF14MP29, CNF13MP37 | 36d | 0d | COST [3325.4 h]; DUCTMAN [192 h] | 3,325.4 | MEW | TWR | F14 | MEP |
| CNF14MP38 |  | Installation of Telephone System |  | 4d | 2017-06-15 | 2017-06-19 | CNF14MP32, CNF13MP38 | 36d | 0d | COST [32690.3 h]; ELECTRICIAN [64 h] | 32,690.3 | MEW | TWR | F14 | MEP |
| CNF14MP39 |  | Installation of CCTV System |  | 4d | 2017-06-15 | 2017-06-19 | CNF14MP32, CNF13MP39, EN0PSPR44 FS+14d | 36d | 0d | COST [8707.3 h]; ELECTRICIAN [64 h] | 8,707.3 | MEW | TWR | F14 | MEP |
| CNF14MP40 |  | Thermostat Fixing |  | 4d | 2017-06-15 | 2017-06-19 | CNF14MP37, CNF13MP40 | 36d | 0d | COST [1381 h]; ELECTRICIAN [64 h] | 1,381 | MEW | TWR | F14 | MEP |
| CNF14MP41 |  | MEP Final Fix Clearance | milestone | 0d | 2017-06-19 | 2017-06-19 | CNF14MP39, CNF14MP36, CNF14MP37, CNF14MP40, CNF14MP38, CNF14MP35, CNF14MP31, CNF14MP34, CNF14MP33, CNF14MP32, CNF14MP14, CNF14FN44, CNF14FN91, CNF13MP41 | 48d | 13d |  |  | MEW | TWR | F14 | MEP |

| ID | WBS | Activity | Type | Duration | Start | Finish | Predecessors | Total float | Free float | Resources | Cost | TYPE OF WORK L4 | ZONE L1 | FLOOR L2 | CATEGORY OF WORK L3 |
| --- | --- | --- | --- | --- | --- | --- | --- | --- | --- | --- | --- | --- | --- | --- | --- |
|  | 15 | **15th Floor** |  |  | 2016-12-31 | 2017-10-22 |  |  |  |  |  |  |  |  |  |
|  | 1.5.1.1.2.3.21 | **Concrete** |  |  | 2016-12-31 | 2017-01-17 |  |  |  |  |  |  |  |  |  |
| CNF15CW10 |  | Slab Form Work |  | 5d | 2016-12-31 | 2017-01-05 | CNF14CW50 FF+1d, CNF14CW50 SS+1d | 6d | 0d | COST [130248 h]; Shutter Carpenter [1360 h]; Helper [680 h]; Form Work [2504 M2] | 130,247.5 | STR | TWR | F15 | CON |
| CNF15CW15 |  | Slab Rebar & Post Tension Tendons |  | 5d | 2017-01-03 | 2017-01-08 | ENCMSRA10, CNF15CW10 SS+1d, CNF15CW10 FF+2d | 6d | 0d | COST [307860 h]; Steel Fixer [1160 h]; Helper [600 h]; Steel Rebars [41200 Kg] | 307,860 | RFT | TWR | F15 | CON |
| CNF15CW90 |  | TECOM Steel Inspection prior to concrete pouring | milestone | 0d | 2017-01-08 | 2017-01-08 | CNF15CW15 FF, CNF15CW91 | 6d | 0d |  |  |  | TWR | F15 | CON |
| CNF15CW20 |  | Slab Casting |  | 2d | 2017-01-09 | 2017-01-10 | CNF14CW45, ENCMSRA50, CNF15CW90, CNF15CW15 | 6d | 0d | COST [280875 h] | 280,875.1 | RFC | TWR | F15 | CON |
| CNF15CW30 |  | Columns and Walls Rebar |  | 5d | 2017-01-10 | 2017-01-15 | CNF15CW20 SS+1d | 6d | 0d | COST [107359 h]; Steel Fixer [1080 h]; Helper [560 h]; Steel Rebars [53200 Kg] | 107,359 | RFT | TWR | F15 | CON |
| CNF15CW45 |  | PT Tensioning and Grouting |  | 5d | 2017-01-11 | 2017-01-16 | CNF15CW20 | 12d | 6d | COST |  |  | TWR | F15 | CON |
| CNF15CW35 |  | Columns and Walls Form Work |  | 4d | 2017-01-12 | 2017-01-16 | CNF15CW30 SS+1d, CNF15CW30 FF+1d | 6d | 0d | COST [62050 h]; Shutter Carpenter [608 h]; Helper [320 h]; Form Work [2504 M2] | 62,050 | STR | TWR | F15 | CON |
| CNF15CW50 |  | Columns Casting |  | 3d | 2017-01-15 | 2017-01-17 | CNF15CW35 SS+1d, CNF15CW35 FF+1d | 6d | 0d | COST [77489.5 h] | 77,489.5 | RFC | TWR | F15 | CON |
|  | 1 | **Finishes** |  |  | 2017-03-19 | 2017-10-22 |  |  |  |  |  |  |  |  |  |
|  | 1.5.2.2.1.1.1 | **General** |  |  | 2017-03-19 | 2017-09-24 |  |  |  |  |  |  |  |  |  |
| CNF15FN10 |  | Block Works |  | 15d | 2017-03-19 | 2017-04-04 | CNF18CW10, ENCMSPR51, CNF14FN10 | 1d | 0d | COST [389617 h]; Helper [1320 h]; Mason [2520 h]; Block [3733 M2] | 389,616.79 | B4-MAS | TWR | F15 | FNS |
| CNF15FN20 |  | Doors Sub Frames |  | 9d | 2017-03-28 | 2017-04-06 | CNF15FN10 SS+8d | 10d | 7d | COST [7164 h]; Sub-Frames [108 No] | 7,164 | B6-WDR | TWR | F15 | FNS |
| CNF15FN21 |  | Internal Walls Plaster Works |  | 12d | 2017-04-05 | 2017-04-18 | CNF15FN20 SS, CNF14FN21, CNF15MP16 | 3d | 0d | COST [121269 h]; Helper [672 h]; Mason [1344 h]; Plastering [3294 M2] | 121,268.81 | PLS | TWR | F15 | FNS |
| CNF15FN28 |  | Balconies Ceiling Plaster |  | 6d | 2017-04-19 | 2017-04-26 | CNF14FN28, CNF15FN21 | 28d | 0d | COST [33575.2 h]; Plastering [375 M2] | 33,575.25 | BCP | TWR | F15 | FNS |
| CNF15FN35 |  | Emulsion Paint for Balconies Ceiling |  | 3d | 2017-04-27 | 2017-04-30 | CNF14FN35, ENCMSPR57, CNF15FN28 | 28d | 0d | COST [5924 h]; Painter [96 h]; Paint [375 M2] | 5,924 | BLP | TWR | F15 | FNS |
| CNF15FN42 |  | Balconies Glazing & Aluminium Handrail |  | 15d | 2017-05-13 | 2017-05-29 | CNF14FN42, CNF15FN41 SS+2d, CNF15FN13, EN0PSRA14, EN0PSPR16 SS+90d | 24d | 0d | COST [210000 h]; Helper [120 h]; Aluminium Labor [120 h] | 210,000 | ALM | TWR | F15 | FNS |
| CNF15FN99 |  | Internal Signage |  | 3d | 2017-08-12 | 2017-08-14 | CNF15FN39, CNF14FN99 | 8d | 0d | COST [8811 h]; Signage Labor [96 h] | 8,811 | SGN | TWR | F15 | FNS |
| CNF15FN51 |  | Paint Final Coat |  | 3d | 2017-09-21 | 2017-09-24 | CNF15FN44, CNF15FN47, CNF15FN42, CNF15FN48, CNF15FN45, CNF15FN46, CNF14FN51 | 17d | 0d | COST [3000 h]; Painter [456 h]; Paint [3294 M2] | 3,000 | PFC | TWR | F15 | FNS |
|  | 1.5.2.2.1.1.2 | **Apartments** |  |  | 2017-04-19 | 2017-07-25 |  |  |  |  |  |  |  |  |  |
|  | 1.5.2.2.1.1.2.1 | **Dry Area** |  |  | 2017-04-19 | 2017-07-12 |  |  |  |  |  |  |  |  |  |
| CNF15FN29 |  | Wall Paint Primer & Stucco |  | 15d | 2017-04-19 | 2017-05-07 | ENCMSPR53, CNF15FN21 | 3d | 0d | COST [43043.6 h]; Painter [1080 h]; Paint [3294 M2] | 43,043.56 | PNT | TWR | F15 | FNS |
| CNF15FN41 |  | Aluminium Doors |  | 12d | 2017-04-19 | 2017-05-03 | CNF14FN41, CNF15FN21, EN0PSRA11, EN0PSPR13 SS+120d | 18d | 2d | Aluminium Labor [96 h]; Helper [192 h]; COST [470000 h] | 470,000 | ALM | TWR | F15 | FNS |
| CNF15FN38 |  | Gypsum Board for Ceiling |  | 12d | 2017-05-08 | 2017-05-21 | CNF15MP28, ENCMSPR54 FS+14d, CNF14FN38, CNF15FN29 | 3d | 0d | COST [156953 h]; False Ceiling Fixer [1056 h]; Gypsum Board [1300 M2] | 156,952.61 | GYP | TWR | F15 | FNS |
| CNF15FN31 |  | Paint for Ceiling |  | 12d | 2017-05-22 | 2017-06-04 | CNF14FN31, CNF15FN38 | 5d | 0d | COST [29459 h]; Painter [288 h]; Paint [1300 M2] | 29,459 | CPN | TWR | F15 | FNS |
| CNF15FN40 |  | Ceramic for Floors |  | 13d | 2017-05-22 | 2017-06-05 | CNF15FN41, CNF15FN38, CNF14FN40, EN0PCPR14 SS+120d | 3d | 0d | COST [135350 h]; Helper [208 h]; Mason [312 h]; Apartment Tiles [1300 M2] | 135,350.21 | TAP | TWR | F15 | FNS |
| CNF15FN90 |  | Door Frames |  | 7d | 2017-06-06 | 2017-06-13 | CNF14FN90, CNF15FN13, CNF15FN40 | 6d | 0d | Helper [112 h]; COST [107500 h]; Doors Carpenter [112 h] | 107,500 | DRI | TWR | F15 | FNS |
| CNF15FN43 |  | Door Shutters |  | 10d | 2017-06-14 | 2017-06-25 | CNF15FN90, CNF15FN40, CNF15FN13, CNF15FN41, CNF14FN43, EN0PSPR18 SS+120d | 6d | 0d | Helper [160 h]; COST [200000 h]; Doors Carpenter [160 h] | 200,000 | APD | TWR | F15 | FNS |
| CNF15FN44 |  | Door Ironmongeries |  | 10d | 2017-06-14 | 2017-06-25 | CNF14FN44, EN0PSPR202 SS+45d, CNF15FN43 SS | 21d | 2d | Finishings Carpenter [80 h]; Helper [80 h]; COST [28500 h] | 28,500 | DRI | TWR | F15 | FNS |
| CNF15FN91 |  | Thresholds |  | 10d | 2017-06-14 | 2017-06-25 | CNF14FN91, CNF15FN43 SS, EN0PCPR12 SS+90d | 21d | 2d | Finishings Carpenter [160 h]; Helper [160 h]; COST [24887.2 h] | 24,887.25 | THR | TWR | F15 | FNS |
| CNF15FN45 |  | Wooden Wardrobes |  | 11d | 2017-07-01 | 2017-07-12 | CNF14FN45, CNF15FN43, CNF15FN40, EN0PSPR38 SS+120d | 8d | 0d | Wooden Wardrobes Carpenter [88 h]; Helper [88 h]; COST [87100 h] | 87,100 | WRD | TWR | F15 | FNS |

| ID | WBS | Activity | Duration | Start | Finish | Predecessors | Total float | Free float | Resources | Cost | TYPE OF WORK L4 | ZONE L1 | FLOOR L2 | CATEGORY OF WORK L3 |
| --- | --- | --- | --- | --- | --- | --- | --- | --- | --- | --- | --- | --- | --- | --- |
|  | 1.5.2.2.1.1.2.2 | **Wet Area** |  | 2017-04-19 | 2017-07-25 |  |  |  |  |  |  |  |  |  |
| CNF15FN12 |  | Ceramic for Walls | 12d | 2017-04-19 | 2017-05-03 | CNF14FN12, CNF15FN21, EN0PCRA17, EN0PCPR15 SS+120d, EN0PCPR90 SS+120d | 19d | 0d | COST [164439 h]; Helper [384 h]; Mason [768 h]; Wet Area Tiles [1700 M2] | 164,438.55 | WLW | TWR | F15 | FNS |
| CNF15FN13 |  | Ceramic For Floors in Balconies | 6d | 2017-05-01 | 2017-05-07 | CNF15FN35, EN0PCPR13 SS+120d | 28d | 4d | COST [35088.2 h]; Helper [48 h]; Mason [96 h]; Balconies Floor Tiles [375 M2] | 35,088.15 | FLB | TWR | F15 | FNS |
| CNF15FN23 |  | False Ceiling | 15d | 2017-05-04 | 2017-05-21 | CNF15MP28, ENCMSPR55, CNF15FN12 | 19d | 0d | COST [46376.4 h]; False Ceiling Fixer [600 h]; False Ceiling [695 M2] | 46,376.44 | CWT | TWR | F15 | FNS |
| CNF15FN33 |  | Bathtubs | 5d | 2017-05-04 | 2017-05-09 | CNF15FN12, EN0PSPR204 SS+45d, CNF14FN33 | 33d | 9d | COST [35625 h] | 35,625 | bth | TWR | F15 | FNS |
| CNF15FN25 |  | Water Proofing | 12d | 2017-05-22 | 2017-06-04 | CNF15FN33 SS+1d, ENCMSPR56, CNF15FN23, CNF14FN25 | 19d | 0d | COST [102613 h]; Water Proofing [553 M2] | 102,613 | WPR | TWR | F15 | FNS |
| CNF15FN34 |  | Ceramic for Floor | 12d | 2017-06-05 | 2017-06-18 | CNF15FN33, CNF15FN25, CNF14FN34, CNSUB1070, EN0PCPR15 SS+120d, EN0PCPR90 SS+120d | 19d | 2d | COST [27945.1 h]; Helper [96 h]; Mason [96 h]; Wet Area Tiles [178 M2] | 27,945.08 | FLW | TWR | F15 | FNS |
| CNF15FN46 |  | Sanitary Ware&Accessories | 6d | 2017-06-26 | 2017-07-04 | CNF15FN48 SS, CNF15FN43, CNF15FN13, CNF15FN33, CNF14FN46, ENPRC1005 | 16d | 5d | COST [100588 h] | 100,588.24 | SWR | TWR | F15 | FNS |
| CNF15FN48 |  | Vanity Counter | 9d | 2017-06-26 | 2017-07-08 | CNF15FN13, CNF15FN43, CNF14FN48, EN0PSPR52 SS+75d | 10d | 0d | COST [86000 h]; Helper [216 h]; Vanity Counters Labor [216 h] | 86,000 | VNC | TWR | F15 | FNS |
| CNF15FN47 |  | Kitchen Cabinet | 11d | 2017-07-01 | 2017-07-12 | CNF15FN13, CNF15FN43, CNF14FN47, EN0PSRA36, EN0PSPR37 SS+120d | 4d | 0d | COST [93417 h]; Helper [88 h]; Kitchen Cabinet Carpenter [88 h] | 93,417 | KCB | TWR | F15 | FNS |
| CNF15FN49 |  | Glass Enclosure | 7d | 2017-07-11 | 2017-07-18 | CNF14FN49, CNF15FN46, EN0PSPR15 SS+90d | 11d | 0d | COST [50000 h]; Helper [56 h]; Glass Enclosure Labor [56 h] | 50,000 | ALM | TWR | F15 | FNS |
| CNF15FN50 |  | Mirrors & Toilet Accessories | 6d | 2017-07-19 | 2017-07-25 | CNF14FN50, CNF15FN46, CNF15FN49, EN0PSPR23 SS+60d | 14d | 1d | COST [86000 h]; Helper [96 h]; Mirrors Labor [48 h] | 86,000 | MRA | TWR | F15 | FNS |
|  | 1.5.2.2.1.1.3 | **Lift Lobby & Corridor** |  | 2017-05-09 | 2017-10-22 |  |  |  |  |  |  |  |  |  |
| CNF15FN11 |  | Ceiling Finishes | 12d | 2017-05-09 | 2017-05-22 | CNF14FN11, EN0PSPR200 SS+75d, CNF15MP30, EN0PSNM11 FS+14d | 17d | 0d | COST [46000 h]; False Ceiling Fixer [192 h] | 46,000 | IDC | TWR | F15 | FNS |
| CNF15FN30 |  | Wall Finishes | 12d | 2017-05-23 | 2017-06-05 | CNF14FN30, EN0PSPR201 SS+75d, CNF15FN11, EN0PSNM11 FS+14d | 17d | 0d | COST [59722 h]; Helper [192 h]; Mason [288 h] | 59,722 | IDW | TWR | F15 | FNS |
| CNF15FN39 |  | Floor Finishes | 15d | 2017-06-06 | 2017-06-22 | CNF14FN39, CNF15FN11, CNF15FN30, EN0PSPR30 SS+75d, EN0PSNM11 FS+14d | 20d | 0d | COST [52113 h]; Helper [120 h]; Mason [120 h] | 52,113 | IDF | TWR | F15 | FNS |
| CNF15FN93 |  | Carpet Laying | 3d | 2017-10-19 | 2017-10-22 | CNF14FN93, CNF15FN39, ATDCD1030 | 4d | 0d | COST [9109 h] | 9,109 | IDR | TWR | F15 | FNS |
|  | 1.5.2.2.1.1.4 | **Common Areas/Service Rooms** |  | 2017-06-05 | 2017-08-03 |  |  |  |  |  |  |  |  |  |
|  | 1 | **Service Rooms** |  | 2017-06-05 | 2017-07-17 |  |  |  |  |  |  |  |  |  |
| CNF15FN17 |  | Epoxy Primer Paint for Ceiling | 6d | 2017-06-05 | 2017-06-11 | CNF15FN31, ENCMSPR52 | 17d | 0d | COST [3833.81 h]; Painter [48 h] | 3,833.81 | EPC | TWR | F15 | FNS |
| CNF15FN18 |  | Acrylic Emulsion Primer Paint & Stucco for Wall | 6d | 2017-06-12 | 2017-06-18 | CNF15FN17 | 17d | 0d | COST [3248.62 h]; Painter [48 h] | 3,248.62 | SRW | TWR | F15 | FNS |
| CNF15FN24 |  | Epoxy Primer Paint for Floor | 6d | 2017-06-19 | 2017-06-25 | ENCMSPR52, CNF15FN18 | 17d | 12d | COST [2379.32 h]; Painter [48 h] | 2,379.32 | EPF | TWR | F15 | FNS |
| CNF15FN26 |  | Timber Doors | 5d | 2017-07-12 | 2017-07-17 | CNF15FN24, CNF15FN39, CNF14FN26 | 24d | 0d | COST [58000 h]; Doors Carpenter [40 h]; Helper [40 h] | 58,000 | SRD | TWR | F15 | FNS |
|  | 2 | **Stairs** |  | 2017-07-12 | 2017-08-03 |  |  |  |  |  |  |  |  |  |
| CNF15FN27 |  | Epoxy Primer Paint for Ceiling | 4d | 2017-07-12 | 2017-07-16 | ENCMSPR52, CNF15FN24, CNF14FN27 | 5d | 0d | COST [599 h]; Painter [32 h] | 599 | EPC | TWR | F15 | FNS |
| CNF15FN32 |  | Acrylic Emulsion Primer Paint & Stucco for Walls | 4d | 2017-07-17 | 2017-07-20 | CNF15FN27, CNF14FN32 | 5d | 0d | COST [3695.62 h]; Painter [32 h] | 3,695.62 | SRW | TWR | F15 | FNS |
| CNF15FN36 |  | Epoxy Primer Paint for Floor | 4d | 2017-07-22 | 2017-07-25 | ENCMSPR52, CNF15FN32 | 10d | 0d | COST [8129.16 h]; Painter [32 h] | 8,129.16 | EPF | TWR | F15 | FNS |
| CNF15FN80 |  | Stair Handrail | 4d | 2017-07-26 | 2017-07-30 | CNF15FN36 | 10d | 0d | COST [30000 h]; Helper [64 h]; Aluminium Labor [32 h] | 30,000 | B5-MTW | TWR | F15 | FNS |
| CNF15FN37 |  | Steel Doors | 4d | 2017-07-31 | 2017-08-03 | CNF15FN80, CNF15FN36, CNF15FN39, EN0PSPR31 SS+60d, CNF14FN37 | 10d | 0d | Steel Works Labor [32 h]; Helper [64 h]; COST [31730.8 h] | 31,730.81 | STD | TWR | F15 | FNS |

| ID | WBS | Activity | Type | Duration | Start | Finish | Predecessors | Total float | Free float | Resources | Cost | TYPE OF WORK L4 | ZONE L1 | FLOOR L2 | CATEGORY OF WORK L3 |
| --- | --- | --- | --- | --- | --- | --- | --- | --- | --- | --- | --- | --- | --- | --- | --- |
|  | 1.1 | **MEP** |  |  | 2017-01-03 | 2017-07-06 |  |  |  |  |  |  |  |  |  |
|  | 1.1 | **MEP 1st Fix** |  |  | 2017-01-03 | 2017-04-04 |  |  |  |  |  |  |  |  |  |
| CNF15CW91 |  | MEP Conduits for the slab |  | 5d | 2017-01-03 | 2017-01-08 | CNF15CW15 SS, CNF15CW15 FF | 6d | 0d | COST [214225 h]; ELECTRICIAN [800 h]; PLUMBER [360 h] | 214,225.1 | MEW | TWR | F15 | CON |
| CNF15FN19 |  | Walls Cutting & Chasing |  | 7d | 2017-03-28 | 2017-04-04 | CNF15FN10 SS+8d | 3d | 0d | COST [6151 h] | 6,151 | MEW | TWR | F15 | FNS |
| CNF15MP10 |  | Civil Clearance To Start 1st Fix | milestone | 0d | 2017-03-30 | 2017-03-30 | EN0PSRA67, EN0PSRA02, EN0PSRA70, EN0PSRA73, EN0PSRA41, EN0PSRA44, EN0PSRA49, EN0PSRA54, EN0PSRA58, EN0PSRA62, EN0PSRA76, EN0PSRA80, CNF15FN19 SS+2d | 3d | 0d |  |  | MEW | TWR | F15 | MEP |
| CNF15MP11 |  | Drainage Pipes ( In Walls) |  | 5d | 2017-03-30 | 2017-04-04 | CNF15MP10, CNF14MP11 | 3d | 0d | COST [15528 h]; PLUMBER [320 h] | 15,528 | MEW | TWR | F15 | MEP |
| CNF15MP12 |  | Water Supply Pipes ( In Walls) |  | 5d | 2017-03-30 | 2017-04-04 | CNF15MP10, CNF14MP12 | 3d | 0d | COST [26928.4 h]; PLUMBER [320 h] | 26,928.4 | MEW | TWR | F15 | MEP |
| CNF15MP13 |  | Sleeves,Conduites,Gi Box,DB Box In Wall |  | 5d | 2017-03-30 | 2017-04-04 | CNF15MP10, CNF14MP13 | 3d | 0d | COST [48200.5 h]; ELECTRICIAN [360 h] | 48,200.5 | MEW | TWR | F15 | MEP |
| CNF15MP16 |  | MEP Clearance To Start Plaster | milestone | 0d | 2017-04-04 | 2017-04-04 | CNF15MP11, CNF15MP12, CNF15MP13 | 3d | 0d |  |  | MEW | TWR | F15 | MEP |
|  | 1.2 | **MEP 2nd Fix** |  |  | 2017-04-18 | 2017-05-08 |  |  |  |  |  |  |  |  |  |
| CNF15MP17 |  | Civil Clearance To Start 2nd Fix | milestone | 0d | 2017-04-18 | 2017-04-18 | CNF15FN21 | 7d | 0d |  |  | MEW | TWR | F15 | MEP |
| CNF15MP15 |  | Cable Tray / Trunking |  | 10d | 2017-04-19 | 2017-05-01 | CNF15MP17, CNF14MP15 | 8d | 1d | COST [153534 h]; ELECTRICIAN [232 h] | 153,534.2 | MEW | TWR | F15 | MEP |
| CNF15MP21 |  | Ducting Work Including Insulation |  | 10d | 2017-04-19 | 2017-05-01 | CNF14MP21, CNF15FN21 | 8d | 0d | COST [186091 h]; DUCTMAN [344 h] | 186,091.2 | MEW | TWR | F15 | MEP |
| CNF15MP22 |  | Installation of FCUs & Fans |  | 10d | 2017-04-19 | 2017-05-01 | CNF15MP21 FF, CNF14MP22, ENPRC1013 | 8d | 1d | COST [132302 h]; AC TECHNICIAN [480 h] | 132,302.1 | MEW | TWR | F15 | MEP |
| CNF15MP23 |  | Chilled Water Pipes (High L) |  | 10d | 2017-04-19 | 2017-05-01 | CNF14MP23, CNF15FN21 | 8d | 1d | COST [109870 h]; AC TECHNICIAN [304 h] | 109,870.1 | MEW | TWR | F15 | MEP |
| CNF15MP24 |  | LPG Piping |  | 10d | 2017-04-19 | 2017-05-01 | CNF14MP24, CNF15FN21, EN0PSPR11 FS+7d | 8d | 1d | COST [67153.8 h]; PIPE FITTER [112 h] | 67,153.8 | MEW | TWR | F15 | MEP |
| CNF15MP25 |  | Fire Fighting Pipes (Mains/Branches) |  | 10d | 2017-04-19 | 2017-05-01 | CNF14MP25, CNF15FN21 | 8d | 1d | COST [79182 h]; PIPE FITTER [128 h] | 79,182 | MEW | TWR | F15 | MEP |
| CNF15MP18 |  | Drainage Pipes (High L) |  | 10d | 2017-04-20 | 2017-05-02 | CNF15MP17 FS+1d, CNF14MP18 | 7d | 0d | COST [121568 h]; PLUMBER [408 h] | 121,568.3 | MEW | TWR | F15 | MEP |
| CNF15MP19 |  | Wires |  | 7d | 2017-04-20 | 2017-04-29 | CNF15MP13, CNF15MP17 FS+1d, CNF14MP19 | 10d | 3d | COST [153534 h]; ELECTRICIAN [280 h] | 153,534.2 | MEW | TWR | F15 | MEP |
| CNF15MP20 |  | Water Supply Pipes (High L) |  | 10d | 2017-04-20 | 2017-05-02 | CNF15MP18 FF, CNF14MP20 | 7d | 0d | COST [141452 h]; PLUMBER [320 h] | 141,451.6 | MEW | TWR | F15 | MEP |
| CNF15MP26 |  | Acoustic Drainage Pipe Insulation |  | 8d | 2017-04-24 | 2017-05-02 | CNF15MP18 SS+2d, CNF14MP26 | 7d | 0d | COST [3763.1 h]; PLUMBER [256 h] | 3,763.1 | MEW | TWR | F15 | MEP |
| CNF15MP27 |  | Water Heaters Installation&Connection |  | 6d | 2017-04-24 | 2017-04-30 | CNF15MP20 SS+2d, ENPRC1002 | 9d | 2d | COST [558.9 h] | 558.9 | MEW | TWR | F15 | MEP |
| CNF15MP28 |  | MEP Clearance To Close Apartments Ceilings | milestone | 0d | 2017-05-02 | 2017-05-02 | CNF15MP23, CNF15MP20, CNF15MP19, CNF15MP25, CNF15MP22, CNF15MP18, CNF15MP24, CNF15MP26, CNF15MP27, CNF15MP15 | 7d | 0d |  |  | MEW | TWR | F15 | MEP |
| CNF15MP30 |  | MEP Clearance To Close Corridors Ceilings | milestone | 0d | 2017-05-08 | 2017-05-08 | CNF15MP28 FF+5d | 17d | 0d |  |  | MEW | TWR | F15 | MEP |

| ID | WBS | Activity | Type | Duration | Start | Finish | Predecessors | Total float | Free float | Resources | Cost | TYPE OF WORK L4 | ZONE L1 | FLOOR L2 | CATEGORY OF WORK L3 |
| --- | --- | --- | --- | --- | --- | --- | --- | --- | --- | --- | --- | --- | --- | --- | --- |
|  | 1.3 | **MEP 3rd Fix** |  |  | 2017-06-25 | 2017-07-06 |  |  |  |  |  |  |  |  |  |
| CNF15MP29 |  | Civil Clearance To Start Final Fix | milestone | 0d | 2017-06-25 | 2017-06-25 | CNF15FN43, CNF15MP30, CNF15MP28 | 27d | 0d |  |  | MEW | TWR | F15 | MEP |
| CNF15MP14 |  | Vertical Sprinkler Drops |  | 4d | 2017-06-26 | 2017-07-02 | CNF14MP14, CNF15MP29 | 31d | 4d | COST [4988.6 h]; PIPE FITTER [128 h] | 4,988.6 | MEW | TWR | F15 | MEP |
| CNF15MP31 |  | Hose Reel&Fire Extinguishers & Sprinklers |  | 4d | 2017-06-26 | 2017-07-02 | CNF14MP31, CNF15MP29 | 31d | 4d | COST [46832.8 h]; PIPE FITTER [128 h] | 46,832.8 | MEW | TWR | F15 | MEP |
| CNF15MP32 |  | Installation of DBS |  | 4d | 2017-06-26 | 2017-07-02 | CNF15MP29, CNF14MP32 | 27d | 0d | COST [9929.4 h]; ELECTRICIAN [64 h] | 9,929.4 | MEW | TWR | F15 | MEP |
| CNF15MP33 |  | Installation of Panels / SmDBS |  | 4d | 2017-06-26 | 2017-07-02 | CNF14MP33, CNF15MP32 FF, ENPRC1016 | 31d | 4d | COST [46476.1 h]; ELECTRICIAN [64 h] | 46,476.1 | MEW | TWR | F15 | MEP |
| CNF15MP34 |  | Installation of Fire Alarm Panel & Voice Alarm System |  | 4d | 2017-06-26 | 2017-07-02 | CNF15MP29, CNF14MP34, EN0PSPR40 FS+14d, ENPRC1016 | 31d | 4d | COST [20087.7 h]; ELECTRICIAN [160 h] | 20,087.7 | MEW | TWR | F15 | MEP |
| CNF15MP35 |  | Installation of Light Fitting & E.M Light |  | 4d | 2017-06-26 | 2017-07-02 | CNF15MP29, CNF14MP35, ENPRC1014, CNF15FN43 | 31d | 0d | COST [84000 h]; ELECTRICIAN [160 h] | 84,000 | LFX | TWR | F15 | MEP |
| CNF15MP36 |  | Installation of Wiring Accessories |  | 4d | 2017-06-26 | 2017-07-02 | CNF15MP35 FF, CNF14MP36 | 31d | 4d | COST [15564.6 h]; ELECTRICIAN [96 h] | 15,564.6 | MEW | TWR | F15 | MEP |
| CNF15MP37 |  | Installation of Grills&Diffusers |  | 4d | 2017-06-26 | 2017-07-02 | CNF15MP29, CNF14MP37 | 27d | 0d | COST [3325.4 h]; DUCTMAN [192 h] | 3,325.4 | MEW | TWR | F15 | MEP |
| CNF15MP38 |  | Installation of Telephone System |  | 4d | 2017-07-03 | 2017-07-06 | CNF15MP32, CNF14MP38 | 27d | 0d | COST [32690.3 h]; ELECTRICIAN [64 h] | 32,690.3 | MEW | TWR | F15 | MEP |
| CNF15MP39 |  | Installation of CCTV System |  | 4d | 2017-07-03 | 2017-07-06 | CNF15MP32, CNF14MP39, EN0PSPR44 FS+14d | 27d | 0d | COST [8707.3 h]; ELECTRICIAN [64 h] | 8,707.3 | MEW | TWR | F15 | MEP |
| CNF15MP40 |  | Thermostat Fixing |  | 4d | 2017-07-03 | 2017-07-06 | CNF15MP37, CNF14MP40 | 27d | 0d | COST [1381 h]; ELECTRICIAN [64 h] | 1,381 | MEW | TWR | F15 | MEP |
| CNF15MP41 |  | MEP Final Fix Clearance | milestone | 0d | 2017-07-06 | 2017-07-06 | CNF15MP39, CNF15MP36, CNF15MP37, CNF15MP40, CNF15MP38, CNF15MP35, CNF15MP31, CNF15MP34, CNF15MP33, CNF15MP32, CNF15MP14, CNF15FN44, CNF15FN91, CNF14MP41 | 35d | 12d |  |  | MEW | TWR | F15 | MEP |
|  | 16 | **16th Floor** |  |  | 2017-01-16 | 2017-10-25 |  |  |  |  |  |  |  |  |  |
|  | 1.5.1.1.2.3.21 | **Concrete** |  |  | 2017-01-16 | 2017-02-01 |  |  |  |  |  |  |  |  |  |
| CNF16CW10 |  | Slab Form Work |  | 5d | 2017-01-16 | 2017-01-21 | CNF15CW50 FF+1d, CNF15CW50 SS+1d | 6d | 0d | COST [130248 h]; Shutter Carpenter [1360 h]; Helper [680 h]; Form Work [2504 M2] | 130,247.5 | STR | TWR | F16 | CON |
| CNF16CW15 |  | Slab Rebar & Post Tension Tendons |  | 5d | 2017-01-18 | 2017-01-23 | ENCMSRA10, CNF16CW10 SS+1d, CNF16CW10 FF+2d | 6d | 0d | COST [307860 h]; Steel Fixer [1160 h]; Helper [600 h]; Steel Rebars [41200 Kg] | 307,860 | RFT | TWR | F16 | CON |
| CNF16CW90 |  | TECOM Steel Inspection prior to concrete pouring | milestone | 0d | 2017-01-23 | 2017-01-23 | CNF16CW15 FF, CNF16CW91 | 6d | 0d |  |  |  | TWR | F16 | CON |
| CNF16CW20 |  | Slab Casting |  | 2d | 2017-01-24 | 2017-01-25 | CNF15CW45, ENCMSRA50, CNF16CW90, CNF16CW15 | 6d | 0d | COST [280875 h] | 280,875.1 | RFC | TWR | F16 | CON |
| CNF16CW30 |  | Columns and Walls Rebar |  | 5d | 2017-01-25 | 2017-01-30 | CNF16CW20 SS+1d | 6d | 0d | COST [107359 h]; Steel Fixer [1080 h]; Helper [560 h]; Steel Rebars [53200 Kg] | 107,359 | RFT | TWR | F16 | CON |
| CNF16CW45 |  | PT Tensioning and Grouting |  | 5d | 2017-01-26 | 2017-01-31 | CNF16CW20 | 11d | 5d | COST |  |  | TWR | F16 | CON |
| CNF16CW35 |  | Columns and Walls Form Work |  | 4d | 2017-01-28 | 2017-01-31 | CNF16CW30 SS+1d, CNF16CW30 FF+1d | 6d | 0d | COST [62050 h]; Shutter Carpenter [608 h]; Helper [320 h]; Form Work [2504 M2] | 62,050 | STR | TWR | F16 | CON |
| CNF16CW50 |  | Columns Casting |  | 3d | 2017-01-30 | 2017-02-01 | CNF16CW35 SS+1d, CNF16CW35 FF+1d | 6d | 0d | COST [77489.5 h] | 77,489.5 | RFC | TWR | F16 | CON |

| ID | WBS | Activity | Duration | Start | Finish | Predecessors | Total float | Free float | Resources | Cost | TYPE OF WORK L4 | ZONE L1 | FLOOR L2 | CATEGORY OF WORK L3 |
| --- | --- | --- | --- | --- | --- | --- | --- | --- | --- | --- | --- | --- | --- | --- |
|  | 1 | **Finishes** |  | 2017-04-05 | 2017-10-25 |  |  |  |  |  |  |  |  |  |
|  | 1.5.2.2.1.1.1 | **General** |  | 2017-04-05 | 2017-09-27 |  |  |  |  |  |  |  |  |  |
| CNF16FN10 |  | Block Works | 15d | 2017-04-05 | 2017-04-23 | CNF19CW10, ENCMSPR51, CNF15FN10 | 1d | 0d | COST [389617 h]; Helper [1320 h]; Mason [2520 h]; Block [3733 M2] | 389,616.79 | B4-MAS | TWR | F16 | FNS |
| CNF16FN20 |  | Doors Sub Frames | 9d | 2017-04-15 | 2017-04-25 | CNF16FN10 SS+8d | 9d | 7d | COST [7164 h]; Sub-Frames [108 No] | 7,164 | B6-WDR | TWR | F16 | FNS |
| CNF16FN21 |  | Internal Walls Plaster Works | 11d | 2017-04-24 | 2017-05-06 | CNF16FN20 SS, CNF15FN21, CNF16MP16 | 2d | 0d | COST [121269 h]; Helper [616 h]; Mason [1232 h]; Plastering [3294 M2] | 121,268.81 | PLS | TWR | F16 | FNS |
| CNF16FN28 |  | Balconies Ceiling Plaster | 6d | 2017-05-07 | 2017-05-13 | CNF15FN28, CNF16FN21 | 29d | 0d | COST [33575.2 h]; Plastering [375 M2] | 33,575.25 | BCP | TWR | F16 | FNS |
| CNF16FN35 |  | Emulsion Paint for Balconies Ceiling | 3d | 2017-05-14 | 2017-05-16 | CNF15FN35, ENCMSPR57, CNF16FN28 | 29d | 0d | COST [5924 h]; Painter [96 h]; Paint [375 M2] | 5,924 | BLP | TWR | F16 | FNS |
| CNF16FN42 |  | Balconies Glazing & Aluminium Handrail | 15d | 2017-05-30 | 2017-06-15 | CNF15FN42, CNF16FN41 SS+2d, CNF16FN13, EN0PSRA14, EN0PSPR16 SS+90d | 24d | 0d | COST [210000 h]; Helper [120 h]; Aluminium Labor [120 h] | 210,000 | ALM | TWR | F16 | FNS |
| CNF16FN99 |  | Internal Signage | 3d | 2017-08-15 | 2017-08-17 | CNF16FN39, CNF15FN99 | 8d | 0d | COST [9303 h]; Signage Labor [96 h] | 9,303 | SGN | TWR | F16 | FNS |
| CNF16FN51 |  | Paint Final Coat | 3d | 2017-09-25 | 2017-09-27 | CNF16FN44, CNF16FN47, CNF16FN42, CNF16FN48, CNF16FN45, CNF16FN46, CNF15FN51 | 17d | 0d | COST [3000 h]; Painter [456 h]; Paint [3294 M2] | 3,000 | PFC | TWR | F16 | FNS |
|  | 1.5.2.2.1.1.2 | **Apartments** |  | 2017-05-07 | 2017-08-02 |  |  |  |  |  |  |  |  |  |
|  | 1.5.2.2.1.1.2.1 | **Dry Area** |  | 2017-05-07 | 2017-07-24 |  |  |  |  |  |  |  |  |  |
| CNF16FN29 |  | Wall Paint Primer & Stucco | 15d | 2017-05-07 | 2017-05-23 | ENCMSPR53, CNF16FN21 | 2d | 0d | COST [43043.6 h]; Painter [1080 h]; Paint [3294 M2] | 43,043.56 | PNT | TWR | F16 | FNS |
| CNF16FN41 |  | Aluminium Doors | 12d | 2017-05-07 | 2017-05-20 | CNF15FN41, CNF16FN21, EN0PSRA11, EN0PSPR13 SS+120d | 17d | 3d | Aluminium Labor [96 h]; Helper [192 h]; COST [470000 h] | 470,000 | ALM | TWR | F16 | FNS |
| CNF16FN38 |  | Gypsum Board for Ceiling | 12d | 2017-05-24 | 2017-06-06 | CNF16MP28, ENCMSPR54 FS+14d, CNF15FN38, CNF16FN29 | 2d | 0d | COST [156953 h]; False Ceiling Fixer [1056 h]; Gypsum Board [1300 M2] | 156,952.61 | GYP | TWR | F16 | FNS |
| CNF16FN31 |  | Paint for Ceiling | 12d | 2017-06-07 | 2017-06-20 | CNF15FN31, CNF16FN38 | 3d | 0d | COST [29459 h]; Painter [288 h]; Paint [1300 M2] | 29,459 | CPN | TWR | F16 | FNS |
| CNF16FN40 |  | Ceramic for Floors | 13d | 2017-06-07 | 2017-06-21 | CNF16FN41, CNF16FN38, CNF15FN40, EN0PCPR14 SS+120d | 2d | 0d | COST [135350 h]; Helper [208 h]; Mason [312 h]; Apartment Tiles [1300 M2] | 135,350.21 | TAP | TWR | F16 | FNS |
| CNF16FN90 |  | Door Frames | 5d | 2017-06-22 | 2017-06-29 | CNF15FN90, CNF16FN13, CNF16FN40 | 5d | 0d | Helper [80 h]; COST [107500 h]; Doors Carpenter [80 h] | 107,500 | DRI | TWR | F16 | FNS |
| CNF16FN43 |  | Door Shutters | 10d | 2017-07-01 | 2017-07-11 | CNF16FN90, CNF16FN40, CNF16FN13, CNF16FN41, CNF15FN43, EN0PSPR18 SS+180d | 5d | 0d | Helper [160 h]; COST [200000 h]; Doors Carpenter [160 h] | 200,000 | DRI | TWR | F16 | FNS |
| CNF16FN44 |  | Door Ironmongeries | 10d | 2017-07-01 | 2017-07-11 | CNF15FN44, EN0PSPR202 SS+45d, CNF16FN43 SS | 19d | 4d | Finishings Carpenter [80 h]; Helper [80 h]; COST [28500 h] | 28,500 | DRI | TWR | F16 | FNS |
| CNF16FN91 |  | Thresholds | 10d | 2017-07-01 | 2017-07-11 | CNF15FN91, EN0PCPR12 SS+90d, CNF16FN43 SS | 19d | 4d | Finishings Carpenter [160 h]; Helper [160 h]; COST [24887.2 h] | 24,887.25 |  | TWR | F16 | FNS |
| CNF16FN45 |  | Wooden Wardrobes | 10d | 2017-07-13 | 2017-07-24 | CNF15FN45, CNF16FN43, CNF16FN40, EN0PSPR38 SS+120d | 8d | 2d | Wooden Wardrobes Carpenter [80 h]; Helper [80 h]; COST [87100 h] | 87,100 | DRI | TWR | F16 | FNS |
|  | 1.5.2.2.1.1.2.2 | **Wet Area** |  | 2017-05-07 | 2017-08-02 |  |  |  |  |  |  |  |  |  |
| CNF16FN12 |  | Ceramic for Walls | 12d | 2017-05-07 | 2017-05-20 | CNF15FN12, CNF16FN21, EN0PCRA17, EN0PCPR15 SS+120d, EN0PCPR90 SS+120d | 17d | 0d | COST [164439 h]; Helper [384 h]; Mason [768 h]; Wet Area Tiles [1700 M2] | 164,438.55 | WLW | TWR | F16 | FNS |
| CNF16FN13 |  | Ceramic For Floors in Balconies | 6d | 2017-05-17 | 2017-05-23 | CNF16FN35, EN0PCPR13 SS+120d | 29d | 5d | COST [35088.2 h]; Helper [48 h]; Mason [96 h]; Balconies Floor Tiles [375 M2] | 35,088.15 | FLB | TWR | F16 | FNS |
| CNF16FN23 |  | False Ceiling | 15d | 2017-05-21 | 2017-06-06 | CNF16MP28, ENCMSPR55, CNF16FN12 | 17d | 0d | COST [46376.4 h]; False Ceiling Fixer [600 h]; False Ceiling [695 M2] | 46,376.44 | CWT | TWR | F16 | FNS |
| CNF16FN33 |  | Bathtubs | 5d | 2017-05-21 | 2017-05-25 | CNF16FN12, EN0PSPR204 SS+45d, CNF15FN33 | 31d | 10d | COST [35625 h] | 35,625 | bth | TWR | F16 | FNS |
| CNF16FN25 |  | Water Proofing | 12d | 2017-06-07 | 2017-06-20 | CNF16FN33 SS+1d, ENCMSPR56, CNF16FN23, CNF15FN25 | 17d | 0d | COST [102613 h]; Water Proofing [553 M2] | 102,613 | WPR | TWR | F16 | FNS |
| CNF16FN34 |  | Ceramic for Floor | 12d | 2017-06-21 | 2017-07-06 | CNF16FN33, CNF16FN25, CNF15FN34, EN0PCPR15 SS+120d, EN0PCPR90 SS+120d | 17d | 3d | COST [27945.1 h]; Helper [96 h]; Mason [96 h]; Wet Area Tiles [178 M2] | 27,945.08 | FLW | TWR | F16 | FNS |
| CNF16FN46 |  | Sanitary Ware&Accessories | 6d | 2017-07-12 | 2017-07-18 | CNF16FN48 SS, CNF16FN43, CNF16FN13, CNF16FN33, CNF15FN46, ENPRC1005 | 11d | 0d | COST [100588 h] | 100,588.24 | SWR | TWR | F16 | FNS |
| CNF16FN48 |  | Vanity Counter | 9d | 2017-07-12 | 2017-07-22 | CNF16FN13, CNF16FN43, CNF15FN48, EN0PSPR52 SS+90d | 7d | 0d | COST [86000 h]; Helper [216 h]; Vanity Counters Labor [216 h] | 86,000 | VNC | TWR | F16 | FNS |
| CNF16FN47 |  | Kitchen Cabinet | 11d | 2017-07-13 | 2017-07-25 | CNF16FN13, CNF16FN43, CNF15FN47, EN0PSRA36, EN0PSPR37 SS+120d | 4d | 1d | COST [93417 h]; Helper [88 h]; Kitchen Cabinet Carpenter [88 h] | 93,417 | KCB | TWR | F16 | FNS |
| CNF16FN49 |  | Glass Enclosure | 7d | 2017-07-19 | 2017-07-26 | CNF15FN49, CNF16FN46, EN0PSPR15 SS+90d | 11d | 0d | COST [50000 h]; Helper [56 h]; Glass Enclosure Labor [56 h] | 50,000 | ALM | TWR | F16 | FNS |
| CNF16FN50 |  | Mirrors & Toilet Accessories | 6d | 2017-07-27 | 2017-08-02 | CNF15FN50, CNF16FN46, CNF16FN49, EN0PSPR23 SS+60d | 13d | 7d | COST [86000 h]; Helper [96 h]; Mirrors Labor [48 h] | 86,000 | MRA | TWR | F16 | FNS |

| ID | WBS | Activity | Type | Duration | Start | Finish | Predecessors | Total float | Free float | Resources | Cost | TYPE OF WORK L4 | ZONE L1 | FLOOR L2 | CATEGORY OF WORK L3 |
| --- | --- | --- | --- | --- | --- | --- | --- | --- | --- | --- | --- | --- | --- | --- | --- |
|  | 1.5.2.2.1.1.3 | **Lift Lobby & Corridor** |  |  | 2017-05-23 | 2017-10-25 |  |  |  |  |  |  |  |  |  |
| CNF16FN11 |  | Ceiling Finishes |  | 12d | 2017-05-23 | 2017-06-05 | CNF15FN11, EN0PSPR200 SS+90d, CNF15MP30, EN0PSNM11 FS+14d | 17d | 0d | COST [46000 h]; False Ceiling Fixer [192 h] | 46,000 | IDC | TWR | F16 | FNS |
| CNF16FN30 |  | Wall Finishes |  | 12d | 2017-06-06 | 2017-06-19 | CNF15FN30, EN0PSPR201 SS+90d, CNF16FN21, CNF16FN11, EN0PSNM11 FS+14d | 17d | 3d | COST [59722 h]; Helper [192 h]; Mason [288 h] | 59,722 | IDC | TWR | F16 | FNS |
| CNF16FN39 |  | Floor Finishes |  | 10d | 2017-06-24 | 2017-07-06 | CNF15FN39, CNF16FN11, CNF16FN30, EN0PSPR30 SS+90d, EN0PSNM11 FS+14d | 20d | 4d | COST [52113 h]; Helper [80 h]; Mason [80 h] | 52,113 | IDC | TWR | F16 | FNS |
| CNF16FN93 |  | Carpet Laying |  | 3d | 2017-10-23 | 2017-10-25 | CNF15FN93, CNF16FN39, ATDCD1030 | 4d | 0d | COST [9109 h] | 9,109 | IDC | TWR | F16 | FNS |
|  | 1.5.2.2.1.1.4 | **Common Areas/Service Rooms** |  |  | 2017-06-21 | 2017-08-08 |  |  |  |  |  |  |  |  |  |
|  | 1 | **Service Rooms** |  |  | 2017-06-21 | 2017-07-22 |  |  |  |  |  |  |  |  |  |
| CNF16FN17 |  | Epoxy Primer Paint for Ceiling |  | 6d | 2017-06-21 | 2017-06-29 | CNF16FN31, ENCMSPR52 | 3d | 0d | COST [3833.81 h]; Painter [48 h] | 3,833.81 | EPF | TWR | F16 | FNS |
| CNF16FN18 |  | Acrylic Emulsion Primer Paint & Stucco for Wall |  | 6d | 2017-07-01 | 2017-07-06 | CNF16FN17 | 7d | 0d | COST [3248.62 h]; Painter [48 h] | 3,248.62 | SRW | TWR | F16 | FNS |
| CNF16FN24 |  | Epoxy Primer Paint for Floor |  | 6d | 2017-07-08 | 2017-07-13 | ENCMSPR52, CNF16FN18 | 7d | 2d | COST [2379.32 h]; Painter [48 h] | 2,379.32 | EPF | TWR | F16 | FNS |
| CNF16FN26 |  | Timber Doors |  | 4d | 2017-07-18 | 2017-07-22 | CNF16FN24, CNF15FN26 | 24d | 0d | COST [58000 h]; Doors Carpenter [32 h]; Helper [32 h] | 58,000 | DRI | TWR | F16 | FNS |
|  | 2 | **Stairs** |  |  | 2017-07-17 | 2017-08-08 |  |  |  |  |  |  |  |  |  |
| CNF16FN27 |  | Epoxy Primer Paint for Ceiling |  | 4d | 2017-07-17 | 2017-07-20 | CNF16FN17, CNF16FN31, ENCMSPR52, CNF16FN24, CNF15FN27 | 5d | 0d | COST [599 h]; Painter [32 h] | 599 | EPF | TWR | F16 | FNS |
| CNF16FN32 |  | Acrylic Emulsion Primer Paint & Stucco for Walls |  | 4d | 2017-07-22 | 2017-07-25 | CNF16FN27, CNF15FN32 | 5d | 0d | COST [3695.62 h]; Painter [32 h] | 3,695.62 | SRW | TWR | F16 | FNS |
| CNF16FN36 |  | Epoxy Primer Paint for Floor |  | 4d | 2017-07-26 | 2017-07-30 | ENCMSPR52, CNF16FN32 | 10d | 0d | COST [8129.16 h]; Painter [32 h] | 8,129.16 | EPF | TWR | F16 | FNS |
| CNF16FN80 |  | Stair Handrail |  | 4d | 2017-07-31 | 2017-08-03 | CNF16FN36 | 10d | 0d | COST [30000 h]; Helper [64 h]; Aluminium Labor [32 h] | 30,000 | B5-MTW | TWR | F16 | FNS |
| CNF16FN37 |  | Steel Doors |  | 4d | 2017-08-05 | 2017-08-08 | CNF16FN80, CNF16FN36, EN0PSPR31 SS+60d, CNF15FN37 | 10d | 0d | Steel Works Labor [32 h]; Helper [64 h]; COST [31730.8 h] | 31,730.81 | STD | TWR | F16 | FNS |
|  | 1.1 | **MEP** |  |  | 2017-01-18 | 2017-07-20 |  |  |  |  |  |  |  |  |  |
|  | 1.1 | **MEP 1st Fix** |  |  | 2017-01-18 | 2017-04-23 |  |  |  |  |  |  |  |  |  |
| CNF16CW91 |  | MEP Conduits for the slab |  | 5d | 2017-01-18 | 2017-01-23 | CNF16CW15 SS, CNF16CW15 FF | 6d | 0d | COST [214225 h]; ELECTRICIAN [800 h]; PLUMBER [360 h] | 214,225.1 | MEW | TWR | F16 | CON |
| CNF16FN19 |  | Walls Cutting & Chasing |  | 7d | 2017-04-15 | 2017-04-23 | CNF16FN10 SS+8d | 2d | 0d | COST [6151 h] | 6,151 | MEW | TWR | F16 | FNS |
| CNF16MP10 |  | Civil Clearance To Start 1st Fix | milestone | 0d | 2017-04-17 | 2017-04-17 | EN0PSRA67, EN0PSRA02, EN0PSRA70, EN0PSRA73, EN0PSRA41, EN0PSRA44, EN0PSRA49, EN0PSRA54, EN0PSRA58, EN0PSRA62, EN0PSRA76, EN0PSRA80, CNF16FN19 SS+2d | 2d | 0d |  |  | MEW | TWR | F16 | MEP |
| CNF16MP11 |  | Drainage Pipes ( In Walls) |  | 5d | 2017-04-17 | 2017-04-23 | CNF16MP10, CNF15MP11 | 2d | 0d | COST [15528 h]; PLUMBER [240 h] | 15,528 | MEW | TWR | F16 | MEP |
| CNF16MP12 |  | Water Supply Pipes ( In Walls) |  | 5d | 2017-04-17 | 2017-04-23 | CNF16MP10, CNF15MP12 | 2d | 0d | COST [26928.4 h]; PLUMBER [240 h] | 26,928.4 | MEW | TWR | F16 | MEP |
| CNF16MP13 |  | Sleeves,Conduites,Gi Box,DB Box In Wall |  | 5d | 2017-04-17 | 2017-04-23 | CNF16MP10, CNF15MP13 | 2d | 0d | COST [48200.5 h]; ELECTRICIAN [200 h] | 48,200.5 | MEW | TWR | F16 | MEP |
| CNF16MP16 |  | MEP Clearance To Start Plaster | milestone | 0d | 2017-04-23 | 2017-04-23 | CNF16MP11, CNF16MP12, CNF16MP13 | 2d | 0d |  |  | MEW | TWR | F16 | MEP |

| ID | WBS | Activity | Type | Duration | Start | Finish | Predecessors | Total float | Free float | Resources | Cost | TYPE OF WORK L4 | ZONE L1 | FLOOR L2 | CATEGORY OF WORK L3 |
| --- | --- | --- | --- | --- | --- | --- | --- | --- | --- | --- | --- | --- | --- | --- | --- |
|  | 1.2 | **MEP 2nd Fix** |  |  | 2017-05-06 | 2017-05-24 |  |  |  |  |  |  |  |  |  |
| CNF16MP17 |  | Civil Clearance To Start 2nd Fix | milestone | 0d | 2017-05-06 | 2017-05-06 | CNF16FN21 | 6d | 0d |  |  | MEW | TWR | F16 | MEP |
| CNF16MP15 |  | Cable Tray / Trunking |  | 10d | 2017-05-07 | 2017-05-17 | CNF16MP17, CNF15MP15 | 7d | 1d | COST [153534 h]; ELECTRICIAN [80 h] | 153,534.2 | MEW | TWR | F16 | MEP |
| CNF16MP21 |  | Ducting Work Including Insulation |  | 10d | 2017-05-07 | 2017-05-17 | CNF15MP21, CNF16FN21 | 7d | 0d | COST [186091 h]; DUCTMAN [320 h] | 186,091.2 | MEW | TWR | F16 | MEP |
| CNF16MP22 |  | Installation of FCUs & Fans |  | 10d | 2017-05-07 | 2017-05-17 | CNF16MP21 FF, CNF15MP22, ENPRC1013 | 7d | 1d | COST [132302 h]; AC TECHNICIAN [320 h] | 132,302.1 | MEW | TWR | F16 | MEP |
| CNF16MP23 |  | Chilled Water Pipes (High L) |  | 10d | 2017-05-07 | 2017-05-17 | CNF15MP23, CNF16FN21 | 7d | 1d | COST [109870 h]; AC TECHNICIAN [400 h] | 109,870.1 | MEW | TWR | F16 | MEP |
| CNF16MP24 |  | LPG Piping |  | 10d | 2017-05-07 | 2017-05-17 | CNF15MP24, CNF16FN21, EN0PSPR11 FS+7d | 7d | 1d | COST [67153.8 h]; PIPE FITTER [120 h] | 67,153.8 | MEW | TWR | F16 | MEP |
| CNF16MP25 |  | Fire Fighting Pipes (Mains/Branches) |  | 10d | 2017-05-07 | 2017-05-17 | CNF15MP25, CNF16FN21 | 7d | 1d | COST [79182 h]; PIPE FITTER [80 h] | 79,182 | MEW | TWR | F16 | MEP |
| CNF16MP18 |  | Drainage Pipes (High L) |  | 10d | 2017-05-08 | 2017-05-18 | CNF16MP17 FS+1d, CNF15MP18 | 6d | 0d | COST [121568 h]; PLUMBER [320 h] | 121,568.3 | MEW | TWR | F16 | MEP |
| CNF16MP19 |  | Wires |  | 7d | 2017-05-08 | 2017-05-15 | CNF16MP13, CNF16MP17 FS+1d, CNF15MP19 | 9d | 3d | COST [153534 h]; ELECTRICIAN [80 h] | 153,534.2 | MEW | TWR | F16 | MEP |
| CNF16MP20 |  | Water Supply Pipes (High L) |  | 10d | 2017-05-08 | 2017-05-18 | CNF16MP18 FF, CNF15MP20 | 6d | 0d | COST [141452 h]; PLUMBER [280 h] | 141,451.6 | MEW | TWR | F16 | MEP |
| CNF16MP26 |  | Acoustic Drainage Pipe Insulation |  | 8d | 2017-05-10 | 2017-05-18 | CNF16MP18 SS+2d, CNF15MP26 | 6d | 0d | COST [3763.1 h]; PLUMBER [256 h] | 3,763.1 | MEW | TWR | F16 | MEP |
| CNF16MP27 |  | Water Heaters Installation&Connection |  | 6d | 2017-05-10 | 2017-05-16 | CNF16MP20 SS+2d, ENPRC1002 | 8d | 2d | COST [558.9 h] | 558.9 | MEW | TWR | F16 | MEP |
| CNF16MP28 |  | MEP Clearance To Close Apartments Ceilings | milestone | 0d | 2017-05-18 | 2017-05-18 | CNF16MP23, CNF16MP20, CNF16MP19, CNF16MP25, CNF16MP22, CNF16MP18, CNF16MP24, CNF16MP26, CNF16MP27, CNF16MP15 | 6d | 0d |  |  | MEW | TWR | F16 | MEP |
| CNF16MP30 |  | MEP Clearance To Close Corridors Ceilings | milestone | 0d | 2017-05-24 | 2017-05-24 | CNF16MP28 FF+5d | 58d | 39d |  |  | MEW | TWR | F16 | MEP |
|  | 1.3 | **MEP 3rd Fix** |  |  | 2017-07-11 | 2017-07-20 |  |  |  |  |  |  |  |  |  |
| CNF16MP29 |  | Civil Clearance To Start Final Fix | milestone | 0d | 2017-07-11 | 2017-07-11 | CNF16FN43, CNF16MP30, CNF16MP28 | 19d | 0d |  |  | MEW | TWR | F16 | MEP |
| CNF16MP14 |  | Vertical Sprinkler Drops |  | 4d | 2017-07-12 | 2017-07-16 | CNF15MP14, CNF16MP29 | 23d | 4d | COST [4988.6 h]; PIPE FITTER [128 h] | 4,988.6 | MEW | TWR | F16 | MEP |
| CNF16MP31 |  | Hose Reel&Fire Extinguishers & Sprinklers |  | 4d | 2017-07-12 | 2017-07-16 | CNF15MP31, CNF16MP29 | 23d | 4d | COST [46832.8 h]; PIPE FITTER [128 h] | 46,832.8 | MEW | TWR | F16 | MEP |
| CNF16MP32 |  | Installation of DBS |  | 4d | 2017-07-12 | 2017-07-16 | CNF16MP29, CNF15MP32 | 19d | 0d | COST [9929.4 h]; ELECTRICIAN [64 h] | 9,929.4 | MEW | TWR | F16 | MEP |
| CNF16MP33 |  | Installation of Panels / SmDBS |  | 4d | 2017-07-12 | 2017-07-16 | CNF15MP33, CNF16MP32 FF, ENPRC1016 | 23d | 4d | COST [46476.1 h]; ELECTRICIAN [64 h] | 46,476.1 | MEW | TWR | F16 | MEP |
| CNF16MP34 |  | Installation of Fire Alarm Panel & Voice Alarm System |  | 4d | 2017-07-12 | 2017-07-16 | CNF16MP29, CNF15MP34, EN0PSPR40 FS+14d, ENPRC1016 | 23d | 4d | COST [20087.7 h]; ELECTRICIAN [160 h] | 20,087.7 | MEW | TWR | F16 | MEP |
| CNF16MP35 |  | Installation of Light Fitting & E.M Light |  | 4d | 2017-07-12 | 2017-07-16 | CNF16MP29, CNF15MP35, ENPRC1014, CNF16FN43 | 23d | 0d | COST [84000 h]; ELECTRICIAN [160 h] | 84,000 | LFX | TWR | F16 | MEP |
| CNF16MP36 |  | Installation of Wiring Accessories |  | 4d | 2017-07-12 | 2017-07-16 | CNF16MP35 FF, CNF15MP36 | 23d | 4d | COST [15564.6 h]; ELECTRICIAN [96 h] | 15,564.6 | MEW | TWR | F16 | MEP |
| CNF16MP37 |  | Installation of Grills&Diffusers |  | 4d | 2017-07-12 | 2017-07-16 | CNF16MP29, CNF15MP37 | 19d | 0d | COST [3325.4 h]; DUCTMAN [192 h] | 3,325.4 | MEW | TWR | F16 | MEP |
| CNF16MP38 |  | Installation of Telephone System |  | 4d | 2017-07-17 | 2017-07-20 | CNF16MP32, CNF15MP38 | 19d | 0d | COST [32690.3 h]; ELECTRICIAN [64 h] | 32,690.3 | MEW | TWR | F16 | MEP |
| CNF16MP39 |  | Installation of CCTV System |  | 4d | 2017-07-17 | 2017-07-20 | CNF16MP32, CNF15MP39, EN0PSPR44 FS+14d | 19d | 0d | COST [8707.3 h]; ELECTRICIAN [64 h] | 8,707.3 | MEW | TWR | F16 | MEP |
| CNF16MP40 |  | Thermostat Fixing |  | 4d | 2017-07-17 | 2017-07-20 | CNF16MP37, CNF15MP40 | 19d | 0d | COST [1381 h]; ELECTRICIAN [64 h] | 1,381 | MEW | TWR | F16 | MEP |
| CNF16MP41 |  | MEP Final Fix Clearance | milestone | 0d | 2017-07-20 | 2017-07-20 | CNF16MP39, CNF16MP36, CNF16MP37, CNF16MP40, CNF16MP38, CNF16MP35, CNF16MP31, CNF16MP34, CNF16MP33, CNF16MP32, CNF16MP14, CNF16FN44, CNF16FN91, CNF15MP41 | 23d | 13d |  |  | MEW | TWR | F16 | MEP |

| ID | WBS | Activity | Type | Duration | Start | Finish | Predecessors | Total float | Free float | Calendar | Resources | Cost | TYPE OF WORK L4 | ZONE L1 | FLOOR L2 | CATEGORY OF WORK L3 | This Week Progress |
| --- | --- | --- | --- | --- | --- | --- | --- | --- | --- | --- | --- | --- | --- | --- | --- | --- | --- |
|  | 17 | **17th Floor** |  |  | 2017-01-31 | 2017-10-29 |  |  |  |  |  |  |  |  |  |  |  |
|  | 1.5.1.1.2.3.21 | **Concrete** |  |  | 2017-01-31 | 2017-02-15 |  |  |  |  |  |  |  |  |  |  |  |
| CNF17CW10 |  | Slab Form Work |  | 5d | 2017-01-31 | 2017-02-05 | CNF16CW50 FF+1d, CNF16CW50 SS+1d | 6d | 0d |  | COST [130248 h]; Shutter Carpenter [1360 h]; Helper [680 h]; Form Work [2504 M2] | 130,247.5 | STR | TWR | F17 | CON |  |
| CNF17CW11 |  | Slab Rebar & Post Tension Tendons |  | 5d | 2017-02-01 | 2017-02-06 | ENCMSRA10, CNF17CW10 SS+1d, CNF17CW10 FF+1d | 6d | 0d |  | COST [307860 h]; Steel Fixer [1160 h]; Helper [600 h]; Steel Rebars [41200 Kg] | 307,860 | RFT | TWR | F17 | CON |  |
| CNF17CW90 |  | TECOM Steel Inspection prior to concrete pouring | milestone | 0d | 2017-02-06 | 2017-02-06 | CNF17CW11, CNF17CW91 | 5d | 0d | DM/Authority Calendar |  |  |  | TWR | F17 | CON |  |
| CNF17CW12 |  | Slab Casting |  | 2d | 2017-02-07 | 2017-02-08 | CNF16CW45, ENCMSRA50, CNF17CW90, CNF17CW11 | 6d | 0d |  | COST [280875 h] | 280,875.1 | RFC | TWR | F17 | CON |  |
| CNF17CW15 |  | Columns and Walls Rebar |  | 5d | 2017-02-08 | 2017-02-13 | CNF17CW12 SS+1d | 6d | 0d |  | COST [111818 h]; Steel Fixer [1080 h]; Helper [560 h]; Steel Rebars [53200 Kg] | 111,818 | RFT | TWR | F17 | CON |  |
| CNF17CW14 |  | PT Tensioning and Grouting |  | 5d | 2017-02-09 | 2017-02-14 | CNF17CW12 | 11d | 5d |  | COST |  |  | TWR | F17 | CON |  |
| CNF17CW16 |  | Columns and Walls Form Work |  | 4d | 2017-02-11 | 2017-02-14 | CNF17CW15 SS+1d, CNF17CW15 FF+1d | 6d | 0d |  | COST [62050 h]; Shutter Carpenter [608 h]; Helper [320 h]; Form Work [2504 M2] | 62,050 | STR | TWR | F17 | CON |  |
| CNF17CW18 |  | Columns Casting |  | 3d | 2017-02-13 | 2017-02-15 | CNF17CW16 SS+1d, CNF17CW16 FF+1d | 6d | 0d |  | COST [77489.5 h] | 77,489.5 | RFC | TWR | F17 | CON |  |
|  | 1 | **Finishes** |  |  | 2017-04-24 | 2017-10-29 |  |  |  |  |  |  |  |  |  |  |  |
|  | 1.5.2.2.1.1.1 | **General** |  |  | 2017-04-24 | 2017-10-01 |  |  |  |  |  |  |  |  |  |  |  |
| CNF17FN10 |  | Block Works |  | 14d | 2017-04-24 | 2017-05-09 | ENCMSPR51, CNF16FN10 | 1d | 0d |  | COST [389617 h]; Helper [1232 h]; Mason [2352 h]; Block [3733 M2] | 389,616.79 | B4-MAS | TWR | F17 | FNS | GR |
| CNF17FN12 |  | Doors Sub Frames |  | 9d | 2017-05-03 | 2017-05-13 | CNF17FN10 SS+8d | 8d | 7d |  | COST [7164 h]; Sub-Frames [108 No] | 7,164 | B6-WDR | TWR | F17 | FNS | GR |
| CNF17FN13 |  | Internal Walls Plaster Works |  | 11d | 2017-05-11 | 2017-05-23 | CNF17FN12 SS, CNF17MP14 | 1d | 0d |  | COST [121269 h]; Helper [616 h]; Mason [1232 h]; Plastering [3294 M2] | 121,268.81 | PLS | TWR | F17 | FNS | GR |
| CNF17FN14 |  | Balconies Ceiling Plaster |  | 6d | 2017-05-24 | 2017-05-30 | CNF16FN28, CNF17FN13 | 27d | 0d |  | COST [33575.2 h]; Plastering [375 M2] | 33,575.25 | BCP | TWR | F17 | FNS | GR |
| CNF17FN18 |  | Emulsion Paint for Balconies Ceiling |  | 3d | 2017-05-31 | 2017-06-03 | CNF16FN35, ENCMSPR57, CNF17FN14 | 27d | 0d |  | COST [5924 h]; Painter [96 h]; Paint [375 M2] | 5,924 | BLP | TWR | F17 | FNS | GR |
| CNF17FN32 |  | Balconies Glazing & Aluminium Handrail |  | 15d | 2017-06-17 | 2017-07-05 | CNF16FN42, CNF17FN31 SS+2d, CNF17FN19 | 24d | 0d |  | COST [210000 h]; Helper [120 h]; Aluminium Labor [120 h] | 210,000 | ALM | TWR | F17 | FNS | GR |
| CNF17FN98 |  | Internal Signage |  | 3d | 2017-08-19 | 2017-08-21 | CNF17FN37, CNF16FN99 | 8d | 0d |  | COST [9303 h]; Signage Labor [96 h] | 9,303 | SGN | TWR | F17 | FNS |  |
| CNF17FN48 |  | Paint Final Coat |  | 3d | 2017-09-28 | 2017-10-01 | CNF17FN38, CNF17FN43, CNF17FN32, CNF17FN42, CNF17FN39, CNF17FN40, CNF16FN51 | 17d | 0d |  | COST [3000 h]; Painter [456 h]; Paint [3294 M2] | 3,000 | PFC | TWR | F17 | FNS | GR |
|  | 1.5.2.2.1.1.2 | **Apartments** |  |  | 2017-05-24 | 2017-08-17 |  |  |  |  |  |  |  |  |  |  |  |
|  | 1.5.2.2.1.1.2.1 | **Dry Area** |  |  | 2017-05-24 | 2017-08-07 |  |  |  |  |  |  |  |  |  |  |  |
| CNF17FN15 |  | Wall Paint Primer & Stucco |  | 15d | 2017-05-24 | 2017-06-10 | ENCMSPR53, CNF17FN13 | 1d | 0d |  | COST [43043.6 h]; Painter [1080 h]; Paint [3294 M2] | 43,043.56 | PNT | TWR | F17 | FNS | Dry |
| CNF17FN31 |  | Aluminium Doors |  | 12d | 2017-05-24 | 2017-06-06 | CNF16FN41, EN0PSPR13 SS+120d, CNF17FN13 | 15d | 2d |  | Aluminium Labor [96 h]; Helper [192 h]; COST [470000 h] | 470,000 | ALM | TWR | F17 | FNS | Dry |
| CNF17FN20 |  | Gypsum Board for Ceiling |  | 11d | 2017-06-11 | 2017-06-22 | CNF17MP27, ENCMSPR54 FS+14d, CNF17FN15, CNF16FN38 | 1d | 0d |  | COST [156953 h]; False Ceiling Fixer [968 h]; Gypsum Board [1300 M2] | 156,952.61 | GYP | TWR | F17 | FNS | Dry |
| CNF17FN16 |  | Paint for Ceiling |  | 12d | 2017-06-24 | 2017-07-09 | CNF16FN31, CNF17FN20 | 68d | 0d |  | COST [29459 h]; Painter [288 h]; Paint [1300 M2] | 29,459 | CPN | TWR | F17 | FNS | Dry |
| CNF17FN24 |  | Ceramic for Floors |  | 13d | 2017-06-24 | 2017-07-10 | CNF17FN31, CNF17FN20, CNF16FN40 | 1d | 0d |  | COST [135350 h]; Helper [208 h]; Mason [312 h]; Apartment Tiles [1300 M2] | 135,350.21 | TAP | TWR | F17 | FNS | Dry |
| CNF17FN90 |  | Door Frames |  | 5d | 2017-07-11 | 2017-07-16 | CNF16FN90, CNF17FN19, CNF17FN24 | 3d | 0d |  | Helper [80 h]; COST [107500 h]; Doors Carpenter [80 h] | 107,500 | DRI | TWR | F17 | FNS |  |
| CNF17FN34 |  | Door Shutters |  | 9d | 2017-07-17 | 2017-07-26 | CNF17FN90, EN0PSPR18 SS+180d, CNF17FN24, CNF17FN19, CNF17FN31, CNF16FN43 | 3d | 0d |  | Helper [144 h]; COST [200000 h]; Doors Carpenter [144 h] | 200,000 | APD | TWR | F17 | FNS | Dry |
| CNF17FN38 |  | Door Ironmongeries |  | 10d | 2017-07-17 | 2017-07-27 | CNF16FN44, EN0PSPR202 SS+45d, CNF17FN34 SS | 15d | 1d |  | Finishings Carpenter [80 h]; Helper [80 h]; COST [28500 h] | 28,500 | DRI | TWR | F17 | FNS | Dry |
| CNF17FN91 |  | Thresholds |  | 10d | 2017-07-17 | 2017-07-27 | CNF16FN91, EN0PCPR12 SS+90d, CNF17FN34 SS | 15d | 1d |  | Finishings Carpenter [160 h]; Helper [160 h]; COST [24887.2 h] | 24,887.25 | THR | TWR | F17 | FNS |  |
| CNF17FN39 |  | Wooden Wardrobes |  | 10d | 2017-07-27 | 2017-08-07 | CNF16FN45, EN0PSPR38 SS+120d, CNF17FN34, CNF17FN24 | 6d | 0d |  | Wooden Wardrobes Carpenter [80 h]; Helper [80 h]; COST [87100 h] | 87,100 | WRD | TWR | F17 | FNS | Dry |

| ID | WBS | Activity | Duration | Start | Finish | Predecessors | Total float | Free float | Resources | Cost | This Week Progress | TYPE OF WORK L4 | ZONE L1 | FLOOR L2 | CATEGORY OF WORK L3 |
| --- | --- | --- | --- | --- | --- | --- | --- | --- | --- | --- | --- | --- | --- | --- | --- |
|  | 1.5.2.2.1.1.2.2 | **Wet Area** |  | 2017-05-24 | 2017-08-17 |  |  |  |  |  |  |  |  |  |  |
| CNF17FN17 |  | Ceramic for Walls | 12d | 2017-05-24 | 2017-06-06 | CNF16FN12, CNF17FN13, EN0PCPR15 SS+120d, EN0PCPR90 SS+120d | 14d | 0d | COST [164439 h]; Helper [384 h]; Mason [768 h]; Wet Area Tiles [1700 M2] | 164,438.55 | Wet | WLW | TWR | F17 | FNS |
| CNF17FN19 |  | Ceramic For Floors in Balconies | 6d | 2017-06-04 | 2017-06-10 | CNF17FN18, EN0PCPR13 SS+120d | 27d | 5d | COST [35088.2 h]; Helper [48 h]; Mason [96 h]; Balconies Floor Tiles [375 M2] | 35,088.15 | GR | FLB | TWR | F17 | FNS |
| CNF17FN21 |  | False Ceiling | 15d | 2017-06-07 | 2017-06-24 | CNF17MP27, ENCMSPR55, CNF17FN17 | 14d | 0d | COST [46376.4 h]; False Ceiling Fixer [600 h]; False Ceiling [695 M2] | 46,376.44 | Wet | CWT | TWR | F17 | FNS |
| CNF17FN29 |  | Bathtubs | 5d | 2017-06-07 | 2017-06-12 | CNF17FN17, EN0PSPR204 SS+45d, CNF16FN33 | 28d | 8d | COST [35625 h] | 35,625 | Wet | bth | TWR | F17 | FNS |
| CNF17FN23 |  | Water Proofing | 12d | 2017-06-25 | 2017-07-10 | CNF17FN29 SS+1d, ENCMSPR56, CNF17FN21, CNF16FN25 | 14d | 0d | COST [102613 h]; Water Proofing [553 M2] | 102,613 | Wet | WPR | TWR | F17 | FNS |
| CNF17FN30 |  | Ceramic for Floor | 12d | 2017-07-11 | 2017-07-24 | CNF17FN29, CNF17FN23, CNF16FN34, EN0PCPR15 SS+120d, EN0PCPR90 SS+120d, EN0PCPR14 SS+120d | 14d | 1d | COST [27945.1 h]; Helper [96 h]; Mason [96 h]; Wet Area Tiles [178 M2] | 27,945.08 | Wet | FLW | TWR | F17 | FNS |
| CNF17FN40 |  | Sanitary Ware&Accessories | 6d | 2017-07-27 | 2017-08-02 | CNF17FN42 SS, CNF17FN34, CNF17FN19, CNF17FN29, CNF16FN46 | 5d | 0d | COST [100588 h] | 100,588.24 | Wet | SWR | TWR | F17 | FNS |
| CNF17FN42 |  | Vanity Counter | 9d | 2017-07-27 | 2017-08-06 | EN0PSPR52 SS+90d, CNF17FN19, CNF17FN34, CNF16FN48 | 3d | 0d | COST [86000 h]; Helper [216 h]; Vanity Counters Labor [216 h] | 86,000 | Wet | VNC | TWR | F17 | FNS |
| CNF17FN43 |  | Kitchen Cabinet | 11d | 2017-07-27 | 2017-08-08 | EN0PSPR37 SS+120d, CNF17FN19, CNF17FN34, CNF16FN47 | 3d | 0d | COST [93417 h]; Helper [88 h]; Kitchen Cabinet Carpenter [88 h] | 93,417 | Wet | KCB | TWR | F17 | FNS |
| CNF17FN44 |  | Glass Enclosure | 7d | 2017-08-03 | 2017-08-10 | CNF16FN49, EN0PSPR15 SS+90d, CNF17FN40 | 5d | 0d | COST [50000 h]; Helper [56 h]; Glass Enclosure Labor [56 h] | 50,000 | Wet | ALM | TWR | F17 | FNS |
| CNF17FN47 |  | Mirrors & Toilet Accessories | 6d | 2017-08-12 | 2017-08-17 | CNF16FN50, EN0PSPR23 SS+60d, CNF17FN40, CNF17FN44 | 6d | 4d | COST [86000 h]; Helper [96 h]; Mirrors Labor [48 h] | 86,000 | Wet | MRA | TWR | F17 | FNS |
|  | 1.5.2.2.1.1.3 | **Lift Lobby & Corridor** |  | 2017-06-12 | 2017-10-29 |  |  |  |  |  |  |  |  |  |  |
| CNF17FN99 |  | Ceiling Finishes | 12d | 2017-06-12 | 2017-06-25 | CNF16FN11, EN0PSPR200 SS+90d, CNF17MP29 | 12d | 0d | COST [46000 h]; False Ceiling Fixer [192 h] | 46,000 | LL | IDC | TWR | F17 | FNS |
| CNF17FN27 |  | Wall Finishes | 12d | 2017-06-26 | 2017-07-11 | CNF16FN30, CNF17FN99, EN0PSPR201 SS+90d, CNF17FN13 | 12d | 0d | COST [59722 h]; Helper [192 h]; Mason [288 h] | 59,722 | LL | IDW | TWR | F17 | FNS |
| CNF17FN37 |  | Floor Finishes | 10d | 2017-07-12 | 2017-07-23 | CNF16FN39, EN0PSPR30 SS+90d, CNF17FN27 | 16d | 4d | COST [52113 h]; Helper [80 h]; Mason [80 h] | 52,113 | LL | IDF | TWR | F17 | FNS |
| CNF17FN93 |  | Carpet Laying | 3d | 2017-10-26 | 2017-10-29 | CNF16FN93, CNF17FN37, ATDCD1030 | 4d | 0d | COST [9109 h] | 9,109 |  | IDR | TWR | F17 | FNS |
|  | 1.5.2.2.1.1.4 | **Common Areas/Service Rooms** |  | 2017-07-01 | 2017-08-13 |  |  |  |  |  |  |  |  |  |  |
|  | 1 | **Service Rooms** |  | 2017-07-01 | 2017-07-26 |  |  |  |  |  |  |  |  |  |  |
| CNF17FN25 |  | Epoxy Primer Paint for Ceiling | 6d | 2017-07-01 | 2017-07-06 | ENCMSPR52, CNF16FN17 | 3d | 0d | COST [3833.81 h]; Painter [48 h] | 3,833.81 | Service | EPC | TWR | F17 | FNS |
| CNF17FN28 |  | Acrylic Emulsion Primer Paint & Stucco for Wall | 6d | 2017-07-08 | 2017-07-13 | CNF17FN25 | 5d | 0d | COST [3248.62 h]; Painter [48 h] | 3,248.62 | Service | SRW | TWR | F17 | FNS |
| CNF17FN33 |  | Epoxy Primer Paint for Floor | 6d | 2017-07-15 | 2017-07-20 | ENCMSPR52, CNF17FN28 | 5d | 0d | COST [2379.32 h]; Painter [48 h] | 2,379.32 | Service | EPF | TWR | F17 | FNS |
| CNF17FN35 |  | Timber Doors | 4d | 2017-07-23 | 2017-07-26 | CNF17FN33, CNF16FN26 | 24d | 1d | COST [58000 h]; Doors Carpenter [32 h]; Helper [32 h] | 58,000 | Service | SRD | TWR | F17 | FNS |
|  | 2 | **Stairs** |  | 2017-07-22 | 2017-08-13 |  |  |  |  |  |  |  |  |  |  |
| CNF17FN36 |  | Epoxy Primer Paint for Ceiling | 4d | 2017-07-22 | 2017-07-25 | ENCMSPR52, CNF17FN33 | 5d | 0d | COST [599 h]; Painter [32 h] | 599 | Stairs | EPC | TWR | F17 | FNS |
| CNF17FN41 |  | Acrylic Emulsion Primer Paint & Stucco for Walls | 4d | 2017-07-26 | 2017-07-30 | CNF17FN36, CNF16FN32 | 5d | 0d | COST [3695.62 h]; Painter [32 h] | 3,695.62 | Stairs | SRW | TWR | F17 | FNS |
| CNF17FN45 |  | Epoxy Primer Paint for Floor | 4d | 2017-07-31 | 2017-08-03 | ENCMSPR52, CNF17FN41 | 10d | 0d | COST [8129.16 h]; Painter [32 h] | 8,129.16 | Stairs | EPF | TWR | F17 | FNS |
| CNF17FN80 |  | Stair Handrail | 4d | 2017-08-05 | 2017-08-08 | CNF17FN45 | 10d | 0d | COST [30000 h]; Helper [64 h]; Aluminium Labor [32 h] | 30,000 | Stairs | B5-MTW | TWR | F17 | FNS |
| CNF17FN46 |  | Steel Doors | 4d | 2017-08-09 | 2017-08-13 | CNF17FN80, EN0PSPR31 SS+60d, CNF17FN45, CNF16FN37 | 10d | 2d | Steel Works Labor [32 h]; Helper [64 h]; COST [31730.8 h] | 31,730.81 | Stairs | STD | TWR | F17 | FNS |

| ID | WBS | Activity | Type | Duration | Start | Finish | Predecessors | Total float | Free float | Resources | Cost | TYPE OF WORK L4 | ZONE L1 | FLOOR L2 | CATEGORY OF WORK L3 | This Week Progress |
| --- | --- | --- | --- | --- | --- | --- | --- | --- | --- | --- | --- | --- | --- | --- | --- | --- |
|  | 1.1 | **MEP** |  |  | 2017-02-01 | 2017-08-05 |  |  |  |  |  |  |  |  |  |  |
|  | 1.1 | **MEP 1st Fix** |  |  | 2017-02-01 | 2017-05-10 |  |  |  |  |  |  |  |  |  |  |
| CNF17CW91 |  | MEP Conduits for the slab |  | 5d | 2017-02-01 | 2017-02-06 | CNF17CW11 SS, CNF17CW11 FF | 6d | 0d | COST [214225 h]; ELECTRICIAN [800 h]; PLUMBER [400 h] | 214,225.1 | MEW | TWR | F17 | CON |  |
| CNF17FN11 |  | Walls Cutting & Chasing |  | 7d | 2017-05-03 | 2017-05-10 | CNF17FN10 SS+8d | 1d | 0d | COST [6151 h] | 6,151 | MEW | TWR | F17 | FNS | GR |
| CNF17MP10 |  | Civil Clearance To Start 1st Fix | milestone | 0d | 2017-05-06 | 2017-05-06 | EN0PSRA67, EN0PSRA02, EN0PSRA70, EN0PSRA73, EN0PSRA41, EN0PSRA44, EN0PSRA49, EN0PSRA54, EN0PSRA58, EN0PSRA62, EN0PSRA76, EN0PSRA80, CNF17FN11 SS+2d | 1d | 0d |  |  | MEW | TWR | F17 | MEP |  |
| CNF17MP11 |  | Drainage Pipes ( In Walls) |  | 5d | 2017-05-06 | 2017-05-10 | CNF17MP10, CNF16MP11 | 1d | 0d | COST [15528 h]; PLUMBER [240 h] | 15,528 | MEW | TWR | F17 | MEP |  |
| CNF17MP12 |  | Water Supply Pipes ( In Walls) |  | 5d | 2017-05-06 | 2017-05-10 | CNF17MP10, CNF16MP12 | 1d | 0d | COST [26928.4 h]; PLUMBER [240 h] | 26,928.4 | MEW | TWR | F17 | MEP |  |
| CNF17MP13 |  | Sleeves,Conduites,Gi Box,DB Box In Wall |  | 5d | 2017-05-06 | 2017-05-10 | CNF17MP10, CNF16MP13 | 1d | 0d | COST [48200.5 h]; ELECTRICIAN [80 h] | 48,200.5 | MEW | TWR | F17 | MEP |  |
| CNF17MP14 |  | MEP Clearance To Start Plaster | milestone | 0d | 2017-05-10 | 2017-05-10 | CNF17MP11, CNF17MP12, CNF17MP13 | 1d | 0d |  |  | MEW | TWR | F17 | MEP |  |
|  | 1.2 | **MEP 2nd Fix** |  |  | 2017-05-23 | 2017-06-11 |  |  |  |  |  |  |  |  |  |  |
| CNF17MP15 |  | Civil Clearance To Start 2nd Fix | milestone | 0d | 2017-05-23 | 2017-05-23 | CNF17FN13 | 5d | 0d |  |  | MEW | TWR | F17 | MEP |  |
| CNF17MP16 |  | LPG Piping |  | 10d | 2017-05-24 | 2017-06-04 | EN0PSPR11 FS+7d, CNF17FN13, CNF16MP24 | 6d | 1d | COST [67153.8 h]; PIPE FITTER [176 h] | 67,153.8 | MEW | TWR | F17 | MEP |  |
| CNF17MP17 |  | Fire Fighting Pipes (Mains/Branches) |  | 10d | 2017-05-24 | 2017-06-04 | CNF17FN13, CNF16MP25 | 6d | 1d | COST [79182 h]; PIPE FITTER [224 h] | 79,182 | MEW | TWR | F17 | MEP |  |
| CNF17MP18 |  | Ducting Work Including Insulation |  | 10d | 2017-05-24 | 2017-06-04 | CNF17FN13, CNF16MP21 | 6d | 0d | COST [186091 h]; DUCTMAN [392 h] | 186,091.2 | MEW | TWR | F17 | MEP |  |
| CNF17MP19 |  | Installation of FCUs & Fans |  | 10d | 2017-05-24 | 2017-06-04 | CNF17MP18 FF, CNF16MP22 | 6d | 1d | COST [132302 h]; AC TECHNICIAN [480 h] | 132,302.1 | MEW | TWR | F17 | MEP |  |
| CNF17MP20 |  | Chilled Water Pipes (High L) |  | 10d | 2017-05-24 | 2017-06-04 | CNF17FN13, CNF16MP23 | 6d | 1d | COST [109870 h]; AC TECHNICIAN [640 h] | 109,870.1 | MEW | TWR | F17 | MEP |  |
| CNF17MP24 |  | Cable Tray / Trunking |  | 10d | 2017-05-24 | 2017-06-04 | CNF17MP15, CNF16MP15 | 6d | 1d | COST [153534 h]; ELECTRICIAN [176 h] | 153,534.2 | MEW | TWR | F17 | MEP |  |
| CNF17MP21 |  | Drainage Pipes (High L) |  | 10d | 2017-05-25 | 2017-06-05 | CNF17MP15 FS+1d, CNF16MP18 | 5d | 0d | COST [121568 h]; PLUMBER [640 h] | 121,568.3 | MEW | TWR | F17 | MEP |  |
| CNF17MP22 |  | Wires |  | 7d | 2017-05-25 | 2017-06-01 | CNF17MP13, CNF17MP15 FS+1d, CNF16MP19 | 8d | 3d | COST [153534 h]; ELECTRICIAN [256 h] | 153,534.2 | MEW | TWR | F17 | MEP |  |
| CNF17MP23 |  | Water Supply Pipes (High L) |  | 10d | 2017-05-25 | 2017-06-05 | CNF17MP21 FF, CNF16MP20 | 5d | 0d | COST [141452 h]; PLUMBER [480 h] | 141,451.6 | MEW | TWR | F17 | MEP |  |
| CNF17MP25 |  | Acoustic Drainage Pipe Insulation |  | 8d | 2017-05-28 | 2017-06-05 | CNF17MP21 SS+2d, CNF16MP26 | 5d | 0d | COST [3763.1 h]; PLUMBER [256 h] | 3,763.1 | MEW | TWR | F17 | MEP |  |
| CNF17MP26 |  | Water Heaters Installation&Connection |  | 6d | 2017-05-28 | 2017-06-03 | CNF17MP23 SS+2d | 7d | 2d | COST [558.9 h] | 558.9 | MEW | TWR | F17 | MEP |  |
| CNF17MP27 |  | MEP Clearance To Close Apartments Ceilings | milestone | 0d | 2017-06-05 | 2017-06-05 | CNF17MP20, CNF17MP23, CNF17MP22, CNF17MP17, CNF17MP19, CNF17MP21, CNF17MP16, CNF17MP25, CNF17MP26, CNF17MP24 | 5d | 0d |  |  | MEW | TWR | F17 | MEP |  |
| CNF17MP29 |  | MEP Clearance To Close Corridors Ceilings | milestone | 0d | 2017-06-11 | 2017-06-11 | CNF17MP27 FF+5d | 12d | 0d |  |  | MEW | TWR | F17 | MEP |  |

| ID | WBS | Activity | Type | Duration | Start | Finish | Predecessors | Total float | Free float | Resources | Cost | TYPE OF WORK L4 | ZONE L1 | FLOOR L2 | CATEGORY OF WORK L3 |
| --- | --- | --- | --- | --- | --- | --- | --- | --- | --- | --- | --- | --- | --- | --- | --- |
|  | 1.3 | **MEP 3rd Fix** |  |  | 2017-07-26 | 2017-08-05 |  |  |  |  |  |  |  |  |  |
| CNF17MP28 |  | Civil Clearance To Start Final Fix | milestone | 0d | 2017-07-26 | 2017-07-26 | CNF17FN34, CNF17MP29, CNF17MP27 | 10d | 0d |  |  | MEW | TWR | F17 | MEP |
| CNF17MP30 |  | Hose Reel&Fire Extinguishers & Sprinklers |  | 4d | 2017-07-27 | 2017-07-31 | CNF16MP31, CNF17MP28 | 14d | 4d | COST [46832.8 h]; PIPE FITTER [128 h] | 46,832.8 | MEW | TWR | F17 | MEP |
| CNF17MP31 |  | Vertical Sprinkler Drops |  | 4d | 2017-07-27 | 2017-07-31 | CNF16MP14, CNF17MP28 | 14d | 4d | COST [4988.6 h]; PIPE FITTER [128 h] | 4,988.6 | MEW | TWR | F17 | MEP |
| CNF17MP32 |  | Installation of DBS |  | 4d | 2017-07-27 | 2017-07-31 | CNF16MP32, CNF17MP28 | 10d | 0d | COST [9929.4 h]; ELECTRICIAN [64 h] | 9,929.4 | MEW | TWR | F17 | MEP |
| CNF17MP33 |  | Installation of Panels / SmDBS |  | 4d | 2017-07-27 | 2017-07-31 | CNF16MP33, CNF17MP32 FF | 14d | 4d | COST [46476.1 h]; ELECTRICIAN [64 h] | 46,476.1 | MEW | TWR | F17 | MEP |
| CNF17MP34 |  | Installation of Fire Alarm Panel & Voice Alarm System |  | 4d | 2017-07-27 | 2017-07-31 | EN0PSPR40, CNF17MP28, CNF16MP34 | 14d | 4d | COST [20087.7 h]; ELECTRICIAN [160 h] | 20,087.7 | MEW | TWR | F17 | MEP |
| CNF17MP35 |  | Installation of Grills&Diffusers |  | 4d | 2017-07-27 | 2017-07-31 | CNF17MP28, CNF16MP37 | 10d | 0d | COST [3325.4 h]; DUCTMAN [192 h] | 3,325.4 | MEW | TWR | F17 | MEP |
| CNF17MP39 |  | Installation of Light Fitting & E.M Light |  | 4d | 2017-07-27 | 2017-07-31 | CNF17MP28, CNF17FN34, CNF16MP35 | 14d | 0d | COST [84000 h]; ELECTRICIAN [160 h] | 84,000 | LFX | TWR | F17 | MEP |
| CNF17MP40 |  | Installation of Wiring Accessories |  | 4d | 2017-07-27 | 2017-07-31 | CNF17MP39 FF, CNF16MP36 | 14d | 4d | COST [15564.6 h]; ELECTRICIAN [96 h] | 15,564.6 | MEW | TWR | F17 | MEP |
| CNF17MP36 |  | Installation of Telephone System |  | 4d | 2017-08-01 | 2017-08-05 | CNF17MP32, CNF16MP38 | 10d | 0d | COST [32690.3 h]; ELECTRICIAN [64 h] | 32,690.3 | MEW | TWR | F17 | MEP |
| CNF17MP37 |  | Installation of CCTV System |  | 4d | 2017-08-01 | 2017-08-05 | EN0PSPR44, CNF17MP32, CNF16MP39 | 10d | 0d | COST [8707.3 h]; ELECTRICIAN [64 h] | 8,707.3 | MEW | TWR | F17 | MEP |
| CNF17MP38 |  | Thermostat Fixing |  | 4d | 2017-08-01 | 2017-08-05 | CNF17MP35, CNF16MP40 | 10d | 0d | COST [1381 h]; ELECTRICIAN [64 h] | 1,381 | MEW | TWR | F17 | MEP |
| CNF17MP41 |  | MEP Final Fix Clearance | milestone | 0d | 2017-08-05 | 2017-08-05 | CNF17MP37, CNF17MP40, CNF17MP35, CNF17MP38, CNF17MP36, CNF17MP39, CNF17MP30, CNF17MP34, CNF17MP33, CNF17MP32, CNF17MP31, CNF17FN38, CNF17FN91, CNF16MP41 | 10d | 0d |  |  | MEW | TWR | F17 | MEP |
|  | 18 | **18th Floor** |  |  | 2017-02-14 | 2017-11-01 |  |  |  |  |  |  |  |  |  |
|  | 1.5.1.1.2.3.21 | **Concrete** |  |  | 2017-02-14 | 2017-03-01 |  |  |  |  |  |  |  |  |  |
| CNF18CW10 |  | Slab Form Work |  | 5d | 2017-02-14 | 2017-02-19 | CNF17CW18 FF+1d, CNF17CW18 SS+1d | 6d | 0d | COST [130248 h]; Shutter Carpenter [1360 h]; Helper [680 h]; Form Work [2504 M2] | 130,247.5 | STR | TWR | F18 | CON |
| CNF18CW15 |  | Slab Rebar & Post Tension Tendons |  | 5d | 2017-02-15 | 2017-02-20 | ENCMSRA10, CNF18CW10 SS+1d, CNF18CW10 FF+1d | 6d | 0d | COST [307860 h]; Steel Fixer [1160 h]; Helper [600 h]; Steel Rebars [41200 Kg] | 307,860 | RFT | TWR | F18 | CON |
| CNF18CW90 |  | TECOM Steel Inspection prior to concrete pouring | milestone | 0d | 2017-02-20 | 2017-02-20 | CNF18CW15 FF, CNF18CW91 | 6d | 0d |  |  |  | TWR | F18 | CON |
| CNF18CW20 |  | Slab Casting |  | 2d | 2017-02-21 | 2017-02-22 | CNF17CW14, ENCMSRA50, CNF18CW90, CNF18CW15 | 6d | 0d | COST [280875 h] | 280,875.1 | RFC | TWR | F18 | CON |
| CNF18CW35 |  | Columns and Walls Rebar |  | 5d | 2017-02-22 | 2017-02-27 | CNF18CW20 SS+1d | 6d | 0d | COST [91581 h]; Steel Fixer [1080 h]; Helper [560 h]; Steel Rebars [53200 Kg] | 91,581 | RFT | TWR | F18 | CON |
| CNF18CW30 |  | PT Tensioning and Grouting |  | 5d | 2017-02-23 | 2017-02-28 | CNF18CW20 | 11d | 5d | COST |  |  | TWR | F18 | CON |
| CNF18CW40 |  | Columns and Walls Form Work |  | 4d | 2017-02-25 | 2017-02-28 | CNF18CW35 SS+1d, CNF18CW35 FF+1d | 6d | 0d | COST [55600 h]; Shutter Carpenter [608 h]; Helper [320 h]; Form Work [2504 M2] | 55,600 | STR | TWR | F18 | CON |
| CNF18CW50 |  | Columns Casting |  | 3d | 2017-02-27 | 2017-03-01 | CNF18CW40 SS+1d, CNF18CW40 FF+1d | 6d | 0d | COST [67636.2 h] | 67,636.25 | RFC | TWR | F18 | CON |

| ID | WBS | Activity | Duration | Start | Finish | Predecessors | Total float | Free float | Resources | Cost | This Week Progress | TYPE OF WORK L4 | ZONE L1 | FLOOR L2 | CATEGORY OF WORK L3 |
| --- | --- | --- | --- | --- | --- | --- | --- | --- | --- | --- | --- | --- | --- | --- | --- |
|  | 1 | **Finishes** |  | 2017-05-10 | 2017-11-01 |  |  |  |  |  |  |  |  |  |  |
|  | 1.5.2.2.1.1.1 | **General** |  | 2017-05-10 | 2017-10-04 |  |  |  |  |  |  |  |  |  |  |
| CNF18FN10 |  | Block Works | 14d | 2017-05-10 | 2017-05-25 | ENCMSPR51, CNF17FN10 | 1d | 0d | COST [389617 h]; Helper [1232 h]; Mason [2352 h]; Block [3733 M2] | 389,616.79 | GR | B4-MAS | TWR | F18 | FNS |
| CNF18FN12 |  | Doors Sub Frames | 9d | 2017-05-20 | 2017-05-29 | CNF18FN10 SS+8d | 10d | 7d | COST [7164 h]; Sub-Frames [108 No] | 7,164 |  | B6-WDR | TWR | F18 | FNS |
| CNF18FN13 |  | Internal Walls Plaster Works | 11d | 2017-05-28 | 2017-06-08 | CNF18FN12 SS, CNF18MP14 | 3d | 0d | COST [121269 h]; Helper [616 h]; Mason [1232 h]; Plastering [3294 M2] | 121,268.81 |  | PLS | TWR | F18 | FNS |
| CNF18FN14 |  | Balconies Ceiling Plaster | 6d | 2017-06-10 | 2017-06-15 | CNF17FN14, CNF18FN13 | 23d | 0d | COST [33575.2 h]; Plastering [375 M2] | 33,575.25 |  | BCP | TWR | F18 | FNS |
| CNF18FN18 |  | Emulsion Paint for Balconies Ceiling | 3d | 2017-06-17 | 2017-06-19 | CNF17FN18, ENCMSPR57, CNF18FN14 | 23d | 0d | COST [5924 h]; Painter [96 h]; Paint [375 M2] | 5,924 |  | BLP | TWR | F18 | FNS |
| CNF18FN32 |  | Balconies Glazing & Aluminium Handrail | 15d | 2017-07-06 | 2017-07-23 | CNF17FN32, CNF18FN31 SS+2d, CNF18FN19 | 24d | 0d | COST [150000 h]; Helper [120 h]; Aluminium Labor [120 h] | 150,000 |  | ALM | TWR | F18 | FNS |
| CNF18FN98 |  | Internal Signage | 3d | 2017-08-22 | 2017-08-24 | CNF18FN37, CNF17FN98 | 8d | 0d | COST [7827 h]; Signage Labor [96 h] | 7,827 |  | SGN | TWR | F18 | FNS |
| CNF18FN48 |  | Paint Final Coat | 3d | 2017-10-02 | 2017-10-04 | CNF18FN38, CNF18FN43, CNF18FN32, CNF18FN42, CNF18FN39, CNF18FN40, CNF17FN48 | 17d | 0d | COST [3000 h]; Painter [456 h]; Paint [3294 M2] | 3,000 |  | PFC | TWR | F18 | FNS |
|  | 1.5.2.2.1.1.2 | **Apartments** |  | 2017-06-10 | 2017-09-02 |  |  |  |  |  |  |  |  |  |  |
|  | 1.5.2.2.1.1.2.1 | **Dry Area** |  | 2017-06-10 | 2017-08-19 |  |  |  |  |  |  |  |  |  |  |
| CNF18FN15 |  | Wall Paint Primer & Stucco | 12d | 2017-06-10 | 2017-06-22 | ENCMSPR53, CNF18FN13 | 3d | 0d | COST [43043.6 h]; Painter [864 h]; Paint [3294 M2] | 43,043.56 | Dry | PNT | TWR | F18 | FNS |
| CNF18FN31 |  | Aluminium Doors | 12d | 2017-06-10 | 2017-06-22 | CNF17FN31, EN0PSPR13 SS+120d, CNF18FN13 | 13d | 2d | Aluminium Labor [96 h]; Helper [192 h]; COST [470000 h] | 470,000 | Dry | ALM | TWR | F18 | FNS |
| CNF18FN20 |  | Gypsum Board for Ceiling | 11d | 2017-06-24 | 2017-07-08 | CNF18MP27, ENCMSPR54 FS+14d, CNF18FN15, CNF17FN20 | 3d | 1d | COST [156953 h]; False Ceiling Fixer [968 h]; Gypsum Board [1300 M2] | 156,952.61 | Dry | GYP | TWR | F18 | FNS |
| CNF18FN16 |  | Paint for Ceiling | 12d | 2017-07-10 | 2017-07-23 | CNF17FN16, CNF18FN20 | 68d | 0d | COST [29459 h]; Painter [288 h]; Paint [1300 M2] | 29,459 | Dry | CPN | TWR | F18 | FNS |
| CNF18FN24 |  | Ceramic for Floors | 11d | 2017-07-11 | 2017-07-23 | CNF18FN31, CNF18FN20, CNF17FN24, EN0PCPR14 SS+120d | 1d | 0d | COST [135350 h]; Helper [176 h]; Mason [264 h]; Apartment Tiles [1300 M2] | 135,350.21 | Dry | TAP | TWR | F18 | FNS |
| CNF18FN90 |  | Door Frames | 5d | 2017-07-24 | 2017-07-29 | CNF17FN90, CNF18FN19, CNF18FN24 | 2d | 0d | Helper [80 h]; COST [107500 h]; Doors Carpenter [80 h] | 107,500 |  | DRI | TWR | F18 | FNS |
| CNF18FN34 |  | Door Shutters | 8d | 2017-07-30 | 2017-08-07 | CNF18FN90, EN0PSPR18 SS+180d, CNF18FN24, CNF18FN19, CNF18FN31, CNF17FN34 | 2d | 0d | Helper [128 h]; COST [200000 h]; Doors Carpenter [128 h] | 200,000 | Dry | APD | TWR | F18 | FNS |
| CNF18FN38 |  | Door Ironmongeries | 10d | 2017-07-30 | 2017-08-09 | CNF17FN38, EN0PSPR202 SS+45d, CNF18FN34 SS | 14d | 0d | Finishings Carpenter [80 h]; Helper [80 h]; COST [28500 h] | 28,500 | Dry | DRI | TWR | F18 | FNS |
| CNF18FN91 |  | Thresholds | 10d | 2017-07-30 | 2017-08-09 | CNF17FN91, EN0PCPR12 SS+90d, CNF18FN34 SS | 14d | 0d | Finishings Carpenter [160 h]; Helper [160 h]; COST [24887.2 h] | 24,887.25 |  | THR | TWR | F18 | FNS |
| CNF18FN39 |  | Wooden Wardrobes | 10d | 2017-08-08 | 2017-08-19 | CNF17FN39, EN0PSPR38 SS+120d, CNF18FN34, CNF18FN24 | 6d | 0d | Wooden Wardrobes Carpenter [80 h]; Helper [80 h]; COST [87100 h] | 87,100 | Dry | WRD | TWR | F18 | FNS |
|  | 1.5.2.2.1.1.2.2 | **Wet Area** |  | 2017-06-10 | 2017-09-02 |  |  |  |  |  |  |  |  |  |  |
| CNF18FN17 |  | Ceramic for Walls | 11d | 2017-06-10 | 2017-06-21 | CNF17FN17, CNF18FN13, EN0PCPR15 SS+120d, EN0PCPR90 SS+120d | 13d | 0d | COST [164439 h]; Helper [352 h]; Mason [704 h]; Wet Area Tiles [1700 M2] | 164,438.55 | Wet | WLW | TWR | F18 | FNS |
| CNF18FN19 |  | Ceramic For Floors in Balconies | 6d | 2017-06-20 | 2017-06-26 | CNF18FN18, EN0PCPR13 SS+120d | 23d | 6d | COST [35088.2 h]; Helper [48 h]; Mason [96 h]; Balconies Floor Tiles [375 M2] | 35,088.15 |  | FLB | TWR | F18 | FNS |
| CNF18FN21 |  | False Ceiling | 15d | 2017-06-22 | 2017-07-11 | CNF18MP27, ENCMSPR55, CNF18FN17 | 13d | 0d | COST [46376.4 h]; False Ceiling Fixer [600 h]; False Ceiling [695 M2] | 46,376.44 | Wet | CWT | TWR | F18 | FNS |
| CNF18FN29 |  | Bathtubs | 5d | 2017-06-22 | 2017-06-29 | CNF18FN17, EN0PSPR204 SS+45d, CNF17FN29 | 27d | 8d | COST [35625 h] | 35,625 | Wet | bth | TWR | F18 | FNS |
| CNF18FN23 |  | Water Proofing | 12d | 2017-07-12 | 2017-07-25 | CNF18FN29 SS+1d, ENCMSPR56, CNF18FN21, CNF17FN23 | 13d | 0d | COST [102613 h]; Water Proofing [553 M2] | 102,613 | Wet | WPR | TWR | F18 | FNS |
| CNF18FN30 |  | Ceramic for Floor | 12d | 2017-07-26 | 2017-08-08 | CNF18FN29, CNF18FN23, CNF17FN30, EN0PCPR15 SS+120d, EN0PCPR90 SS+120d | 13d | 2d | COST [27945.1 h]; Helper [96 h]; Mason [96 h]; Wet Area Tiles [178 M2] | 27,945.08 | Wet | FLW | TWR | F18 | FNS |
| CNF18FN40 |  | Sanitary Ware&Accessories | 6d | 2017-08-08 | 2017-08-14 | CNF19FN29, CNF18FN42 SS, CNF18FN34, CNF18FN19, CNF18FN29, CNF17FN40 | 2d | 0d | COST [100588 h] | 100,588.24 | Wet | SWR | TWR | F18 | FNS |
| CNF18FN42 |  | Vanity Counter | 8d | 2017-08-08 | 2017-08-16 | EN0PSPR52 SS+90d, CNF18FN19, CNF18FN34, CNF17FN42 | 2d | 0d | COST [86000 h]; Helper [192 h]; Vanity Counters Labor [192 h] | 86,000 | Wet | VNC | TWR | F18 | FNS |
| CNF18FN43 |  | Kitchen Cabinet | 11d | 2017-08-09 | 2017-08-21 | EN0PSPR37 SS+120d, CNF18FN19, CNF18FN34, CNF17FN43 | 3d | 0d | COST [93417 h]; Helper [88 h]; Kitchen Cabinet Carpenter [88 h] | 93,417 | Wet | KCB | TWR | F18 | FNS |
| CNF18FN44 |  | Glass Enclosure | 7d | 2017-08-15 | 2017-08-22 | CNF17FN44, EN0PSPR15 SS+90d, CNF18FN40 | 2d | 0d | COST [50000 h]; Helper [56 h]; Glass Enclosure Labor [56 h] | 50,000 | Wet | ALM | TWR | F18 | FNS |
| CNF18FN47 |  | Mirrors & Toilet Accessories | 6d | 2017-08-23 | 2017-09-02 | CNF17FN47, EN0PSPR23 SS+60d, CNF18FN40, CNF18FN44 | 2d | 1d | COST [86000 h]; Helper [96 h]; Mirrors Labor [48 h] | 86,000 | Wet | MRA | TWR | F18 | FNS |

| ID | WBS | Activity | Type | Duration | Start | Finish | Predecessors | Total float | Free float | Resources | Cost | This Week Progress | TYPE OF WORK L4 | ZONE L1 | FLOOR L2 | CATEGORY OF WORK L3 |
| --- | --- | --- | --- | --- | --- | --- | --- | --- | --- | --- | --- | --- | --- | --- | --- | --- |
|  | 1.5.2.2.1.1.3 | **Lift Lobby & Corridor** |  |  | 2017-07-01 | 2017-11-01 |  |  |  |  |  |  |  |  |  |  |
| CNF18FN99 |  | Ceiling Finishes |  | 12d | 2017-07-01 | 2017-07-13 | CNF17FN99, EN0PSPR200 SS+90d, CNF18MP29 | 10d | 0d | COST [46000 h]; False Ceiling Fixer [192 h] | 46,000 | LL | IDC | TWR | F18 | FNS |
| CNF18FN27 |  | Wall Finishes |  | 12d | 2017-07-15 | 2017-07-27 | CNF17FN27 FF, CNF18FN99, CNF17FN27, EN0PSPR201 SS+90d, CNF18FN13 | 10d | 0d | COST [59722 h]; Helper [192 h]; Mason [288 h] | 59,722 | LL | IDW | TWR | F18 | FNS |
| CNF18FN37 |  | Floor Finishes |  | 10d | 2017-07-29 | 2017-08-08 | CNF17FN37, EN0PSPR30 SS+90d, CNF18FN27 | 12d | 4d | COST [52113 h]; Helper [80 h]; Mason [80 h] | 52,113 | LL | IDF | TWR | F18 | FNS |
| CNF18FN93 |  | Carpet Laying |  | 3d | 2017-10-30 | 2017-11-01 | CNF17FN93, CNF18FN37, ATDCD1030 | 4d | 0d | COST [9109 h] | 9,109 |  | IDR | TWR | F18 | FNS |
|  | 1.5.2.2.1.1.4 | **Common Areas/Service Rooms** |  |  | 2017-07-08 | 2017-08-20 |  |  |  |  |  |  |  |  |  |  |
|  | 1 | **Service Rooms** |  |  | 2017-07-08 | 2017-08-01 |  |  |  |  |  |  |  |  |  |  |
| CNF18FN25 |  | Epoxy Primer Paint for Ceiling |  | 6d | 2017-07-08 | 2017-07-13 | ENCMSPR52, CNF17FN25 | 3d | 0d | COST [3833.81 h]; Painter [48 h] | 3,833.81 | Services | EPC | TWR | F18 | FNS |
| CNF18FN28 |  | Acrylic Emulsion Primer Paint & Stucco for Wall |  | 6d | 2017-07-15 | 2017-07-20 | CNF18FN25 | 3d | 0d | COST [3248.62 h]; Painter [48 h] | 3,248.62 | Services | SRW | TWR | F18 | FNS |
| CNF18FN33 |  | Epoxy Primer Paint for Floor |  | 6d | 2017-07-22 | 2017-07-27 | ENCMSPR52, CNF18FN28 | 3d | 0d | COST [2379.32 h]; Painter [48 h] | 2,379.32 | Service | EPF | TWR | F18 | FNS |
| CNF18FN35 |  | Timber Doors |  | 4d | 2017-07-29 | 2017-08-01 | CNF18FN33, CNF17FN35 | 23d | 0d | COST [58000 h]; Doors Carpenter [32 h]; Helper [32 h] | 58,000 | Service | SRD | TWR | F18 | FNS |
|  | 2 | **Stairs** |  |  | 2017-07-29 | 2017-08-20 |  |  |  |  |  |  |  |  |  |  |
| CNF18FN36 |  | Epoxy Primer Paint for Ceiling |  | 4d | 2017-07-29 | 2017-08-01 | ENCMSPR52, CNF18FN33 | 3d | 0d | COST [599 h]; Painter [32 h] | 599 | Stairs | EPC | TWR | F18 | FNS |
| CNF18FN41 |  | Acrylic Emulsion Primer Paint & Stucco for Walls |  | 4d | 2017-08-02 | 2017-08-06 | CNF18FN36, CNF17FN41 | 3d | 0d | COST [3695.62 h]; Painter [32 h] | 3,695.62 | Stairs | SRW | TWR | F18 | FNS |
| CNF18FN45 |  | Epoxy Primer Paint for Floor |  | 4d | 2017-08-07 | 2017-08-10 | ENCMSPR52, CNF18FN41 | 8d | 0d | COST [8129.16 h]; Painter [32 h] | 8,129.16 | Stairs | EPF | TWR | F18 | FNS |
| CNF18FN80 |  | Stair Handrail |  | 4d | 2017-08-12 | 2017-08-15 | CNF18FN45 | 8d | 0d | COST [30000 h]; Helper [64 h]; Aluminium Labor [32 h] | 30,000 | Stairs | B5-MTW | TWR | F18 | FNS |
| CNF18FN46 |  | Steel Doors |  | 4d | 2017-08-16 | 2017-08-20 | CNF18FN80, EN0PSPR31 SS+60d, CNF18FN45, CNF17FN46 | 8d | 0d | Steel Works Labor [32 h]; Helper [64 h]; COST [31730.8 h] | 31,730.81 | Stairs | STD | TWR | F18 | FNS |
|  | 1.1 | **MEP** |  |  | 2017-02-15 | 2017-08-16 |  |  |  |  |  |  |  |  |  |  |
|  | 1.1 | **MEP 1st Fix** |  |  | 2017-02-15 | 2017-05-27 |  |  |  |  |  |  |  |  |  |  |
| CNF18CW91 |  | MEP Conduits for the slab |  | 5d | 2017-02-15 | 2017-02-20 | CNF18CW15 SS, CNF18CW15 FF | 6d | 0d | COST [214225 h]; ELECTRICIAN [800 h]; PLUMBER [400 h] | 214,225.1 |  | MEW | TWR | F18 | CON |
| CNF18FN11 |  | Walls Cutting & Chasing |  | 7d | 2017-05-20 | 2017-05-27 | CNF18FN10 SS+8d | 3d | 0d | COST [6151 h] | 6,151 | GR | MEW | TWR | F18 | FNS |
| CNF18MP10 |  | Civil Clearance To Start 1st Fix | milestone | 0d | 2017-05-22 | 2017-05-22 | EN0PSRA67, EN0PSRA02, EN0PSRA70, EN0PSRA73, EN0PSRA41, EN0PSRA44, EN0PSRA49, EN0PSRA54, EN0PSRA58, EN0PSRA62, EN0PSRA76, EN0PSRA80, CNF18FN11 SS+2d | 3d | 0d |  |  |  | MEW | TWR | F18 | MEP |
| CNF18MP11 |  | Drainage Pipes ( In Walls) |  | 5d | 2017-05-22 | 2017-05-27 | CNF18MP10, CNF17MP11 | 3d | 0d | COST [15528 h]; PLUMBER [240 h] | 15,528 |  | MEW | TWR | F18 | MEP |
| CNF18MP12 |  | Water Supply Pipes ( In Walls) |  | 5d | 2017-05-22 | 2017-05-27 | CNF18MP10, CNF17MP12 | 3d | 0d | COST [26928.4 h]; PLUMBER [240 h] | 26,928.4 |  | MEW | TWR | F18 | MEP |
| CNF18MP13 |  | Sleeves,Conduites,Gi Box,DB Box In Wall |  | 5d | 2017-05-22 | 2017-05-27 | CNF18MP10, CNF17MP13 | 3d | 0d | COST [48200.5 h]; ELECTRICIAN [80 h] | 48,200.5 |  | MEW | TWR | F18 | MEP |
| CNF18MP14 |  | MEP Clearance To Start Plaster | milestone | 0d | 2017-05-27 | 2017-05-27 | CNF18MP11, CNF18MP12, CNF18MP13 | 3d | 0d |  |  |  | MEW | TWR | F18 | MEP |

| ID | WBS | Activity | Type | Duration | Start | Finish | Predecessors | Total float | Free float | Resources | Cost | TYPE OF WORK L4 | ZONE L1 | FLOOR L2 | CATEGORY OF WORK L3 |
| --- | --- | --- | --- | --- | --- | --- | --- | --- | --- | --- | --- | --- | --- | --- | --- |
|  | 1.2 | **MEP 2nd Fix** |  |  | 2017-06-08 | 2017-06-29 |  |  |  |  |  |  |  |  |  |
| CNF18MP15 |  | Civil Clearance To Start 2nd Fix | milestone | 0d | 2017-06-08 | 2017-06-08 | CNF18FN13 | 4d | 0d |  |  | MEW | TWR | F18 | MEP |
| CNF18MP16 |  | LPG Piping |  | 10d | 2017-06-10 | 2017-06-20 | EN0PSPR11 FS+7d, CNF18FN13, CNF17MP16 | 5d | 1d | COST [67153.8 h]; PIPE FITTER [320 h] | 67,153.8 | MEW | TWR | F18 | MEP |
| CNF18MP17 |  | Fire Fighting Pipes (Mains/Branches) |  | 10d | 2017-06-10 | 2017-06-20 | CNF18FN13, CNF17MP17 | 5d | 1d | COST [79182 h]; PIPE FITTER [480 h] | 79,182 | MEW | TWR | F18 | MEP |
| CNF18MP18 |  | Ducting Work Including Insulation |  | 10d | 2017-06-10 | 2017-06-20 | CNF18FN13, CNF17MP18 | 5d | 0d | COST [186091 h]; DUCTMAN [640 h] | 186,091.2 | MEW | TWR | F18 | MEP |
| CNF18MP19 |  | Installation of FCUs & Fans |  | 10d | 2017-06-10 | 2017-06-20 | CNF18MP18 FF, CNF17MP19 | 5d | 1d | COST [132302 h]; AC TECHNICIAN [480 h] | 132,302.1 | MEW | TWR | F18 | MEP |
| CNF18MP20 |  | Chilled Water Pipes (High L) |  | 10d | 2017-06-10 | 2017-06-20 | CNF18FN13, CNF17MP20 | 5d | 1d | COST [109870 h]; AC TECHNICIAN [640 h] | 109,870.1 | MEW | TWR | F18 | MEP |
| CNF18MP24 |  | Cable Tray / Trunking |  | 10d | 2017-06-10 | 2017-06-20 | CNF18MP15, CNF18MP13, CNF17MP24 | 5d | 1d | COST [153534 h]; ELECTRICIAN [320 h] | 153,534.2 | MEW | TWR | F18 | MEP |
| CNF18MP21 |  | Drainage Pipes (High L) |  | 10d | 2017-06-11 | 2017-06-21 | CNF18MP15 FS+1d, CNF17MP21 | 4d | 0d | COST [121568 h]; PLUMBER [640 h] | 121,568.3 | MEW | TWR | F18 | MEP |
| CNF18MP22 |  | Wires |  | 7d | 2017-06-11 | 2017-06-18 | CNF18MP13, CNF18MP15 FS+1d, CNF17MP22 | 7d | 3d | COST [153534 h]; ELECTRICIAN [1232 h] | 153,534.2 | MEW | TWR | F18 | MEP |
| CNF18MP23 |  | Water Supply Pipes (High L) |  | 10d | 2017-06-11 | 2017-06-21 | CNF18MP21 FF, CNF17MP23 | 4d | 0d | COST [141452 h]; PLUMBER [480 h] | 141,451.6 | MEW | TWR | F18 | MEP |
| CNF18MP25 |  | Acoustic Drainage Pipe Insulation |  | 8d | 2017-06-13 | 2017-06-21 | CNF18MP21 SS+2d, CNF17MP25 | 4d | 0d | COST [3763.1 h]; PLUMBER [256 h] | 3,763.1 | MEW | TWR | F18 | MEP |
| CNF18MP26 |  | Water Heaters Installation&Connection |  | 6d | 2017-06-13 | 2017-06-19 | CNF18MP23 SS+2d | 6d | 2d | COST [558.9 h] | 558.9 | MEW | TWR | F18 | MEP |
| CNF18MP27 |  | MEP Clearance To Close Apartments Ceilings | milestone | 0d | 2017-06-21 | 2017-06-21 | CNF18MP20, CNF18MP23, CNF18MP22, CNF18MP17, CNF18MP19, CNF18MP21, CNF18MP16, CNF18MP25, CNF18MP26, CNF18MP24 | 4d | 0d |  |  | MEW | TWR | F18 | MEP |
| CNF18MP29 |  | MEP Clearance To Close Corridors Ceilings | milestone | 0d | 2017-06-29 | 2017-06-29 | CNF18MP27 FF+5d | 10d | 0d |  |  | MEW | TWR | F18 | MEP |
|  | 1.3 | **MEP 3rd Fix** |  |  | 2017-08-07 | 2017-08-16 |  |  |  |  |  |  |  |  |  |
| CNF18MP28 |  | Civil Clearance To Start Final Fix | milestone | 0d | 2017-08-07 | 2017-08-07 | CNF18FN34, CNF18MP29, CNF18MP27 | 8d | 0d |  |  | MEW | TWR | F18 | MEP |
| CNF18MP30 |  | Hose Reel&Fire Extinguishers & Sprinklers |  | 4d | 2017-08-08 | 2017-08-12 | CNF17MP30, CNF18MP28 | 13d | 4d | COST [46832.8 h]; PIPE FITTER [128 h] | 46,832.8 | MEW | TWR | F18 | MEP |
| CNF18MP31 |  | Vertical Sprinkler Drops |  | 4d | 2017-08-08 | 2017-08-12 | CNF17MP31, CNF18MP28 | 13d | 4d | COST [4988.6 h]; PIPE FITTER [128 h] | 4,988.6 | MEW | TWR | F18 | MEP |
| CNF18MP32 |  | Installation of DBS |  | 4d | 2017-08-08 | 2017-08-12 | CNF17MP32, CNF18MP28 | 8d | 0d | COST [9929.4 h]; ELECTRICIAN [64 h] | 9,929.4 | MEW | TWR | F18 | MEP |
| CNF18MP33 |  | Installation of Panels / SmDBS |  | 4d | 2017-08-08 | 2017-08-12 | CNF17MP33, CNF18MP32 FF | 13d | 4d | COST [46476.1 h]; ELECTRICIAN [64 h] | 46,476.1 | MEW | TWR | F18 | MEP |
| CNF18MP34 |  | Installation of Fire Alarm Panel & Voice Alarm System |  | 4d | 2017-08-08 | 2017-08-12 | EN0PSPR40, CNF18MP28, CNF17MP34 | 13d | 4d | COST [20087.7 h]; ELECTRICIAN [160 h] | 20,087.7 | MEW | TWR | F18 | MEP |
| CNF18MP35 |  | Installation of Grills&Diffusers |  | 4d | 2017-08-08 | 2017-08-12 | CNF18MP28, CNF17MP35 | 8d | 0d | COST [3325.4 h]; DUCTMAN [192 h] | 3,325.4 | MEW | TWR | F18 | MEP |
| CNF18MP39 |  | Installation of Light Fitting & E.M Light |  | 4d | 2017-08-08 | 2017-08-12 | CNF18MP28, CNF18FN34, CNF17MP39 | 13d | 0d | COST [84000 h]; ELECTRICIAN [160 h] | 84,000 | LFX | TWR | F18 | MEP |
| CNF18MP40 |  | Installation of Wiring Accessories |  | 4d | 2017-08-08 | 2017-08-12 | CNF18MP39 FF, CNF17MP40 | 13d | 4d | COST [15564.6 h]; ELECTRICIAN [96 h] | 15,564.6 | MEW | TWR | F18 | MEP |
| CNF18MP36 |  | Installation of Telephone System |  | 4d | 2017-08-13 | 2017-08-16 | CNF18MP32, CNF17MP36 | 14d | 0d | COST [32690.3 h]; ELECTRICIAN [64 h] | 32,690.3 | MEW | TWR | F18 | MEP |
| CNF18MP37 |  | Installation of CCTV System |  | 4d | 2017-08-13 | 2017-08-16 | EN0PSPR44, CNF18MP32, CNF17MP37 | 9d | 0d | COST [8707.3 h]; ELECTRICIAN [64 h] | 8,707.3 | MEW | TWR | F18 | MEP |
| CNF18MP38 |  | Thermostat Fixing |  | 4d | 2017-08-13 | 2017-08-16 | CNF18MP35, CNF17MP38 | 9d | 0d | COST [1381 h]; ELECTRICIAN [64 h] | 1,381 | MEW | TWR | F18 | MEP |
| CNF18MP41 |  | MEP Final Fix Clearance | milestone | 0d | 2017-08-16 | 2017-08-16 | CNF18MP37, CNF18MP40, CNF18MP35, CNF18MP38, CNF18MP36, CNF18MP39, CNF18MP30, CNF18MP34, CNF18MP33, CNF18MP32, CNF18MP31, CNF18FN38, CNF18FN91, CNF17MP41 | 18d | 9d |  |  | MEW | TWR | F18 | MEP |

| ID | WBS | Activity | Type | Duration | Start | Finish | Predecessors | Total float | Free float | Resources | Cost | TYPE OF WORK L4 | ZONE L1 | FLOOR L2 | CATEGORY OF WORK L3 | This Week Progress |
| --- | --- | --- | --- | --- | --- | --- | --- | --- | --- | --- | --- | --- | --- | --- | --- | --- |
|  | 19 | **19th Floor** |  |  | 2017-02-28 | 2017-11-05 |  |  |  |  |  |  |  |  |  |  |
|  | 1.5.1.1.2.3.21 | **Concrete** |  |  | 2017-02-28 | 2017-03-15 |  |  |  |  |  |  |  |  |  |  |
| CNF19CW10 |  | Slab Form Work |  | 5d | 2017-02-28 | 2017-03-05 | CNF18CW50 FF+1d, CNF18CW50 SS+1d | 6d | 0d | COST [118882 h]; Shutter Carpenter [1360 h]; Helper [680 h]; Form Work [2504 M2] | 118,882.5 | STR | TWR | F19 | CON |  |
| CNF19CW15 |  | Slab Rebar & Post Tension Tendons |  | 5d | 2017-03-01 | 2017-03-06 | ENCMSRA10, CNF19CW10 SS+1d, CNF19CW10 FF+1d | 6d | 0d | COST [280040 h]; Steel Fixer [1160 h]; Helper [600 h]; Steel Rebars [41200 Kg] | 280,040.13 | RFT | TWR | F19 | CON |  |
| CNF19CW90 |  | TECOM Steel Inspection prior to concrete pouring | milestone | 0d | 2017-03-06 | 2017-03-06 | CNF19CW15 FF, CNF19CW91 | 6d | 0d |  |  |  | TWR | F19 | CON |  |
| CNF19CW20 |  | Slab Casting |  | 2d | 2017-03-07 | 2017-03-08 | CNF18CW30, ENCMSRA50, CNF19CW90, CNF19CW15 | 6d | 0d | COST [255995 h] | 255,995.1 | RFC | TWR | F19 | CON |  |
| CNF19CW35 |  | Columns and Walls Rebar |  | 5d | 2017-03-08 | 2017-03-13 | CNF19CW20 SS+1d | 6d | 0d | COST [91581 h]; Steel Fixer [1080 h]; Helper [560 h]; Steel Rebars [53200 Kg] | 91,581 | RFT | TWR | F19 | CON |  |
| CNF19CW30 |  | PT Tensioning and Grouting |  | 5d | 2017-03-09 | 2017-03-14 | CNF19CW20 | 11d | 5d | COST |  |  | TWR | F19 | CON |  |
| CNF19CW40 |  | Columns and Walls Form Work |  | 4d | 2017-03-11 | 2017-03-14 | CNF19CW35 SS+1d, CNF19CW35 FF+1d | 6d | 0d | COST [55600 h]; Shutter Carpenter [608 h]; Helper [320 h]; Form Work [2504 M2] | 55,600 | STR | TWR | F19 | CON |  |
| CNF19CW50 |  | Columns Casting |  | 3d | 2017-03-13 | 2017-03-15 | CNF19CW40 SS+1d, CNF19CW40 FF+1d | 6d | 0d | COST [67636.2 h] | 67,636.25 | RFC | TWR | F19 | CON |  |
|  | 1 | **Finishes** |  |  | 2017-05-27 | 2017-11-05 |  |  |  |  |  |  |  |  |  |  |
|  | 1.5.2.2.1.1.1 | **General** |  |  | 2017-05-27 | 2017-10-08 |  |  |  |  |  |  |  |  |  |  |
| CNF19FN10 |  | Block Works |  | 14d | 2017-05-27 | 2017-06-11 | ENCMSPR51, CNF18FN10 | 1d | 0d | COST [389617 h]; Helper [1232 h]; Mason [2352 h]; Block [3733 M2] | 389,616.79 | B4-MAS | TWR | F19 | FNS |  |
| CNF19FN12 |  | Doors Sub Frames |  | 9d | 2017-06-05 | 2017-06-14 | CNF19FN10 SS+8d | 8d | 7d | COST [7164 h]; Sub-Frames [108 No] | 7,164 | B6-WDR | TWR | F19 | FNS |  |
| CNF19FN13 |  | Internal Walls Plaster Works |  | 11d | 2017-06-13 | 2017-06-25 | CNF19FN12 SS, CNF19MP14 | 1d | 0d | COST [121269 h]; Helper [616 h]; Mason [1232 h]; Plastering [3294 M2] | 121,268.81 | PLS | TWR | F19 | FNS | GR |
| CNF19FN14 |  | Balconies Ceiling Plaster |  | 6d | 2017-06-26 | 2017-07-04 | CNF18FN14, CNF19FN13 | 19d | 0d | COST [33575.2 h]; Plastering [375 M2] | 33,575.25 | BCP | TWR | F19 | FNS | GR |
| CNF19FN18 |  | Emulsion Paint for Balconies Ceiling |  | 3d | 2017-07-05 | 2017-07-08 | CNF18FN18, ENCMSPR57, CNF19FN14 | 19d | 0d | COST [5924 h]; Painter [96 h]; Paint [375 M2] | 5,924 | BLP | TWR | F19 | FNS | GR |
| CNF19FN32 |  | Balconies Glazing & Aluminium Handrail |  | 15d | 2017-07-24 | 2017-08-09 | CNF18FN32, CNF19FN31 SS+2d, CNF19FN19 | 24d |  | COST [200000 h]; Helper [120 h]; Aluminium Labor [120 h] | 200,000 | ALM | TWR | F19 | FNS | GR |
| CNF19FN98 |  | Internal Signage |  | 3d | 2017-08-26 | 2017-08-28 | CNF19FN37, CNF18FN98 | 8d |  | COST [7755 h]; Signage Labor [96 h] | 7,755 | SGN | TWR | F19 | FNS |  |
| CNF19FN48 |  | Paint Final Coat |  | 3d | 2017-10-05 | 2017-10-08 | CNF19FN38, CNF19FN43, CNF19FN32, CNF19FN42, CNF19FN39, CNF19FN40, CNF18FN48, CNF19FN16 | 17d | 0d | COST [3000 h]; Painter [456 h]; Paint [3294 M2] | 3,000 | PFC | TWR | F19 | FNS | GR |
|  | 1.5.2.2.1.1.2 | **Apartments** |  |  | 2017-06-26 | 2017-09-09 |  |  |  |  |  |  |  |  |  |  |
|  | 1.5.2.2.1.1.2.1 | **Dry Area** |  |  | 2017-06-26 | 2017-09-03 |  |  |  |  |  |  |  |  |  |  |
| CNF19FN15 |  | Wall Paint Primer & Stucco |  | 12d | 2017-06-26 | 2017-07-11 | ENCMSPR53, CNF19FN13 | 1d | 0d | COST [43043.6 h]; Painter [864 h]; Paint [3294 M2] | 43,043.56 | PNT | TWR | F19 | FNS | Dry |
| CNF19FN31 |  | Aluminium Doors |  | 12d | 2017-06-26 | 2017-07-11 | CNF18FN31, EN0PSPR13 SS+120d, CNF19FN13 | 11d | 10d | Aluminium Labor [96 h]; Helper [192 h]; COST [470000 h] | 470,000 | ALM | TWR | F19 | FNS | Dry |
| CNF19FN20 |  | Gypsum Board for Ceiling |  | 10d | 2017-07-12 | 2017-07-23 | CNF19MP27, ENCMSPR54 FS+14d, CNF19FN15, CNF18FN20 | 1d | 0d | COST [156953 h]; False Ceiling Fixer [880 h]; Gypsum Board [1300 M2] | 156,952.61 | GYP | TWR | F19 | FNS | Dry |
| CNF19FN16 |  | Paint for Ceiling |  | 9d | 2017-07-24 | 2017-08-02 | CNF19FN20, CNF18FN16 | 68d | 51d | COST [29459 h]; Painter [216 h]; Paint [1300 M2] | 29,459 | CPN | TWR | F19 | FNS | Dry |
| CNF19FN24 |  | Ceramic for Floors |  | 11d | 2017-07-24 | 2017-08-05 | CNF19FN31, CNF19FN20, CNF18FN24, EN0PCPR14 SS+120d | 1d | 0d | COST [135350 h]; Helper [176 h]; Mason [264 h]; Apartment Tiles [1300 M2] | 135,350.21 | TAP | TWR | F19 | FNS | Dry |
| CNF19FN90 |  | Door Frames |  | 4d | 2017-08-06 | 2017-08-09 | CNF18FN90, CNF19FN19, CNF19FN24 | 1d | 0d | Helper [64 h]; COST [107500 h]; Doors Carpenter [64 h] | 107,500 | DRI | TWR | F19 | FNS |  |
| CNF19FN34 |  | Door Shutters |  | 7d | 2017-08-10 | 2017-08-17 | CNF19FN90, EN0PSPR18 SS+180d, CNF19FN24, CNF19FN19, CNF18FN34 | 1d | 0d | Helper [112 h]; COST [200000 h]; Doors Carpenter [112 h] | 200,000 | APD | TWR | F19 | FNS | Dry |
| CNF19FN38 |  | Door Ironmongeries |  | 10d | 2017-08-10 | 2017-08-21 | CNF18FN38, EN0PSPR202 SS+45d, CNF19FN34 SS | 14d | 5d | Finishings Carpenter [80 h]; Helper [80 h]; COST [28500 h] | 28,500 | DRI | TWR | F19 | FNS | Dry |
| CNF19FN91 |  | Thresholds |  | 10d | 2017-08-10 | 2017-08-21 | CNF18FN91, EN0PCPR12 SS+90d, CNF19FN34 SS | 14d | 5d | Finishings Carpenter [160 h]; Helper [160 h]; COST [24887.2 h] | 24,887.25 | THR | TWR | F19 | FNS |  |
| CNF19FN39 |  | Wooden Wardrobes |  | 10d | 2017-08-20 | 2017-09-03 | CNF18FN39, EN0PSPR38 SS+120d, CNF19FN34, CNF19FN24 | 6d |  | Wooden Wardrobes Carpenter [80 h]; Helper [80 h]; COST [87100 h] | 87,100 | WRD | TWR | F19 | FNS | Dry |

| ID | WBS | Activity | Duration | Start | Finish | Predecessors | Total float | Free float | Resources | Cost | This Week Progress | TYPE OF WORK L4 | ZONE L1 | FLOOR L2 | CATEGORY OF WORK L3 |
| --- | --- | --- | --- | --- | --- | --- | --- | --- | --- | --- | --- | --- | --- | --- | --- |
|  | 1.5.2.2.1.1.2.2 | **Wet Area** |  | 2017-06-26 | 2017-09-09 |  |  |  |  |  |  |  |  |  |  |
| CNF19FN17 |  | Ceramic for Walls | 10d | 2017-06-26 | 2017-07-09 | CNF18FN17, CNF19FN13, EN0PCPR15 SS+120d, EN0PCPR90 SS+120d | 12d | 0d | COST [164439 h]; Helper [320 h]; Mason [640 h]; Wet Area Tiles [1700 M2] | 164,438.55 | Wet | WLW | TWR | F19 | FNS |
| CNF19FN19 |  | Ceramic For Floors in Balconies | 6d | 2017-07-09 | 2017-07-15 | CNF19FN18, EN0PCPR13 SS+120d | 19d | 7d | COST [35088.2 h]; Helper [48 h]; Mason [96 h]; Balconies Floor Tiles [375 M2] | 35,088.15 | GR | FLB | TWR | F19 | FNS |
| CNF19FN29 |  | Bathtubs | 4d | 2017-07-10 | 2017-07-13 | CNF19FN17, EN0PSPR204 SS+45d, CNF18FN29 | 23d | 15d | COST [35625 h] | 35,625 | Wet | bth | TWR | F19 | FNS |
| CNF19FN21 |  | False Ceiling | 15d | 2017-07-11 | 2017-07-27 | CNF19MP27, ENCMSPR55, CNF19FN17 | 11d | 0d | COST [46376.4 h]; False Ceiling Fixer [600 h]; False Ceiling [695 M2] | 46,376.44 | Wet | CWT | TWR | F19 | FNS |
| CNF19FN23 |  | Water Proofing | 12d | 2017-07-29 | 2017-08-10 | CNF19FN29 SS+1d, ENCMSPR56, CNF19FN21, CNF18FN23 | 11d | 0d | COST [102613 h]; Water Proofing [553 M2] | 102,613 | Wet | WPR | TWR | F19 | FNS |
| CNF19FN30 |  | Ceramic for Floor | 12d | 2017-08-12 | 2017-08-24 | CNF19FN29, CNF19FN23, CNF18FN30, EN0PCPR15 SS+120d, EN0PCPR90 SS+120d | 11d |  | COST [27945.1 h]; Helper [96 h]; Mason [96 h]; Wet Area Tiles [178 M2] | 27,945.08 | Wet | FLW | TWR | F19 | FNS |
| CNF19FN40 |  | Sanitary Ware&Accessories | 5d | 2017-08-19 | 2017-08-23 | CNF19FN42 SS, CNF19FN34, CNF19FN19, CNF18FN40 | 1d | 0d | COST [100588 h] | 100,588.24 | Wet | SWR | TWR | F19 | FNS |
| CNF19FN42 |  | Vanity Counter | 7d | 2017-08-19 | 2017-08-26 | EN0PSPR52 SS+90d, CNF19FN19, CNF19FN34, CNF18FN42 | 1d | 0d | COST [86000 h]; Helper [168 h]; Vanity Counters Labor [168 h] | 86,000 | Wet | VNC | TWR | F19 | FNS |
| CNF19FN43 |  | Kitchen Cabinet | 11d | 2017-08-22 | 2017-09-06 | EN0PSPR37 SS+120d, CNF19FN19, CNF19FN34, CNF18FN43 | 3d |  | COST [93417 h]; Helper [88 h]; Kitchen Cabinet Carpenter [88 h] | 93,417 | Wet | KCB | TWR | F19 | FNS |
| CNF19FN44 |  | Glass Enclosure | 6d | 2017-08-24 | 2017-09-03 | CNF18FN44, EN0PSPR15 SS+90d, CNF19FN40 | 1d | 0d | COST [50000 h]; Helper [48 h]; Glass Enclosure Labor [48 h] | 50,000 | Wet | ALM | TWR | F19 | FNS |
| CNF19FN47 |  | Mirrors & Toilet Accessories | 5d | 2017-09-04 | 2017-09-09 | CNF18FN47, EN0PSPR23 SS+60d, CNF19FN40, CNF19FN44, CNF19FN29 | 1d |  | COST [86000 h]; Helper [80 h]; Mirrors Labor [40 h] | 86,000 | Wet | MRA | TWR | F19 | FNS |
|  | 1.5.2.2.1.1.3 | **Lift Lobby & Corridor** |  | 2017-07-17 | 2017-11-05 |  |  |  |  |  |  |  |  |  |  |
| CNF19FN99 |  | Ceiling Finishes | 12d | 2017-07-17 | 2017-07-30 | CNF18FN99, EN0PSPR200 SS+90d, CNF19MP29 | 8d | 0d | COST [46000 h]; False Ceiling Fixer [192 h] | 46,000 |  | IDC | TWR | F19 | FNS |
| CNF19FN27 |  | Wall Finishes | 12d | 2017-07-31 | 2017-08-13 | CNF18FN27 FF, CNF19FN99, CNF18FN27, EN0PSPR201 SS+90d, CNF19FN13 | 8d | 0d | COST [59722 h]; Helper [192 h]; Mason [288 h] | 59,722 | LL | IDW | TWR | F19 | FNS |
| CNF19FN37 |  | Floor Finishes | 10d | 2017-08-14 | 2017-08-24 | CNF18FN37, EN0PSPR30 SS+90d, CNF19FN27 | 8d | 0d | COST [52113 h]; Helper [80 h]; Mason [80 h] | 52,113 | LL | IDF | TWR | F19 | FNS |
| CNF19FN93 |  | Carpet Laying | 3d | 2017-11-02 | 2017-11-05 | CNF18FN93, CNF19FN37, ATDCD1030 | 4d |  | COST [9109 h] | 9,109 |  | IDR | TWR | F19 | FNS |
|  | 1.5.2.2.1.1.4 | **Common Areas/Service Rooms** |  | 2017-07-15 | 2017-08-23 |  |  |  |  |  |  |  |  |  |  |
|  | 1 | **Service Rooms** |  | 2017-07-15 | 2017-08-06 |  |  |  |  |  |  |  |  |  |  |
| CNF19FN25 |  | Epoxy Primer Paint for Ceiling | 4d | 2017-07-15 | 2017-07-18 | ENCMSPR52, CNF18FN25 | 27d | 0d | COST [3833.81 h]; Painter [32 h] | 3,833.81 | Service | EPC | TWR | F19 | FNS |
| CNF19FN28 |  | Acrylic Emulsion Primer Paint & Stucco for Wall | 4d | 2017-07-19 | 2017-07-23 | CNF19FN25 | 27d | 0d | COST [3248.62 h]; Painter [32 h] | 3,248.62 | Service | SRW | TWR | F19 | FNS |
| CNF19FN33 |  | Epoxy Primer Paint for Floor | 4d | 2017-07-24 | 2017-07-27 | ENCMSPR52, CNF19FN28 | 27d | 4d | COST [2379.32 h]; Painter [32 h] | 2,379.32 | Service | EPF | TWR | F19 | FNS |
| CNF19FN35 |  | Timber Doors | 4d | 2017-08-02 | 2017-08-06 | CNF19FN33, CNF18FN35 | 23d | 0d | COST [58000 h]; Doors Carpenter [32 h]; Helper [32 h] | 58,000 | Service | SRD | TWR | F19 | FNS |
|  | 2 | **Stairs** |  | 2017-08-02 | 2017-08-23 |  |  |  |  |  |  |  |  |  |  |
| CNF19FN36 |  | Epoxy Primer Paint for Ceiling | 4d | 2017-08-02 | 2017-08-06 | ENCMSPR52, CNF18FN36 | 3d | 0d | COST [599 h]; Painter [32 h] | 599 | Stairs | EPC | TWR | F19 | FNS |
| CNF19FN41 |  | Acrylic Emulsion Primer Paint & Stucco for Walls | 4d | 2017-08-07 | 2017-08-10 | CNF19FN36, CNF18FN41 | 3d | 0d | COST [3695.62 h]; Painter [32 h] | 3,695.62 | Stairs | SRW | TWR | F19 | FNS |
| CNF19FN45 |  | Epoxy Primer Paint for Floor | 3d | 2017-08-12 | 2017-08-14 | ENCMSPR52, CNF19FN41 | 10d | 0d | COST [8129.16 h]; Painter [24 h] | 8,129.16 | Stairs | EPF | TWR | F19 | FNS |
| CNF19FN80 |  | Stair Handrail | 3d | 2017-08-15 | 2017-08-17 | CNF19FN45 | 10d | 2d | COST [30000 h]; Helper [48 h]; Aluminium Labor [24 h] | 30,000 | Stairs | B5-MTW | TWR | F19 | FNS |
| CNF19FN46 |  | Steel Doors | 3d | 2017-08-21 | 2017-08-23 | CNF19FN80, EN0PSPR31 SS+60d, CNF19FN45, CNF18FN46 | 8d | 5d | Steel Works Labor [24 h]; Helper [48 h]; COST [31730.8 h] | 31,730.81 | Stairs | STD | TWR | F19 | FNS |

| ID | WBS | Activity | Type | Duration | Start | Finish | Predecessors | Total float | Free float | Resources | Cost | TYPE OF WORK L4 | ZONE L1 | FLOOR L2 | CATEGORY OF WORK L3 |
| --- | --- | --- | --- | --- | --- | --- | --- | --- | --- | --- | --- | --- | --- | --- | --- |
|  | 1.1 | **MEP** |  |  | 2017-03-01 | 2017-08-27 |  |  |  |  |  |  |  |  |  |
|  | 1.1 | **MEP 1st Fix** |  |  | 2017-03-01 | 2017-06-12 |  |  |  |  |  |  |  |  |  |
| CNF19CW91 |  | MEP Conduits for the slab |  | 5d | 2017-03-01 | 2017-03-06 | CNF19CW15 SS, CNF19CW15 FF | 6d | 0d | COST [214225 h]; ELECTRICIAN [800 h]; PLUMBER [400 h] | 214,225.1 | MEW | TWR | F19 | CON |
| CNF19FN11 |  | Walls Cutting & Chasing |  | 7d | 2017-06-05 | 2017-06-12 | CNF19FN10 SS+8d | 1d | 0d | COST [6151 h] | 6,151 | MEW | TWR | F19 | FNS |
| CNF19MP10 |  | Civil Clearance To Start 1st Fix | milestone | 0d | 2017-06-07 | 2017-06-07 | EN0PSRA67, EN0PSRA02, EN0PSRA70, EN0PSRA73, EN0PSRA41, EN0PSRA44, EN0PSRA49, EN0PSRA54, EN0PSRA58, EN0PSRA62, EN0PSRA76, EN0PSRA80, CNF19FN11 SS+2d | 1d | 0d |  |  | MEW | TWR | F19 | MEP |
| CNF19MP11 |  | Drainage Pipes ( In Walls) |  | 5d | 2017-06-07 | 2017-06-12 | CNF19MP10, CNF18MP11 | 1d | 0d | COST [15528 h]; PLUMBER [280 h] | 15,528 | MEW | TWR | F19 | MEP |
| CNF19MP12 |  | Water Supply Pipes ( In Walls) |  | 5d | 2017-06-07 | 2017-06-12 | CNF19MP10, CNF18MP12 | 1d | 0d | COST [26928.4 h]; PLUMBER [400 h] | 26,928.4 | MEW | TWR | F19 | MEP |
| CNF19MP13 |  | Sleeves,Conduites,Gi Box,DB Box In Wall |  | 5d | 2017-06-07 | 2017-06-12 | CNF19MP10, CNF18MP13 | 1d | 0d | COST [48200.5 h]; ELECTRICIAN [1440 h] | 48,200.5 | MEW | TWR | F19 | MEP |
| CNF19MP14 |  | MEP Clearance To Start Plaster | milestone | 0d | 2017-06-12 | 2017-06-12 | CNF19MP11, CNF19MP12, CNF19MP13 | 1d | 0d |  |  | MEW | TWR | F19 | MEP |
|  | 1.2 | **MEP 2nd Fix** |  |  | 2017-06-25 | 2017-07-16 |  |  |  |  |  |  |  |  |  |
| CNF19MP15 |  | Civil Clearance To Start 2nd Fix | milestone | 0d | 2017-06-25 | 2017-06-25 | CNF19FN13 | 2d | 0d |  |  | MEW | TWR | F19 | MEP |
| CNF19MP16 |  | LPG Piping |  | 10d | 2017-06-26 | 2017-07-09 | EN0PSPR11 FS+7d, CNF19FN13, CNF18MP16 | 3d | 1d | COST [67153.8 h]; PIPE FITTER [320 h] | 67,153.8 | MEW | TWR | F19 | MEP |
| CNF19MP17 |  | Fire Fighting Pipes (Mains/Branches) |  | 10d | 2017-06-26 | 2017-07-09 | CNF19FN13, CNF18MP17 | 3d | 1d | COST [79182 h]; PIPE FITTER [480 h] | 79,182 | MEW | TWR | F19 | MEP |
| CNF19MP18 |  | Ducting Work Including Insulation |  | 10d | 2017-06-26 | 2017-07-09 | CNF19FN13, CNF18MP18 | 3d | 0d | COST [186091 h]; DUCTMAN [640 h] | 186,091.2 | MEW | TWR | F19 | MEP |
| CNF19MP19 |  | Installation of FCUs & Fans |  | 10d | 2017-06-26 | 2017-07-09 | CNF19MP18 FF, CNF18MP19 | 3d | 1d | COST [132302 h]; AC TECHNICIAN [480 h] | 132,302.1 | MEW | TWR | F19 | MEP |
| CNF19MP20 |  | Chilled Water Pipes (High L) |  | 10d | 2017-06-26 | 2017-07-09 | CNF19FN13, CNF18MP20 | 3d | 1d | COST [109870 h]; AC TECHNICIAN [640 h] | 109,870.1 | MEW | TWR | F19 | MEP |
| CNF19MP24 |  | Cable Tray / Trunking |  | 10d | 2017-06-26 | 2017-07-09 | CNF19MP15, CNF18MP24 | 3d | 1d | COST [153534 h]; ELECTRICIAN [320 h] | 153,534.2 | MEW | TWR | F19 | MEP |
| CNF19MP21 |  | Drainage Pipes (High L) |  | 10d | 2017-06-29 | 2017-07-10 | CNF19MP15 FS+1d, CNF18MP21 | 2d | 0d | COST [121568 h]; PLUMBER [640 h] | 121,568.3 | MEW | TWR | F19 | MEP |
| CNF19MP22 |  | Wires |  | 7d | 2017-06-29 | 2017-07-06 | CNF19MP13, CNF19MP15 FS+1d, CNF18MP22 | 5d | 3d | COST [153534 h]; ELECTRICIAN [1232 h] | 153,534.2 | MEW | TWR | F19 | MEP |
| CNF19MP23 |  | Water Supply Pipes (High L) |  | 10d | 2017-06-29 | 2017-07-10 | CNF19MP21 FF, CNF18MP23 | 2d | 0d | COST [141452 h]; PLUMBER [480 h] | 141,451.6 | MEW | TWR | F19 | MEP |
| CNF19MP25 |  | Acoustic Drainage Pipe Insulation |  | 6d | 2017-07-02 | 2017-07-08 | CNF19MP21 SS+2d, CNF18MP25 | 4d | 2d | COST [3763.1 h]; PLUMBER [192 h] | 3,763.1 | MEW | TWR | F19 | MEP |
| CNF19MP26 |  | Water Heaters Installation&Connection |  | 6d | 2017-07-02 | 2017-07-08 | CNF19MP23 SS+2d | 4d | 2d | COST [558.9 h] | 558.9 | MEW | TWR | F19 | MEP |
| CNF19MP27 |  | MEP Clearance To Close Apartments Ceilings | milestone | 0d | 2017-07-10 | 2017-07-10 | CNF19MP20, CNF19MP23, CNF19MP22, CNF19MP17, CNF19MP19, CNF19MP21, CNF19MP16, CNF19MP25, CNF19MP26, CNF19MP24 | 2d | 0d |  |  | MEW | TWR | F19 | MEP |
| CNF19MP29 |  | MEP Clearance To Close Corridors Ceilings | milestone | 0d | 2017-07-16 | 2017-07-16 | CNF19MP27 FF+5d | 8d | 0d |  |  | MEW | TWR | F19 | MEP |

| ID | WBS | Activity | Type | Duration | Start | Finish | Predecessors | Total float | Free float | Resources | Cost | TYPE OF WORK L4 | ZONE L1 | FLOOR L2 | CATEGORY OF WORK L3 |
| --- | --- | --- | --- | --- | --- | --- | --- | --- | --- | --- | --- | --- | --- | --- | --- |
|  | 1.3 | **MEP 3rd Fix** |  |  | 2017-08-17 | 2017-08-27 |  |  |  |  |  |  |  |  |  |
| CNF19MP28 |  | Civil Clearance To Start Final Fix | milestone | 0d | 2017-08-17 | 2017-08-17 | CNF19FN34, CNF19MP29, CNF19MP27 | 3d | 0d |  |  | MEW | TWR | F19 | MEP |
| CNF19MP30 |  | Hose Reel&Fire Extinguishers & Sprinklers |  | 4d | 2017-08-19 | 2017-08-22 | CNF18MP30, CNF19MP28 | 8d | 0d | COST [46832.8 h]; PIPE FITTER [128 h] | 46,832.8 | MEW | TWR | F19 | MEP |
| CNF19MP31 |  | Vertical Sprinkler Drops |  | 4d | 2017-08-19 | 2017-08-22 | CNF18MP31, CNF19MP28 | 8d | 0d | COST [4988.6 h]; PIPE FITTER [128 h] | 4,988.6 | MEW | TWR | F19 | MEP |
| CNF19MP32 |  | Installation of DBS |  | 4d | 2017-08-19 | 2017-08-22 | CNF18MP32, CNF19MP28 | 3d | 0d | COST [9929.4 h]; ELECTRICIAN [64 h] | 9,929.4 | MEW | TWR | F19 | MEP |
| CNF19MP33 |  | Installation of Panels / SmDBS |  | 4d | 2017-08-19 | 2017-08-22 | CNF18MP33, CNF19MP32 FF | 8d | 0d | COST [46476.1 h]; ELECTRICIAN [64 h] | 46,476.1 | MEW | TWR | F19 | MEP |
| CNF19MP34 |  | Installation of Fire Alarm Panel & Voice Alarm System |  | 4d | 2017-08-19 | 2017-08-22 | EN0PSPR40, CNF19MP28, CNF18MP34 | 8d | 0d | COST [20087.7 h]; ELECTRICIAN [160 h] | 20,087.7 | MEW | TWR | F19 | MEP |
| CNF19MP35 |  | Installation of Grills&Diffusers |  | 4d | 2017-08-19 | 2017-08-22 | CNF19MP28, CNF18MP35 | 3d | 0d | COST [3325.4 h]; DUCTMAN [192 h] | 3,325.4 | MEW | TWR | F19 | MEP |
| CNF19MP39 |  | Installation of Light Fitting & E.M Light |  | 4d | 2017-08-19 | 2017-08-22 | CNF19MP28, CNF19FN34, CNF18MP39 | 8d | 0d | COST [84000 h]; ELECTRICIAN [160 h] | 84,000 | LFX | TWR | F19 | MEP |
| CNF19MP40 |  | Installation of Wiring Accessories |  | 4d | 2017-08-19 | 2017-08-22 | CNF19MP39 FF, CNF18MP40 | 8d | 0d | COST [15564.6 h]; ELECTRICIAN [96 h] | 15,564.6 | MEW | TWR | F19 | MEP |
| CNF19MP36 |  | Installation of Telephone System |  | 4d | 2017-08-23 | 2017-08-27 | CNF19MP32, CNF18MP36 | 9d | 0d | COST [32690.3 h]; ELECTRICIAN [64 h] | 32,690.3 | MEW | TWR | F19 | MEP |
| CNF19MP37 |  | Installation of CCTV System |  | 4d | 2017-08-23 | 2017-08-27 | EN0PSPR44, CNF19MP32, CNF18MP37 | 4d | 0d | COST [8707.3 h]; ELECTRICIAN [64 h] | 8,707.3 | MEW | TWR | F19 | MEP |
| CNF19MP38 |  | Thermostat Fixing |  | 4d | 2017-08-23 | 2017-08-27 | CNF19MP35, CNF18MP38 | 4d | 0d | COST [1381 h]; ELECTRICIAN [64 h] | 1,381 | MEW | TWR | F19 | MEP |
| CNF19MP41 |  | MEP Final Fix Clearance | milestone | 0d | 2017-08-27 | 2017-08-27 | CNF19MP37, CNF19MP40, CNF19MP35, CNF19MP38, CNF19MP36, CNF19MP39, CNF19MP30, CNF19MP34, CNF19MP33, CNF19MP32, CNF19MP31, CNF19FN38, CNF19FN91, CNF18MP41 | 9d |  |  |  | MEW | TWR | F19 | MEP |
|  | 2 | **Roof** |  |  | 2017-03-14 | 2017-09-06 |  |  |  |  |  |  |  |  |  |
|  | 1.5.1.1.2.3.24 | **Concrete** |  |  | 2017-03-14 | 2017-03-30 |  |  |  |  |  |  |  |  |  |
| CNROFCW10 |  | Slab Form Work |  | 5d | 2017-03-14 | 2017-03-19 | CNF19CW50 FF+1d, CNF19CW50 SS+1d | 6d | 0d | COST [108565 h]; Shutter Carpenter [1120 h]; Helper [560 h]; Form Work [2080 M2] | 108,565 | STR | TWR | ROF | CON |
| CNROFCW15 |  | Slab Rebar & Post Tension Tendons |  | 4d | 2017-03-16 | 2017-03-20 | CNROFCW10 FF+1d, ENCMSRA10, CNROFCW10 SS+2d | 6d | 0d | COST [256078 h]; Steel Fixer [736 h]; Helper [384 h]; Steel Rebars [34200 Kg] | 256,078.16 | RFT | TWR | ROF | CON |
| CNROFCW90 |  | TECOM Steel Inspection prior to concrete pouring | milestone | 0d | 2017-03-20 | 2017-03-20 | CNROFCW15 FF, CNROFCW91 | 6d | 0d |  |  |  | TWR | ROF | CON |
| CNROFCW20 |  | Slab Casting |  | 2d | 2017-03-21 | 2017-03-22 | CNF19CW30, ENCMSRA50, CNROFCW90 | 6d | 0d | COST [232588 h] | 232,588 | RFC | TWR | ROF | CON |
| CNROFCW25 |  | Columns and Walls Rebar |  | 5d | 2017-03-23 | 2017-03-28 | CNROFCW20 | 6d | 0d | COST [41160 h]; Steel Fixer [80 h]; Helper [40 h]; Steel Rebars [2400 Kg] | 41,160 | RFT | TWR | ROF | CON |
| CNROFCW55 |  | PT Tensioning and Grouting |  | 3d | 2017-03-23 | 2017-03-26 | CNROFCW20 | 7d | 1d | COST |  |  | TWR | ROF | CON |
| CNROFCW35 |  | Columns and Walls Form Work |  | 5d | 2017-03-25 | 2017-03-29 | CNROFCW25 SS+1d, CNROFCW25 FF+1d | 6d | 0d | COST [30450 h]; Shutter Carpenter [80 h]; Helper [40 h]; Form Work [102 M2] | 30,450 | STR | TWR | ROF | CON |
| CNROFCW40 |  | Columns Casting |  | 3d | 2017-03-28 | 2017-03-30 | CNROFCW55, CNROFCW35 FF+1d, CNROFCW35 SS+1d | 6d | 0d | COST [39344 h] | 39,344 | RFC | TWR | ROF | CON |

| ID | WBS | Activity | Type | Duration | Start | Finish | Predecessors | Total float | Free float | Resources | Cost | TYPE OF WORK L4 | ZONE L1 | FLOOR L2 | CATEGORY OF WORK L3 |
| --- | --- | --- | --- | --- | --- | --- | --- | --- | --- | --- | --- | --- | --- | --- | --- |
|  | 1 | **Finishes** |  |  | 2017-04-03 | 2017-09-06 |  |  |  |  |  |  |  |  |  |
|  | 1.5.2.2.19.1 | **Roofing** |  |  | 2017-04-03 | 2017-05-13 |  |  |  |  |  |  |  |  |  |
| CNROFFN90 |  | Block Works |  | 5d | 2017-04-03 | 2017-04-08 | CNURFCN10 | 41d | 0d | COST [6082.32 h]; Helper [120 h]; Mason [240 h]; Block [350 M2] | 6,082.32 | B4-MAS | TWR | ROF | FNS |
| CNROFFN10 |  | Concrete Upstand for Parapet |  | 5d | 2017-04-09 | 2017-04-13 | CNROFFN90, CNROFCW20 | 41d | 0d | COST [30000 h]; Mason [320 h]; Helper [160 h] | 30,000 | RFC | TWR | ROF | FNS |
| CNROFFN150 |  | Plaster |  | 5d | 2017-04-09 | 2017-04-13 | CNROFFN90 | 93d | 0d | COST [6354 h]; Helper [80 h]; Mason [200 h] | 6,354 | PLS | TWR | ROF | FNS |
| CNROFFN11 |  | Roof Drain System |  | 2d | 2017-04-15 | 2017-04-16 | CNROFMP10 | 41d | 0d | COST [51108.1 h]; PLUMBER [64 h] | 51,108.1 | MEW | TWR | ROF | FNS |
| CNROFFN151 |  | Primer Paint |  | 5d | 2017-04-15 | 2017-04-19 | CNROFFN150 FF, CNROFFN150 | 93d | 15d | COST [30000 h]; Painter [80 h] | 30,000 | SRW | TWR | ROF | FNS |
| CNROFFN13 |  | Primer + Membrane Laying + Testing |  | 7d | 2017-04-17 | 2017-04-25 | CNROFFN11 | 61d | 0d | COST [256049 h]; Water Proofing Labor [392 h]; Helper [224 h] | 256,049 | WPR | TWR | ROF | FNS |
| CNROFFN16 |  | Polysterene Board Laying + Filter Layer |  | 5d | 2017-04-26 | 2017-05-01 | CNROFFN13 | 65d | 0d | COST [342528 h]; Thermal Insulation Labor [400 h]; Helper [200 h] | 342,528.29 | THI | TWR | ROF | FNS |
| CNROFFN19 |  | Loose Cement Tile Laying |  | 7d | 2017-05-02 | 2017-05-09 | CNROFFN16 | 67d | 0d | COST [152657 h]; Mason [336 h]; Helper [168 h] | 152,657 | TBH | TWR | ROF | FNS |
| CNROFFN22 |  | Aluminium Flashing + Sealant |  | 3d | 2017-05-10 | 2017-05-13 | CNROFFN19 | 69d | 8d | COST [30000 h] | 30,000 | ALM | TWR | ROF | FNS |
|  | 1.5.2.2.1.1.4 | **Common Areas/Service Rooms** |  |  | 2017-04-15 | 2017-09-06 |  |  |  |  |  |  |  |  |  |
|  | 1 | **Service Rooms** |  |  | 2017-04-15 | 2017-08-10 |  |  |  |  |  |  |  |  |  |
| CNROFFN12 |  | Epoxy Primer Paint for Ceiling |  | 6d | 2017-04-15 | 2017-04-20 | ENCMSPR52, CNROFFN10 | 78d | 0d | COST [10000 h]; Painter [48 h] | 10,000 | EPC | TWR | ROF | FNS |
| CNROFFN14 |  | Acrylic Emulsion Primer Paint & Stucco for Walls |  | 10d | 2017-04-23 | 2017-05-03 | CNROFFN12 | 78d | 0d | COST [10000 h]; Painter [320 h] | 10,000 | SRW | TWR | ROF | FNS |
| CNROFFN15 |  | Epoxy Primer Paint for Floor |  | 4d | 2017-05-04 | 2017-05-08 | ENCMSPR52, CNROFFN14 | 78d | 0d | COST [10000 h]; Painter [32 h] | 10,000 | EPF | TWR | ROF | FNS |
| CNROFFN17 |  | Timber Doors |  | 4d | 2017-08-07 | 2017-08-10 | CNROFFN15, CNF19FN35 | 23d |  | COST [58000 h]; Doors Carpenter [32 h]; Helper [32 h] | 58,000 | SRD | TWR | ROF | FNS |
|  | 2 | **Stairs** |  |  | 2017-05-09 | 2017-09-06 |  |  |  |  |  |  |  |  |  |
| CNROFFN18 |  | Epoxy Primer Paint for Ceiling |  | 4d | 2017-05-09 | 2017-05-13 | CNROFFN151, ENCMSPR52, CNROFFN15 | 78d | 75d | COST [618 h]; Painter [32 h] | 618 | EPC | TWR | ROF | FNS |
| CNROFFN20 |  | Acrylic Emulsion Primer Paint & Stucco for Walls |  | 8d | 2017-08-12 | 2017-08-20 | CNROFFN18, CNF19FN41 | 3d | 0d | COST [13013.1 h]; Painter [128 h] | 13,013.1 | SRW | TWR | ROF | FNS |
| CNROFFN21 |  | Epoxy Primer Paint for Floor |  | 4d | 2017-08-21 | 2017-08-24 | ENCMSPR52, CNROFFN14, CNROFFN20 | 3d | 0d | COST [2502 h]; Painter [32 h] | 2,502 | EPF | TWR | ROF | FNS |
| CNROFFN80 |  | Stair Handrail |  | 4d | 2017-08-26 | 2017-09-02 | CNROFFN21 | 3d | 0d | COST [10000 h]; Helper [64 h]; Aluminium Labor [32 h] | 10,000 | B5-MTW | TWR | ROF | FNS |
| CNROFFN23 |  | Steel Doors |  | 4d | 2017-09-03 | 2017-09-06 | CNROFFN80, CNROFFN21, EN0PSPR31 SS+60d, CNF19FN46 | 3d |  | Steel Works Labor [32 h]; Helper [64 h]; COST [31730.8 h] | 31,730.81 | STD | TWR | ROF | FNS |
|  | 1.181 | **MEP** |  |  | 2017-03-16 | 2017-09-04 |  |  |  |  |  |  |  |  |  |
|  | 1.1 | **MEP 1st Fix** |  |  | 2017-03-16 | 2017-04-19 |  |  |  |  |  |  |  |  |  |
| CNROFCW91 |  | MEP Conduits for the slab |  | 4d | 2017-03-16 | 2017-03-20 | CNROFCW15 SS, CNROFCW15 FF | 6d | 0d | COST [214225 h]; ELECTRICIAN [640 h]; PLUMBER [320 h] | 214,225.1 | MEW | TWR | ROF | CON |
| CNROFMP10 |  | Civil Clearance To Start 1st Fix | milestone | 0d | 2017-04-15 | 2017-04-15 | EN0PSRA86, EN0PSRA90, EN0PSRA03, EN0PSRA04, EN0PSRA71, EN0PSRA87, EN0PSRA89, EN0PSRA91, EN0PSRA42, EN0PSRA43, EN0PSRA45, EN0PSRA46, EN0PSRA50, EN0PSRA51, EN0PSRA55, EN0PSRA59, EN0PSRA63, EN0PSRA78, EN0PSRA77, EN0PSRA83, CNROFFN10 | 41d | 0d |  |  | MEW | TWR | ROF | MEP |
| CNROFMP11 |  | Drainage Pipes |  | 5d | 2017-04-15 | 2017-04-19 | CNROFMP10 | 43d | 0d | COST [10463.8 h]; PLUMBER [160 h] | 10,463.8 | MEW | TWR | ROF | MEP |
| CNROFMP12 |  | MEP Clearance To Roof Screed | milestone | 0d | 2017-04-19 | 2017-04-19 | CNROFMP11 | 43d | 2d |  |  | MEW | TWR | ROF | MEP |

| ID | WBS | Activity | Type | Duration | Start | Finish | Predecessors | Total float | Free float | Resources | Cost | TYPE OF WORK L4 | ZONE L1 | FLOOR L2 | CATEGORY OF WORK L3 |
| --- | --- | --- | --- | --- | --- | --- | --- | --- | --- | --- | --- | --- | --- | --- | --- |
|  | 1.2 | **MEP 2nd Fix** |  |  | 2017-04-23 | 2017-05-23 |  |  |  |  |  |  |  |  |  |
| CNROFMP13 |  | Civil Clearance To Start Final Fix | milestone | 0d | 2017-04-23 | 2017-04-23 | CNROFMP12, CNROFUR10, CNROFFN11 | 41d | 0d |  |  | MEW | TWR | ROF | MEP |
| CNROFMP14 |  | Roof MEP Work |  | 25d | 2017-04-25 | 2017-05-23 | CNROFMP13 FS+1d | 41d | 0d | COST [646892 h]; ELECTRICIAN [240 h]; PLUMBER [320 h]; PIPE FITTER [160 h]; DUCTMAN [240 h]; AC TECHNICIAN [360 h] | 646,891.6 | MEW | TWR | ROF | MEP |
|  | 1.3 | **MEP 3rd Fix** |  |  | 2017-05-23 | 2017-09-04 |  |  |  |  |  |  |  |  |  |
| CNROFMP15 |  | MEP Final Fix Clearance | milestone | 0d | 2017-05-23 | 2017-05-23 | CNROFMP14 | 79d | 14d |  |  | MEW | TWR | ROF | MEP |
| CNROFMP16 |  | Hose Reel&Fire Extinguishers & Sprinklers |  | 4d | 2017-08-23 | 2017-08-27 | CNF19MP30, CNROFMP15 | 9d |  | COST [46832.8 h]; PIPE FITTER [128 h] | 46,832.8 | MEW | TWR | ROF | MEP |
| CNROFMP17 |  | Installation of Fire Alarm Panel & Voice Alarm System |  | 4d | 2017-08-23 | 2017-08-27 | CNF19MP34, CNROFMP15 | 9d |  | COST [20087.7 h]; ELECTRICIAN [160 h] | 20,087.7 | MEW | TWR | ROF | MEP |
| CNROFMP18 |  | Installation of Grills&Diffusers |  | 4d | 2017-08-23 | 2017-08-27 | CNF19MP35, CNROFMP15 | 9d |  | COST [3325.4 h]; DUCTMAN [192 h] | 3,325.4 | MEW | TWR | ROF | MEP |
| CNROFMP20 |  | Installation of Light Fitting & E.M Light |  | 4d | 2017-08-23 | 2017-08-27 | CNF19MP39, CNROFMP15 | 9d |  | COST [20000 h]; ELECTRICIAN [160 h] | 20,000 | LFX | TWR | ROF | MEP |
| CNROFMP19 |  | Installation of CCTV System |  | 4d | 2017-08-28 | 2017-09-04 | CNF19MP37, CNROFMP15 | 5d |  | COST [8707.3 h]; ELECTRICIAN [64 h] | 8,707.3 | MEW | TWR | ROF | MEP |
|  | 3 | **Upper Roof** |  |  | 2017-04-01 | 2017-06-20 |  |  |  |  |  |  |  |  |  |
|  | 1.5.1.1.2.3.25 | **Concrete** |  |  | 2017-04-01 | 2017-04-20 |  |  |  |  |  |  |  |  |  |
| CNURFCN10 |  | Slab Casting |  | 2d | 2017-04-01 | 2017-04-02 | CNROFCW40 | 41d | 0d | COST [64420.8 h] | 64,420.8 | RFC | TWR | ROF |  |
| CNROFUR11 |  | Concrete Upstand for Parapet |  | 6d | 2017-04-15 | 2017-04-20 | CNROFFN10 | 43d | 2d | COST [366855 h]; Mason [384 h]; Helper [192 h] | 366,855.3 | RFC | TWR | ROF |  |
|  | 1.5.2.2.20.1 | **Roofing** |  |  | 2017-04-17 | 2017-06-20 |  |  |  |  |  |  |  |  |  |
| CNROFUR10 |  | Roof Drain System |  | 5d | 2017-04-17 | 2017-04-23 | CNROFFN11, EN0PSRA87 | 41d | 0d | COST [51261.6 h]; PLUMBER [80 h] | 51,261.6 | MEW | TWR | ROF |  |
| CNROFUR12 |  | Primer + Membrane Laying + Testing |  | 10d | 2017-04-26 | 2017-05-07 | CNROFFN13, CNROFUR10, CNROFMP12, CNROFFN11 | 61d | 0d | COST [100000 h]; Helper [80 h]; Water Proofing Labor [80 h] | 100,000 | WPR | TWR | ROF |  |
| CNROFUR13 |  | Polysterene Board Laying + Filter Layer |  | 8d | 2017-05-08 | 2017-05-16 | CNROFFN16 FS+1d, CNROFUR12 | 61d | 0d | COST [100000 h]; Helper [64 h]; Thermal Insulation Labor [64 h] | 100,000 | THI | TWR | ROF |  |
| CNROFUR14 |  | Loose Cement Tile Laying |  | 5d | 2017-05-17 | 2017-05-22 | CNROFFN19, CNROFUR13 | 61d | 0d | COST [50000 h]; Helper [40 h]; Mason [40 h] | 50,000 | TBH | TWR | ROF |  |
| CNROFUR15 |  | Aluminium Flashing + Sealant |  | 10d | 2017-05-23 | 2017-06-03 | CNROFFN22, CNROFUR14, CNURFCN10 | 61d | 0d | COST [30000 h] | 30,000 | ALM | TWR | ROF |  |
| CNROFUR16 |  | Boarder Gravel Laying |  | 5d | 2017-06-04 | 2017-06-08 | CNROFUR15 | 61d | 0d | COST [30000 h]; Mason [200 h]; Helper [200 h] | 30,000 | URF | TWR | ROF |  |
| CNROFUR17 |  | Aluminium Louver Fence For Gas Tank |  | 10d | 2017-06-10 | 2017-06-20 | CNROFMP15 FF+10d, CNROFUR16, EN0PSNM12 FS+14d | 65d |  | COST [30000 h]; Helper [80 h]; Aluminium Labor [80 h] | 30,000 | ALM | TWR | ROF |  |
|  | 1.1 | **Leave out Area** |  |  | 2016-07-11 | 2017-09-03 |  |  |  |  |  |  |  |  |  |
|  | 1.1.1 | **Leave out Area (Hoist Affected)** |  |  | 2016-07-11 | 2017-09-03 |  |  |  |  |  |  |  |  |  |
| CNF04CW91 |  | MEP Conduits for the slab |  | 5d | 2016-07-11 | 2016-07-16 | CNF04CW15 SS, CNF04CW15 FF | 0d |  | COST [214225 h]; ELECTRICIAN [800 h]; PLUMBER [400 h] | 214,225.1 | MEW | TWR | F04 | CON |
| CNF04FN28 |  | Walls Cutting & Chasing |  | 7d | 2016-09-07 | 2016-09-18 | CNF04FN27 SS+8d | 8d | 0d | COST [6151 h] | 6,151 | MEW | TWR | F04 | FNS |
| CNF04MP10 |  | Civil Clearance To Start 1st Fix | milestone | 0d | 2016-09-13 | 2016-09-13 | EN0PSRA67, EN0PSRA02, EN0PSRA70, EN0PSRA73, EN0PSRA41, EN0PSRA44, EN0PSRA49, EN0PSRA54, EN0PSRA58, EN0PSRA62, EN0PSRA76, EN0PSRA80, CNF04FN28 SS+2d | 8d | 0d |  |  | MEW | TWR | F04 | MEP |
| CNF04MP11 |  | Drainage Pipes ( In Walls) |  | 5d | 2016-09-13 | 2016-09-18 | CNF04MP10, CNP03MP13 | 8d | 0d | COST [15528 h]; PLUMBER [400 h] | 15,528 | MEW | TWR | F04 | MEP |
| CNF04MP12 |  | Water Supply Pipes ( In Walls) |  | 5d | 2016-09-13 | 2016-09-18 | CNF04MP10, CNP03MP14 | 8d | 0d | COST [26928.4 h]; PLUMBER [400 h] | 26,928.4 | MEW | TWR | F04 | MEP |
| CNF04MP13 |  | Sleeves,Conduites,Gi Box,DB Box In Wall |  | 5d | 2016-09-13 | 2016-09-18 | CNF04MP10, CNP03MP15 | 8d | 0d | COST [48200.5 h]; ELECTRICIAN [1600 h] | 48,200.5 | MEW | TWR | F04 | MEP |
| CNF04MP16 |  | MEP Clearance To Start Plaster | milestone | 0d | 2016-09-18 | 2016-09-18 | CNF04MP11, CNF04MP12, CNF04MP13 | 8d | 4d |  |  | MEW | TWR | F04 | MEP |

| ID | WBS | Activity | Duration | Start | Finish | Predecessors | Total float | Free float | Resources | ZONE L1 | FLOOR L2 |
| --- | --- | --- | --- | --- | --- | --- | --- | --- | --- | --- | --- |
|  | 1.1.1.1 | **4h Floor** |  | 2017-06-22 | 2017-07-08 |  |  |  |  |  |  |
| CNEXWLO10 |  | Concrete Up Stand For Balconies | 1d | 2017-06-22 | 2017-06-22 | GRIMS1030, GRIMS1040, GREQPMP10, GREQPMP11, GREQPMP12 | 6d | 0d | COST | TWR | LOA |
| CNEXWLO13 |  | Aluminium Doors | 3d | 2017-06-24 | 2017-06-26 | GRIMS1030, GRIMS1040, CNEXWLO10 | 6d | 0d | COST | TWR | LOA |
| CNEXWLO14 |  | Water Proofing | 3d | 2017-06-29 | 2017-07-02 | CNEXWLO13, GRIMS1030, GRIMS1040, CNEXWLO10 | 6d | 0d | COST | TWR | LOA |
| CNEXWLO22 |  | Ceramic for Balconies | 3d | 2017-07-03 | 2017-07-05 | GRIMS1030, GRIMS1040, CNEXWLO14, CNEXWLO13 | 6d | 0d | COST | TWR | LOA |
| CNEXWLO32 |  | Balconies Glazing & Aluminium Handrail | 2d | 2017-07-06 | 2017-07-08 | GRIMS1030, GRIMS1040, CNEXWLO13, CNEXWLO22, EN0PSRA14, EN0PSPR16 FS+14d | 20d | 1d | COST | TWR | LOA |
|  | 1.1.1.2 | **5th Floor** |  | 2017-06-24 | 2017-07-11 |  |  |  |  |  |  |
| CNEXWLO12 |  | Concrete Up Stand For Balconies | 1d | 2017-06-24 | 2017-06-24 | CNEXWLO10 | 8d | 0d | COST | TWR | LOA |
| CNEXWLO18 |  | Aluminium Doors | 3d | 2017-06-26 | 2017-07-01 | CNEXWLO12, CNEXWLO13 SS+2d | 7d | 0d | COST | TWR | LOA |
| CNEXWLO16 |  | Water Proofing | 3d | 2017-07-02 | 2017-07-04 | CNEXWLO18, CNEXWLO12 | 7d | 1d | COST | TWR | LOA |
| CNEXWLO28 |  | Ceramic for Balconies | 3d | 2017-07-06 | 2017-07-09 | CNEXWLO22, CNEXWLO16, CNEXWLO18 | 6d | 0d | COST | TWR | LOA |
| CNEXWLO40 |  | Balconies Glazing & Aluminium Handrail | 2d | 2017-07-10 | 2017-07-11 | CNEXWLO28, CNEXWLO18, CNEXWLO32, EN0PSRA14, EN0PSPR16 FS+14d | 19d | 1d | COST | TWR | LOA |
|  | 1.1.1.3 | **6th Floor** |  | 2017-06-25 | 2017-07-17 |  |  |  |  |  |  |
| CNEXWLO15 |  | Concrete Up Stand For Balconies | 1d | 2017-06-25 | 2017-06-25 | CNEXWLO12 | 10d | 0d | COST | TWR | LOA |
| CNEXWLO23 |  | Aluminium Doors | 3d | 2017-07-01 | 2017-07-03 | CNEXWLO18 SS+2d, CNEXWLO15 | 8d | 0d | COST | TWR | LOA |
| CNEXWLO17 |  | Water Proofing | 3d | 2017-07-04 | 2017-07-06 | CNEXWLO23, CNEXWLO15 | 8d | 2d | COST | TWR | LOA |
| CNEXWLO39 |  | Ceramic for Balconies | 3d | 2017-07-10 | 2017-07-12 | CNEXWLO23, CNEXWLO28, CNEXWLO17 | 6d | 0d | COST | TWR | LOA |
| CNEXWLO52 |  | Balconies Glazing & Aluminium Handrail | 4d | 2017-07-13 | 2017-07-17 | CNEXWLO40, CNEXWLO23, CNEXWLO39, EN0PSRA14, EN0PSPR16 FS+14d | 18d | 1d | COST | TWR | LOA |
|  | 1.1.1.4 | **7th Floor** |  | 2017-06-26 | 2017-07-20 |  |  |  |  |  |  |
| CNEXWLO19 |  | Concrete Up Stand For Balconies | 1d | 2017-06-26 | 2017-06-26 | CNEXWLO15 | 12d | 0d | COST | TWR | LOA |
| CNEXWLO29 |  | Aluminium Doors | 3d | 2017-07-03 | 2017-07-05 | CNEXWLO19, CNEXWLO23 SS+2d | 9d | 0d | COST | TWR | LOA |
| CNEXWLO21 |  | Water Proofing | 3d | 2017-07-06 | 2017-07-09 | CNEXWLO29, CNEXWLO19 | 9d | 3d | COST | TWR | LOA |
| CNEXWLO55 |  | Ceramic for Balconies | 5d | 2017-07-13 | 2017-07-18 | CNEXWLO29, CNEXWLO39, CNEXWLO21 | 6d | 0d | COST | TWR | LOA |
| CNEXWLO69 |  | Balconies Glazing & Aluminium Handrail | 2d | 2017-07-19 | 2017-07-20 | CNEXWLO55, CNEXWLO52, CNEXWLO29, EN0PSRA14, EN0PSPR16 FS+14d | 17d | 1d | COST | TWR | LOA |

| ID | WBS | Activity | Duration | Start | Finish | Predecessors | Total float | Free float | Resources | ZONE L1 | FLOOR L2 |
| --- | --- | --- | --- | --- | --- | --- | --- | --- | --- | --- | --- |
|  | 1.1.1.5 | **8th Floor** |  | 2017-06-29 | 2017-07-24 |  |  |  |  |  |  |
| CNEXWLO20 |  | Concrete Up Stand For Balconies | 1d | 2017-06-29 | 2017-06-29 | CNEXWLO19 | 16d | 0d | COST | TWR | LOA |
| CNEXWLO36 |  | Aluminium Doors | 3d | 2017-07-05 | 2017-07-08 | CNEXWLO29 SS+2d, CNEXWLO20 | 12d | 0d | COST | TWR | LOA |
| CNEXWLO24 |  | Water Proofing | 3d | 2017-07-09 | 2017-07-11 | CNEXWLO36, CNEXWLO20 | 12d | 6d | COST | TWR | LOA |
| CNEXWLO68 |  | Ceramic for Balconies | 3d | 2017-07-19 | 2017-07-22 | CNEXWLO24, CNEXWLO55, CNEXWLO36 | 6d | 0d | COST | TWR | LOA |
| CNEXWLO75 |  | Balconies Glazing & Aluminium Handrail | 2d | 2017-07-23 | 2017-07-24 | CNEXWLO69, CNEXWLO36, CNEXWLO68, EN0PSRA14, EN0PSPR16 FS+14d | 16d | 1d | COST | TWR | LOA |
|  | 1.1.1.6 | **9th Floor** |  | 2017-07-01 | 2017-07-27 |  |  |  |  |  |  |
| CNEXWLO25 |  | Concrete Up Stand For Balconies | 1d | 2017-07-01 | 2017-07-01 | CNEXWLO20 | 17d | 0d | COST | TWR | LOA |
| CNEXWLO45 |  | Aluminium Doors | 2d | 2017-07-08 | 2017-07-09 | CNEXWLO36 SS+2d, CNEXWLO25 | 12d | 0d | COST | TWR | LOA |
| CNEXWLO26 |  | Water Proofing | 3d | 2017-07-10 | 2017-07-12 | CNEXWLO45, CNEXWLO25 | 14d | 8d | COST | TWR | LOA |
| CNEXWLO77 |  | Ceramic for Balconies | 3d | 2017-07-23 | 2017-07-25 | CNEXWLO68, CNEXWLO45, CNEXWLO26 | 6d | 0d | COST | TWR | LOA |
| CNEXWLO84 |  | Balconies Glazing & Aluminium Handrail | 2d | 2017-07-26 | 2017-07-27 | CNEXWLO75, CNEXWLO45, CNEXWLO77, EN0PSRA14, EN0PSPR16 FS+14d | 15d | 1d | COST | TWR | LOA |
|  | 1.1.1.7 | **10th Floor** |  | 2017-07-02 | 2017-07-31 |  |  |  |  |  |  |
| CNEXWLO27 |  | Concrete Up Stand For Balconies | 1d | 2017-07-02 | 2017-07-02 | CNEXWLO25 | 18d | 0d | COST | TWR | LOA |
| CNEXWLO56 |  | Aluminium Doors | 5d | 2017-07-10 | 2017-07-15 | CNEXWLO27, CNEXWLO45 SS+2d | 12d | 0d | COST | TWR | LOA |
| CNEXWLO30 |  | Water Proofing | 3d | 2017-07-16 | 2017-07-18 | CNEXWLO56, CNEXWLO27 | 12d | 6d | COST | TWR | LOA |
| CNEXWLO86 |  | Ceramic for Balconies | 3d | 2017-07-26 | 2017-07-29 | CNEXWLO56, CNEXWLO30, CNEXWLO77 | 6d | 0d | COST | TWR | LOA |
| CNEXWLO90 |  | Balconies Glazing & Aluminium Handrail | 2d | 2017-07-30 | 2017-07-31 | CNEXWLO86, CNEXWLO56, CNEXWLO84, EN0PSRA14, EN0PSPR16 FS+14d | 14d | 0d | COST | TWR | LOA |
|  | 1.1.1.8 | **11th Floor** |  | 2017-07-03 | 2017-08-02 |  |  |  |  |  |  |
| CNEXWLO31 |  | Concrete Up Stand For Balconies | 1d | 2017-07-03 | 2017-07-03 | CNEXWLO27 | 22d | 0d | COST | TWR | LOA |
| CNEXWLO62 |  | Aluminium Doors | 3d | 2017-07-12 | 2017-07-15 | CNEXWLO56 SS+2d, CNEXWLO31 | 15d | 0d | COST | TWR | LOA |
| CNEXWLO35 |  | Water Proofing | 3d | 2017-07-16 | 2017-07-18 | CNEXWLO62, CNEXWLO31 | 15d | 9d | COST | TWR | LOA |
| CNEXWLO92 |  | Ceramic for Balconies | 2d | 2017-07-30 | 2017-07-31 | CNEXWLO62, CNEXWLO35, CNEXWLO86 | 6d | 0d | COST | TWR | LOA |
| CNEXWLO94 |  | Balconies Glazing & Aluminium Handrail | 2d | 2017-08-01 | 2017-08-02 | CNEXWLO92, CNEXWLO62, CNEXWLO90, EN0PSRA14, EN0PSPR16 FS+14d | 14d | 1d | COST | TWR | LOA |

| ID | WBS | Activity | Duration | Start | Finish | Predecessors | Total float | Free float | Resources | ZONE L1 | FLOOR L2 |
| --- | --- | --- | --- | --- | --- | --- | --- | --- | --- | --- | --- |
|  | 1.1.1.9 | **12th Floor** |  | 2017-07-04 | 2017-08-06 |  |  |  |  |  |  |
| CNEXWLO34 |  | Concrete Up Stand For Balconies | 1d | 2017-07-04 | 2017-07-04 | CNEXWLO31 | 23d | 0d | COST | TWR | LOA |
| CNEXWLO67 |  | Aluminium Doors | 3d | 2017-07-15 | 2017-07-17 | CNEXWLO62 SS+2d, CNEXWLO34 | 15d | 0d | COST | TWR | LOA |
| CNEXWLO38 |  | Water Proofing | 3d | 2017-07-18 | 2017-07-20 | CNEXWLO67, CNEXWLO34 | 15d | 9d | COST | TWR | LOA |
| CNEXWLO93 |  | Ceramic for Balconies | 3d | 2017-08-01 | 2017-08-03 | CNEXWLO67, CNEXWLO92, CNEXWLO38 | 6d | 0d | COST | TWR | LOA |
| CNEXWLO99 |  | Balconies Glazing & Aluminium Handrail | 2d | 2017-08-05 | 2017-08-06 | CNEXWLO67, CNEXWLO93, CNEXWLO94, EN0PSRA14, EN0PSPR16 FS+14d | 13d | 1d | COST | TWR | LOA |
|  | 1.1.1.10 | **13th Floor** |  | 2017-07-05 | 2017-08-09 |  |  |  |  |  |  |
| CNEXWLO37 |  | Concrete Up Stand For Balconies | 1d | 2017-07-05 | 2017-07-05 | CNEXWLO34 | 25d | 0d | COST | TWR | LOA |
| CNEXWLO72 |  | Aluminium Doors | 3d | 2017-07-17 | 2017-07-19 | CNEXWLO67 SS+2d, CNEXWLO37 | 16d | 0d | COST | TWR | LOA |
| CNEXWLO43 |  | Water Proofing | 3d | 2017-07-20 | 2017-07-23 | CNEXWLO72, CNEXWLO37 | 16d | 10d | COST | TWR | LOA |
| CNEXWLO98 |  | Ceramic for Balconies | 3d | 2017-08-05 | 2017-08-07 | CNEXWLO72, CNEXWLO43, CNEXWLO93 | 6d | 0d | COST | TWR | LOA |
| CNEXWLO101 |  | Balconies Glazing & Aluminium Handrail | 2d | 2017-08-08 | 2017-08-09 | CNEXWLO72, CNEXWLO99, CNEXWLO98, EN0PSRA14, EN0PSPR16 FS+14d | 12d | 1d | COST | TWR | LOA |
|  | 1.1.1.11 | **14th Floor** |  | 2017-07-06 | 2017-08-13 |  |  |  |  |  |  |
| CNEXWLO44 |  | Concrete Up Stand For Balconies | 1d | 2017-07-06 | 2017-07-06 | CNEXWLO37 | 27d | 0d | COST | TWR | LOA |
| CNEXWLO79 |  | Aluminium Doors | 3d | 2017-07-19 | 2017-07-22 | CNEXWLO72 SS+2d, CNEXWLO44 | 17d | 0d | COST | TWR | LOA |
| CNEXWLO47 |  | Water Proofing | 2d | 2017-07-23 | 2017-07-24 | CNEXWLO79, CNEXWLO44 | 18d | 12d | COST | TWR | LOA |
| CNEXWLO103 |  | Ceramic for Balconies | 3d | 2017-08-08 | 2017-08-10 | CNEXWLO79, CNEXWLO98, CNEXWLO47 | 6d | 0d | COST | TWR | LOA |
| CNEXWLO105 |  | Balconies Glazing & Aluminium Handrail | 2d | 2017-08-12 | 2017-08-13 | CNEXWLO79, CNEXWLO101, CNEXWLO103, EN0PSRA14, EN0PSPR16 FS+14d | 11d | 1d | COST | TWR | LOA |
|  | 1.1.1.12 | **15th Floor** |  | 2017-07-08 | 2017-08-16 |  |  |  |  |  |  |
| CNEXWLO46 |  | Concrete Up Stand For Balconies | 1d | 2017-07-08 | 2017-07-08 | CNEXWLO44 | 28d | 0d | COST | TWR | LOA |
| CNEXWLO81 |  | Aluminium Doors | 3d | 2017-07-22 | 2017-07-24 | CNEXWLO46, CNEXWLO79 SS+2d | 17d | 0d | COST | TWR | LOA |
| CNEXWLO49 |  | Water Proofing | 3d | 2017-07-25 | 2017-07-27 | CNEXWLO81, CNEXWLO46 | 18d | 12d | COST | TWR | LOA |
| CNEXWLO104 |  | Ceramic for Balconies | 3d | 2017-08-12 | 2017-08-14 | CNEXWLO103, CNEXWLO81, CNEXWLO49 | 6d | 0d | COST | TWR | LOA |
| CNEXWLO108 |  | Balconies Glazing & Aluminium Handrail | 2d | 2017-08-15 | 2017-08-16 | CNEXWLO105, CNEXWLO104, CNEXWLO81, EN0PSRA14, EN0PSPR16 FS+14d | 10d | 1d | COST | TWR | LOA |

| ID | WBS | Activity | Duration | Start | Finish | Predecessors | Total float | Free float | Resources | ZONE L1 | FLOOR L2 |
| --- | --- | --- | --- | --- | --- | --- | --- | --- | --- | --- | --- |
|  | 1.1.1.13 | **16th Floor** |  | 2017-07-09 | 2017-08-20 |  |  |  |  |  |  |
| CNEXWLO48 |  | Concrete Up Stand For Balconies | 1d | 2017-07-09 | 2017-07-09 | CNEXWLO46 | 29d | 0d | COST | TWR | LOA |
| CNEXWLO88 |  | Aluminium Doors | 3d | 2017-07-24 | 2017-07-26 | CNEXWLO48, CNEXWLO81 SS+2d | 17d | 0d | COST | TWR | LOA |
| CNEXWLO51 |  | Water Proofing | 5d | 2017-07-27 | 2017-08-01 | CNEXWLO88, CNEXWLO48 | 17d | 11d | COST | TWR | LOA |
| CNEXWLO107 |  | Ceramic for Balconies | 3d | 2017-08-15 | 2017-08-17 | CNEXWLO104, CNEXWLO88, CNEXWLO51 | 6d | 0d | COST | TWR | LOA |
| CNEXWLO111 |  | Balconies Glazing & Aluminium Handrail | 2d | 2017-08-19 | 2017-08-20 | CNEXWLO108, CNEXWLO88, CNEXWLO107, EN0PSRA14, EN0PSPR16 FS+14d | 9d | 1d | COST | TWR | LOA |
|  | 1.1.1.14 | **17th Floor** |  | 2017-07-10 | 2017-08-23 |  |  |  |  |  |  |
| CNEXWLO50 |  | Concrete Up Stand For Balconies | 1d | 2017-07-10 | 2017-07-10 | CNEXWLO48 | 33d | 0d | COST | TWR | LOA |
| CNEXWLO89 |  | Aluminium Doors | 2d | 2017-07-26 | 2017-07-27 | CNEXWLO50, CNEXWLO88 SS+2d | 20d | 0d | COST | TWR | LOA |
| CNEXWLO57 |  | Water Proofing | 3d | 2017-07-29 | 2017-07-31 | CNEXWLO89, CNEXWLO50 | 21d | 15d | COST | TWR | LOA |
| CNEXWLO110 |  | Ceramic for Balconies | 3d | 2017-08-19 | 2017-08-21 | CNEXWLO57, CNEXWLO89, CNEXWLO107 | 6d | 0d | COST | TWR | LOA |
| CNEXWLO113 |  | Balconies Glazing & Aluminium Handrail | 2d | 2017-08-22 | 2017-08-23 | CNEXWLO111, CNEXWLO110, CNEXWLO89, EN0PSRA14, EN0PSPR16 FS+14d | 8d | 1d | COST | TWR | LOA |
|  | 1.1.1.15 | **18th Floor** |  | 2017-07-11 | 2017-08-27 |  |  |  |  |  |  |
| CNEXWLO59 |  | Concrete Up Stand For Balconies | 1d | 2017-07-11 | 2017-07-11 | CNEXWLO50 | 34d | 0d | COST | TWR | LOA |
| CNEXWLO96 |  | Aluminium Doors | 4d | 2017-07-29 | 2017-08-01 | CNEXWLO59, CNEXWLO89 SS+2d | 20d | 0d | COST | TWR | LOA |
| CNEXWLO63 |  | Water Proofing | 3d | 2017-08-02 | 2017-08-05 | CNEXWLO96, CNEXWLO59 | 20d | 14d | COST | TWR | LOA |
| CNEXWLO115 |  | Ceramic for Balconies | 3d | 2017-08-22 | 2017-08-24 | CNEXWLO63, CNEXWLO110, CNEXWLO96 | 6d | 0d | COST | TWR | LOA |
| CNEXWLO117 |  | Balconies Glazing & Aluminium Handrail | 2d | 2017-08-26 | 2017-08-27 | CNEXWLO115, CNEXWLO113, CNEXWLO96, EN0PSRA14, EN0PSPR16 FS+14d | 7d | 1d | COST | TWR | LOA |
|  | 1.1.1.16 | **19th Floor** |  | 2017-07-12 | 2017-09-03 |  |  |  |  |  |  |
| CNEXWLO60 |  | Concrete Up Stand For Balconies | 1d | 2017-07-12 | 2017-07-12 | CNEXWLO59 | 37d | 15d | COST | TWR | LOA |
| CNEXWLO97 |  | Aluminium Doors | 3d | 2017-07-31 | 2017-08-02 | CNEXWLO96 SS+2d, CNEXWLO60 | 22d | 0d | COST | TWR | LOA |
| CNEXWLO64 |  | Water Proofing | 3d | 2017-08-03 | 2017-08-06 | CNEXWLO97, CNEXWLO60 | 22d | 16d | COST | TWR | LOA |
| CNEXWLO116 |  | Ceramic for Balconies | 3d | 2017-08-26 | 2017-08-28 | CNEXWLO97, CNEXWLO64, CNEXWLO115 | 6d | 0d | COST | TWR | LOA |
| CNEXWLO120 |  | Balconies Glazing & Aluminium Handrail | 2d | 2017-09-02 | 2017-09-03 | CNEXWLO116, CNEXWLO117, CNEXWLO97, EN0PSRA14, EN0PSPR16 FS+14d | 6d |  | COST | TWR | LOA |

| ID | WBS | Activity | Type | Duration | Start | Finish | Predecessors | Total float | Free float | Resources | Cost | TYPE OF WORK L4 | ZONE L1 | FLOOR L2 | CATEGORY OF WORK L3 |
| --- | --- | --- | --- | --- | --- | --- | --- | --- | --- | --- | --- | --- | --- | --- | --- |
|  | 1.1.2 | **Leave out Area (Crane Affected)** |  |  | 2016-10-08 | 2017-08-21 |  |  |  |  |  |  |  |  |  |
| CNF04MP17 |  | Civil Clearance To Start 2nd Fix | milestone | 0d | 2016-10-08 | 2016-10-08 | CNF04FN30 | 8d | 0d |  |  | MEW | TWR | F04 | MEP |
| CNF04MP15 |  | Cable Tray / Trunking |  | 10d | 2016-10-09 | 2016-10-19 | CNF04MP17, CNP03MP11 | 9d | 1d | COST [153534 h]; ELECTRICIAN [320 h] | 153,534.2 | MEW | TWR | F04 | MEP |
| CNF04MP21 |  | Ducting Work Including Insulation |  | 10d | 2016-10-09 | 2016-10-19 | CNP03MP21, CNF04FN30 | 9d | 0d | COST [186091 h]; DUCTMAN [640 h] | 186,091.2 | MEW | TWR | F04 | MEP |
| CNF04MP22 |  | Installation of FCUs & Fans |  | 10d | 2016-10-09 | 2016-10-19 | CNF04MP21 FF, CNP03MP22, ENPRC1013 | 9d | 1d | COST [124633 h]; AC TECHNICIAN [480 h] | 124,632.6 | MEW | TWR | F04 | MEP |
| CNF04MP23 |  | Chilled Water Pipes (High L) |  | 10d | 2016-10-09 | 2016-10-19 | CNP03MP23, CNF04FN30 | 9d | 1d | COST [109870 h]; AC TECHNICIAN [640 h] | 109,870.1 | MEW | TWR | F04 | MEP |
| CNF04MP24 |  | LPG Piping |  | 10d | 2016-10-09 | 2016-10-19 | CNP03MP24, CNF04FN30, EN0PSPR11 FS+7d | 9d | 1d | COST [67153.8 h]; PIPE FITTER [320 h] | 67,153.8 | MEW | TWR | F04 | MEP |
| CNF04MP25 |  | Fire Fighting Pipes (Mains/Branches) |  | 10d | 2016-10-09 | 2016-10-19 | CNP03MP25, CNF04FN30 | 9d | 1d | COST [79182 h]; PIPE FITTER [480 h] | 79,182 | MEW | TWR | F04 | MEP |
| CNF04MP18 |  | Drainage Pipes (High L) |  | 10d | 2016-10-10 | 2016-10-20 | CNF04MP17 FS+1d, CNP03MP18 | 8d | 0d | COST [121568 h]; PLUMBER [320 h] | 121,568.3 | MEW | TWR | F04 | MEP |
| CNF04MP19 |  | Wires |  | 7d | 2016-10-10 | 2016-10-17 | CNF04MP13, CNF04MP17 FS+1d, CNP03MP19 | 11d | 3d | COST [153534 h]; ELECTRICIAN [1120 h] | 153,534.2 | MEW | TWR | F04 | MEP |
| CNF04MP20 |  | Water Supply Pipes (High L) |  | 10d | 2016-10-10 | 2016-10-20 | CNF04MP18 FF, CNP03MP20 | 8d | 0d | COST [141452 h]; PLUMBER [320 h] | 141,451.6 | MEW | TWR | F04 | MEP |
| CNF04MP26 |  | Acoustic Drainage Pipe Insulation |  | 8d | 2016-10-12 | 2016-10-20 | CNF04MP18 SS+2d, CNP03MP26 | 8d | 0d | COST [3763.1 h]; PLUMBER [256 h] | 3,763.1 | MEW | TWR | F04 | MEP |
| CNF04MP27 |  | Water Heaters Installation&Connection |  | 6d | 2016-10-12 | 2016-10-18 | CNF04MP20 SS+2d, ENPRC1002 | 10d | 2d | COST [558.9 h] | 558.9 | MEW | TWR | F04 | MEP |
| CNF04MP28 |  | MEP Clearance To Close Apartments Ceilings | milestone | 0d | 2016-10-20 | 2016-10-20 | CNF04MP23, CNF04MP20, CNF04MP19, CNF04MP25, CNF04MP22, CNF04MP18, CNF04MP24, CNF04MP26, CNF04MP27, CNF04MP15 | 8d | 0d |  |  | MEW | TWR | F04 | MEP |
| CNF04MP29 |  | MEP Clearance To Close Corridors Ceilings | milestone | 0d | 2016-10-26 | 2016-10-26 | CNF04MP28 FF+5d | 43d | 0d |  |  | MEW | TWR | F04 | MEP |
|  | 1.1.2.1 | **TC 01** |  |  | 2017-06-22 | 2017-07-19 |  |  |  |  |  |  |  |  |  |
| CNEXWLV50 |  | Slab Opening Concrete |  | 10d | 2017-06-22 | 2017-07-05 | GRIMS1040 | 22d | 0d | COST |  |  | TWR | LOA |  |
| CNEXWLV51 |  | Floor Finishing Work |  | 10d | 2017-07-06 | 2017-07-17 | CNEXWLV50 | 22d | 0d | COST |  |  | TWR | LOA |  |
| CNEXWLV52 |  | Aluminium Doors |  | 10d | 2017-07-06 | 2017-07-17 | CNEXWLV50 | 42d | 0d | COST |  |  | TWR | LOA |  |
| CNEXWLV53 |  | Balconies Glazing & Aluminium Handrail |  | 10d | 2017-07-09 | 2017-07-19 | CNEXWLV52 FF+2d, EN0PSRA14, EN0PSPR16 FS+14d | 42d |  | COST |  |  | TWR | LOA |  |
|  | 1.1.2.2 | **TC 02** |  |  | 2017-06-22 | 2017-08-21 |  |  |  |  |  |  |  |  |  |
| CNEXWLV90 |  | Slab Opening Concrete |  | 10d | 2017-06-22 | 2017-07-05 | GRIMS1040 | 32d | 10d | COST |  |  | TWR | LOA |  |
| CNEXWLV54 |  | Floor Finishing Work |  | 10d | 2017-07-18 | 2017-07-29 | CNEXWLV90, CNEXWLV51 | 22d | 0d | COST |  |  | TWR | LOA |  |
| CNEXWLV56 |  | Aluminium Doors |  | 10d | 2017-07-30 | 2017-08-09 | CNEXWLV90, CNEXWLV54 | 22d | 0d | COST |  |  | TWR | LOA |  |
| CNEXWLV57 |  | Balconies Glazing & Aluminium Handrail |  | 10d | 2017-08-01 | 2017-08-12 | CNEXWLV56 FF+2d, EN0PSRA14, EN0PSPR16 FS+14d | 22d |  | COST |  |  | TWR | LOA |  |
| CNEXWLV58 |  | Wall Finishing Work |  | 10d | 2017-08-10 | 2017-08-21 | CNEXWLV56 | 44d | 34d | COST |  |  | TWR | LOA |  |

| ID | WBS | Activity | Duration | Start | Finish | Predecessors | Total float | Free float | Resources | Cost | TYPE OF WORK L4 | ZONE L1 | CATEGORY OF WORK L3 |
| --- | --- | --- | --- | --- | --- | --- | --- | --- | --- | --- | --- | --- | --- |
|  | 20 | **OTS** |  | 2017-04-18 | 2017-06-21 |  |  |  |  |  |  |  |  |
|  | 1 | **Civil** |  | 2017-04-18 | 2017-06-21 |  |  |  |  |  |  |  |  |
| CNEXWLV100 |  | Plaster | 30d | 2017-04-18 | 2017-05-23 | GRKDS1030 FS+15d | 64d | 0d | COST [683880 h]; Helper [240 h]; Mason [480 h] | 683,880 | PLS | TWR |  |
| CNEXWLV101 |  | Water Proofing | 5d | 2017-06-05 | 2017-06-10 | CNEXWLV106, CNEXWLV105 | 64d | 0d | COST [3400 h]; Helper [40 h]; Water Proofing Labor [40 h] | 3,400 | WPR | TWR |  |
| CNEXWLV103 |  | Painting | 5d | 2017-06-11 | 2017-06-15 | CNEXWLV101 | 64d | 0d | COST [297700 h]; Painter [160 h] | 297,700 | SRW | TWR |  |
| CNEXWLV104 |  | Floor Finishes | 5d | 2017-06-17 | 2017-06-21 | CNEXWLV103 | 64d |  | COST [5110 h]; Helper [40 h]; Mason [40 h] | 5,110 | IDF | TWR |  |
|  | 2 | **MEP** |  | 2017-05-24 | 2017-06-04 |  |  |  |  |  |  |  |  |
| CNEXWLV105 |  | Water Supply Verticals | 10d | 2017-05-24 | 2017-06-04 | CNEXWLV100 | 64d | 0d | COST [241984 h]; PLUMBER [160 h] | 241,984.5 | MEW | TWR |  |
| CNEXWLV106 |  | Drainage Verticals | 10d | 2017-05-24 | 2017-06-04 | CNEXWLV100 | 64d | 0d | COST [103705 h]; PLUMBER [160 h] | 103,705 | MEW | TWR |  |
|  | 4 | **Equipment Installation** |  | 2017-04-23 | 2017-08-09 |  |  |  |  |  |  |  |  |
|  | 1.2.2.1 | **HVAC** |  | 2017-04-25 | 2017-06-17 |  |  |  |  |  |  |  |  |
| GREQPMP10 |  | FAHU | 15d | 2017-04-25 | 2017-05-11 | CNROFMP13, CNGF0MP62, ENPRC1010, CNROFMP14 SS, CNROFUR11, EN0PSRA78, CNROFFN10 | 41d | 35d | COST [891339 h]; AC TECHNICIAN [240 h]; DUCTMAN [240 h]; PIPE FITTER [160 h] | 891,339.3 | MEW | TWR | MEP |
| GREQPMP12 |  | Fans | 15d | 2017-05-06 | 2017-05-22 | CNGF0MP62, ENPRC1012, EN0PSRA78, CNROFFN10 | 32d | 26d | COST [290567 h]; AC TECHNICIAN [240 h] | 290,567.2 | MEW | TWR | MEP |
| GREQPMP11 |  | Chilled Water Pumps | 10d | 2017-06-06 | 2017-06-17 | ENPRC1011, CNGF0FN79, CNGF0MP62, EN0PSRA78, CNROFFN10 | 10d | 4d | COST [88157 h]; AC TECHNICIAN [160 h] | 88,157 | MEW | TWR | MEP |
|  | 1.2.2.2 | **Electrical** |  | 2017-05-07 | 2017-08-09 |  |  |  |  |  |  |  |  |
| GREQPMP13 |  | Central Battery System ( Above Celing Items) | 18d | 2017-05-07 | 2017-05-27 | EN0PSPR41 FS+14d, CNGF0MP62, CNF16MP17 | 93d | 82d | COST [245510 h]; ELECTRICIAN [160 h] | 245,509.9 | MEW | TWR | MEP |
| GREQPMP15 |  | LV Cables And Wires | 18d | 2017-05-07 | 2017-05-27 | EN0PSPR48 FS+14d, CNGF0MP62, CNF16MP17 | 93d | 82d | COST [112577 h]; ELECTRICIAN [160 h] | 112,576.6 | MEW | TWR | MEP |
| GREQPMP20 |  | Central Battery System ( Final Fix) | 18d | 2017-05-07 | 2017-05-27 | EN0PSPR42 FS+14d, CNGF0MP62, CNF16MP17 | 93d | 82d | COST [222369 h]; ELECTRICIAN [160 h] | 222,369 | MEW | TWR | MEP |
| GREQPMP22 |  | Access Control System (Final Fix) | 18d | 2017-05-08 | 2017-05-28 | CNGF0MP62, EN0PSPR50 FS+14d, EN0PSPR49 FS+14d, CNF16MP17 | 92d | 81d | COST [81011.9 h]; ELECTRICIAN [160 h] | 81,011.9 | MEW | TWR | MEP |
| GREQPMP18 |  | Bus Bar System | 18d | 2017-05-13 | 2017-06-01 | CNGF0MP62, EN0PSPR39 FS+14d, CNF16MP17 | 88d | 77d | COST [160 h]; ELECTRICIAN [192 h] | 160 | MEW | TWR | MEP |
| GREQPMP21 |  | Air Craft Warning Light | 18d | 2017-06-10 | 2017-07-02 | CNGF0MP62, EN0PSPR46 FS+14d, CNROFUR16, CNROFFN22 | 64d | 53d | COST [15169.1 h]; ELECTRICIAN [288 h] | 15,169.1 | MEW | TWR | MEP |
| GREQPMP17 |  | LV Switchgear System | 18d | 2017-07-20 | 2017-08-09 | ENPRC1015, CNGF0MP62, CNEXWLS16 | 24d |  | COST [412198 h]; ELECTRICIAN [288 h] | 412,197.7 | MEW | TWR | MEP |
|  | 1.2.2.3 | **Plumbing & Fire Fitting** |  | 2017-04-23 | 2017-07-23 |  |  |  |  |  |  |  |  |
| GREQPMP23 |  | Pump | 18d | 2017-04-23 | 2017-05-13 | ENPRC1003, CNGF0MP62, CNGF0FN16 | 115d | 43d | COST [188150 h]; PLUMBER [144 h]; PIPE FITTER [144 h] | 188,149.9 | MEW | TWR | MEP |
| GREQPMP14 |  | Grp Water Tank | 10d | 2017-06-10 | 2017-06-20 | CNROFMP13, CNGF0MP62, CNROFUR16, CNROFMP14 SS, ENPRC1004 | 82d | 10d | COST [154858 h]; PIPE FITTER [80 h]; PLUMBER [80 h] | 154,857.5 | MEW | TWR | MEP |
| GREQPMP16 |  | LPG Tank & Etc. | 14d | 2017-07-08 | 2017-07-23 | EN0PSPR12 FS+14d, CNROFMP13, CNROFMP14 SS, CNGF0MP62, CNROFUR16, EN0PSPR11 FS+14d | 39d |  | COST [968994 h]; PIPE FITTER [224 h] | 968,993.6 | MEW | TWR | MEP |

| ID | WBS | Activity | Duration | Start | Finish | Predecessors | Total float | Free float | Resources | Cost | TYPE OF WORK L4 | ZONE L1 |
| --- | --- | --- | --- | --- | --- | --- | --- | --- | --- | --- | --- | --- |
|  | 1.5.5 | **Facades** |  | 2016-10-23 | 2017-09-02 |  |  |  |  |  |  |  |
|  | 1 | **General** |  | 2017-06-10 | 2017-09-02 |  |  |  |  |  |  |  |
| CNFCTE114 |  | Roof Crown Cladding | 21d | 2017-06-10 | 2017-07-05 | CNROFUR14, CNROFUR16, CNROFMP14 SS+14d | 79d | 0d | COST [63762 h] | 63,762 | IDC | GFP |
| CNFCTE117 |  | Damac Sign | 5d | 2017-07-06 | 2017-07-11 | CNFCTE114 | 79d | 69d | COST [1026000 h]; Helper [200 h]; Signage Labor [200 h] | 1,026,000 | DMS | GFP |
| CNFCWE117 |  | Entrance Canopy | 10d | 2017-07-12 | 2017-07-23 | EN0PSPR29 FS+14d | 29d | 0d | COST [45544.6 h]; Helper [400 h]; Steel Works Labor [400 h] | 45,544.55 | IDC | GFP |
| CNFCWE118 |  | Revolving Door | 10d | 2017-07-24 | 2017-08-03 | CNFCWE117, EN0PSRA39, EN0PSPR51 FS+14d | 29d |  | COST [30363 h]; Helper [160 h]; Aluminium Labor [80 h] | 30,363 | IDC | GFP |
| CNFCWE190 |  | Final Coat for Podiums | 15d | 2017-08-13 | 2017-09-02 | CNFCGE414 FF | 59d |  | COST [100000 h] | 100,000 | SRW | GFP |
|  | 1.5.5.1 | **Ground Floor & Podiums** |  | 2016-10-23 | 2017-09-02 |  |  |  |  |  |  |  |
|  | 1.5.5.1.1 | **Elevation 1** |  | 2017-05-25 | 2017-06-22 |  |  |  |  |  |  |  |
| CNFCGE111 |  | ACP Installation | 25d | 2017-05-25 | 2017-06-22 | CNFCTE225, EN0PSRA37 | 0d |  | COST [766000 h]; Helper [200 h]; Aluminium Labor [200 h] | 766,000 | ALM | GFP |
|  | 1.5.5.1.11 | **Elevation 2** |  | 2017-06-24 | 2017-08-10 |  |  |  |  |  |  |  |
| CNFCGE215 |  | ACP Installation | 40d | 2017-06-24 | 2017-08-10 | CNFCGE111 | 0d |  | COST [1149000 h]; Helper [320 h]; Aluminium Labor [320 h] | 1,149,000 | ALM | GFP |
|  | 1.5.5.1.111 | **Elevation 3** |  | 2016-10-23 | 2017-08-20 |  |  |  |  |  |  |  |
| CNFCGE310 |  | Scaffolding Erection | 8d | 2016-10-23 | 2016-10-31 | CNF10CW20 | 27d | 0d | COST |  |  | GFP |
| CNFCGE311 |  | Plastering | 12d | 2016-11-01 | 2016-11-14 | CNFCGE310 | 27d | 0d | COST [105194 h]; Helper [192 h]; Mason [288 h]; Plastering [667 M2] | 105,194 | PLS | GFP |
| CNFCGE313 |  | Epoxy Primer Paint | 8d | 2016-11-23 | 2016-12-04 | CNFCGE311 FS+7d | 27d | 0d | COST [91938 h]; Painter [192 h] | 91,938 | EPF | GFP |
| CNFCGE314 |  | ACP Installation | 8d | 2017-08-12 | 2017-08-20 | CNFCGE215, CNFCGE310, CNFCGE311 SS+8d | 0d |  | COST [250000 h]; Helper [64 h]; Aluminium Labor [64 h] | 250,000 | ALM | GFP |
|  | 1.5.5.1.1111 | **Elevation 4** |  | 2016-12-05 | 2017-09-02 |  |  |  |  |  |  |  |
| CNFCGE410 |  | Scaffolding Erection | 8d | 2016-12-05 | 2016-12-14 | CNFCGE313 | 27d | 0d | COST |  |  | GFP |
| CNFCGE411 |  | Plastering | 15d | 2016-12-15 | 2017-01-02 | CNFCGE410 | 27d | 0d | COST [244454 h]; Helper [360 h]; Mason [720 h]; Plastering [1710 M2] | 244,454 | PLS | GFP |
| CNFCGE413 |  | Epoxy Primer Paint | 10d | 2017-01-11 | 2017-01-22 | CNFCGE411 FS+7d | 27d |  | COST [214523 h]; Painter [400 h] | 214,523 | EPF | GFP |
| CNFCGE414 |  | ACP Installation | 8d | 2017-08-21 | 2017-09-02 | CNFCGE410, CNFCGE314, CNFCGE411 SS+8d | 0d |  | COST [3605000 h]; Helper [64 h]; Aluminium Labor [64 h] | 3,605,000 | ALM | GFP |
|  | 1.5.5.2 | **Tower** |  | 2016-10-25 | 2017-09-02 |  |  |  |  |  |  |  |
|  | 1.5.5.2.1 | **Elevation 1** |  | 2016-10-25 | 2017-07-08 |  |  |  |  |  |  |  |
| CNFCTE116 |  | ACP Installation from 4th to 6th Slab | 9d | 2016-10-25 | 2016-11-03 | EN0PSRA37, EN0PSPR36, CNF10CW20, CNF06FN10 | 0d |  | COST [318000 h]; Helper [144 h]; Aluminium Labor [72 h] | 318,000 | ALM | TWR |
| CNFCTE115 |  | ACP Installation from 7th to 9th Slab | 9d | 2016-12-26 | 2017-01-05 | CNFCTE416, CNF14CW20, CNF09FN10 | 0d |  | COST [318000 h]; Helper [144 h]; Aluminium Labor [72 h] | 318,000 | ALM | TWR |
| CNFCTE120 |  | ACP Installation from 10th to 12th Slab | 9d | 2017-02-23 | 2017-03-05 | CNFCGE413, CNFCTE415, CNF17CW12, CNF12FN10 | 0d |  | COST [318000 h]; Helper [144 h]; Aluminium Labor [72 h] | 318,000 | ALM | TWR |
| CNFCTE125 |  | ACP Installation from 13th to 15th Slab | 9d | 2017-04-24 | 2017-05-03 | CNFCTE420, GRKDS1030, CNF15FN10 | 0d |  | COST [318000 h]; Helper [144 h]; Aluminium Labor [72 h] | 318,000 | ALM | TWR |
| CNFCTE130 |  | ACP Installation from 16th to 19th Slab | 9d | 2017-06-26 | 2017-07-08 | CNFCTE425, CNF19FN10 | 0d |  | COST [424000 h]; Helper [144 h]; Aluminium Labor [72 h] | 424,000 | ALM | TWR |

| ID | WBS | Activity | Duration | Start | Finish | Predecessors | Total float | Free float | Resources | Cost | TYPE OF WORK L4 | ZONE L1 |
| --- | --- | --- | --- | --- | --- | --- | --- | --- | --- | --- | --- | --- |
|  | 1.5.5.2.31 | **Elevation 2** |  | 2016-11-05 | 2017-07-29 |  |  |  |  |  |  |  |
| CNFCTE216 |  | ACP Installation from 4th to 6th Slab | 16d | 2016-11-05 | 2016-11-22 | CNFCTE116 | 0d |  | COST [480000 h]; Helper [256 h]; Aluminium Labor [128 h] | 480,000 | ALM | TWR |
| CNFCTE215 |  | ACP Installation from 7th to 9th Slab | 16d | 2017-01-07 | 2017-01-24 | CNFCTE115 | 0d |  | COST [480000 h]; Helper [256 h]; Aluminium Labor [128 h] | 480,000 | ALM | TWR |
| CNFCTE220 |  | ACP Installation from 10th to 12th Slab | 16d | 2017-03-06 | 2017-03-23 | CNFCTE120 | 0d |  | COST [480000 h]; Helper [256 h]; Aluminium Labor [128 h] | 480,000 | ALM | TWR |
| CNFCTE225 |  | ACP Installation from 13th to 15th Slab | 18d | 2017-05-04 | 2017-05-24 | CNFCTE125 | 0d |  | COST [480000 h]; Helper [288 h]; Aluminium Labor [144 h] | 480,000 | ALM | TWR |
| CNFCTE230 |  | ACP Installation from 16th to 19th Slab | 18d | 2017-07-09 | 2017-07-29 | CNFCTE130 | 0d |  | COST [640000 h]; Helper [288 h]; Aluminium Labor [144 h] | 640,000 | ALM | TWR |
|  | 1.5.5.2.2 | **Elevation 3** |  | 2016-11-23 | 2017-08-08 |  |  |  |  |  |  |  |
| CNFCTE316 |  | ACP Installation from 4th to 6th Slab | 9d | 2016-11-23 | 2016-12-05 | CNFCTE216 | 0d |  | COST [550500 h]; Helper [144 h]; Aluminium Labor [72 h] | 550,500 | ALM | TWR |
| CNFCTE315 |  | ACP Installation from 7th to 9th Slab | 9d | 2017-01-25 | 2017-02-04 | CNFCTE215 | 0d |  | COST [550500 h]; Helper [144 h]; Aluminium Labor [72 h] | 550,500 | ALM | TWR |
| CNFCTE320 |  | ACP Installation from 10th to 12th Slab | 9d | 2017-03-25 | 2017-04-03 | CNFCTE220 | 0d |  | COST [550500 h]; Helper [144 h]; Aluminium Labor [72 h] | 550,500 | ALM | TWR |
| CNFCTE325 |  | ACP Installation from 13th to 15th Slab | 9d | 2017-05-25 | 2017-06-04 | CNFCTE225 | 0d |  | COST [550500 h]; Helper [144 h]; Aluminium Labor [72 h] | 550,500 | ALM | TWR |
| CNFCTE330 |  | ACP Installation from 16th to 19th Slab | 9d | 2017-07-30 | 2017-08-08 | CNFCTE230 | 0d |  | COST [734000 h]; Helper [144 h]; Aluminium Labor [72 h] | 734,000 | ALM | TWR |
|  | 1.5.5.2.3 | **Elevation 4** |  | 2016-12-06 | 2017-09-02 |  |  |  |  |  |  |  |
| CNFCTE416 |  | ACP Installation from 4th to 6th Slab | 16d | 2016-12-06 | 2016-12-25 | CNFCTE316 | 0d |  | COST [430500 h]; Helper [256 h]; Aluminium Labor [128 h] | 430,500 | ALM | TWR |
| CNFCTE415 |  | ACP Installation from 7th to 9th Slab | 16d | 2017-02-05 | 2017-02-22 | CNFCTE315, CNF12CW20 | 0d |  | COST [430500 h]; Helper [256 h]; Aluminium Labor [128 h] | 430,500 | ALM | TWR |
| CNFCTE420 |  | ACP Installation from 10th to 12th Slab | 16d | 2017-04-04 | 2017-04-23 | CNFCTE320 | 0d |  | COST [430500 h]; Helper [256 h]; Aluminium Labor [128 h] | 430,500 | ALM | TWR |
| CNFCTE425 |  | ACP Installation from 13th to 15th Slab | 18d | 2017-06-05 | 2017-06-25 | CNFCTE325 | 0d |  | COST [430500 h]; Helper [288 h]; Aluminium Labor [144 h] | 430,500 | ALM | TWR |
| CNFCTE430 |  | ACP Installation from 16th to 19th Slab | 18d | 2017-08-09 | 2017-09-02 | CNFCTE330 | 0d |  | COST [717500 h]; Helper [288 h]; Aluminium Labor [144 h] | 717,500 | ALM | TWR |
|  | 1.5.4 | **Specialities** |  | 2017-04-01 | 2017-08-12 |  |  |  |  |  |  |  |
|  | 1.5.4.1 | **Conveying System** |  | 2017-04-01 | 2017-07-02 |  |  |  |  |  |  |  |
|  | 1.5.4.1.1 | **Passenger Lifts** |  | 2017-04-01 | 2017-07-02 |  |  |  |  |  |  |  |
| CNSPECS10 |  | Guide Rail Installation | 35d | 2017-04-01 | 2017-05-11 | GRKDS1030, EN0PSRA21 | 6d | 0d | COST [814500 h] | 814,500 | CVN |  |
| CNSPECS11 |  | Lift Equipment Installation | 35d | 2017-05-13 | 2017-06-21 | CNSPECS10, EN0PSPR24 FS+14d | 6d | 0d | COST [1764750 h] | 1,764,750 | CVN |  |
| CNSPECS12 |  | Lift Finishes | 7d | 2017-06-22 | 2017-07-02 | CNSPECS11 | 57d |  | COST [135750 h] | 135,750 | CVN |  |

| ID | WBS | Activity | Duration | Start | Finish | Predecessors | Total float | Free float | Resources | Cost | TYPE OF WORK L4 |
| --- | --- | --- | --- | --- | --- | --- | --- | --- | --- | --- | --- |
|  | 1.5.4.2 | **Garbage Chute** |  | 2017-05-28 | 2017-08-07 |  |  |  |  |  |  |
| CNSPEGC10 |  | Garbage Chute 1st Fix | 30d | 2017-05-28 | 2017-07-03 | CNGF0FN16, ENPRC1006 FS+14d | 26d | 0d | COST [77333 h] | 77,333 | GRB |
| CNSPEGC11 |  | Garbage Chute 2nd Fix | 30d | 2017-07-04 | 2017-08-07 | ENPRC1007, CNSPEGC10 | 26d |  | COST [74750 h] | 74,750 | GRB |
|  | 1.5.4.4 | **Facade Ligting System** |  | 2017-05-27 | 2017-06-24 |  |  |  |  |  |  |
| CNSPELS10 |  | Facade Lighting System | 25d | 2017-05-27 | 2017-06-24 | EN0PSRA10 | 62d |  | COST [456000 h]; ELECTRICIAN [800 h] | 456,000 | FCD |
|  | 1 | **Install Kitchen Equipment** |  | 2017-06-19 | 2017-08-12 |  |  |  |  |  |  |
| CNSPEKE10 |  | Kitchen Equiipment | 45d | 2017-06-19 | 2017-08-12 | CNGF0FN57, ENPRC1008, EN0PSRA33 | 22d |  | COST [1710000 h] | 1,710,000 | MKN |
|  | 2 | **BMU** |  | 2017-04-01 | 2017-05-06 |  |  |  |  |  |  |
| CNSBMU10 |  | BMU | 30d | 2017-04-01 | 2017-05-06 | ENRBIPR10 | 46d | 40d | COST |  |  |
|  | 1.5.3 | **Landscaping & External Works** |  | 2017-03-16 | 2017-09-03 |  |  |  |  |  |  |
|  | 1.5.3.1 | **Ground Floor** |  | 2017-04-02 | 2017-09-03 |  |  |  |  |  |  |
| CNEXWLS11 |  | Concrete Upstand & Manholes Construction | 24d | 2017-04-02 | 2017-04-30 | CNGF0FN57, CNF19CW50 | 32d | 0d | COST [259277 h] | 259,277 | RFC |
| CNEXWLS15 |  | MEP Work For Planter Boxes | 10d | 2017-05-01 | 2017-05-11 | CNEXWLS11 | 32d | 26d | COST [51261.6 h]; ELECTRICIAN [160 h]; PLUMBER [160 h] | 51,261.6 | MEW |
| CNEXWLS16 |  | External MEP Work | 30d | 2017-05-01 | 2017-06-04 | CNEXWLS11 | 61d | 0d | COST [236740 h]; PLUMBER [960 h]; ELECTRICIAN [256 h] | 236,740 | MEW |
| CNEXWLS19 |  | Hard Landscape | 30d | 2017-06-19 | 2017-07-25 | EN0PSPR100 FS+14d, EN0PSRA18, EN0PSPR19 FS+14d, EN0PSPR20 FS+14d, CNF19FN10 | 10d | 0d | COST [414150 h] | 414,150 | LDS |
| CNEXWLS21 |  | Irrigation System | 14d | 2017-07-18 | 2017-08-02 | CNEXWLS19 FF+7d | 10d | 4d | COST |  | LDS |
| CNEXWLS24 |  | Soft Lanscape | 20d | 2017-08-08 | 2017-09-03 | CNEXWLS21, CNEXWLS23 SS+10d, CNEXWLS20 FS+12d, EN0PSNM15 FS+14d, CNEXWLS17 FS+12d, CNEXWLS10 FS+12d, EN0PSRA19, EN0PSPR21 SS+70d, EN0PSPR22 FS+14d | 6d |  | COST [552200 h] | 552,200 | LDS |
|  | 1.5.3.2 | **Amenity** |  | 2017-03-16 | 2017-09-03 |  |  |  |  |  |  |
|  | 1.5.3.2.1 | **Roofing and Landscape** |  | 2017-03-16 | 2017-08-19 |  |  |  |  |  |  |
| CNEXWLS10 |  | Concrete Upstand | 24d | 2017-03-16 | 2017-04-12 | CNF19CW50 | 64d | 0d | COST [10000 h] | 10,000 | RFC |
| CNEXWLS12 |  | MEP Work For Planter Boxes | 10d | 2017-04-13 | 2017-04-25 | CNEXWLS10 | 64d | 0d | COST [51261.6 h]; PLUMBER [160 h]; ELECTRICIAN [80 h] | 51,261.6 | MEW |
| CNEXWLS17 |  | Primer + Membrane Laying + Testing | 12d | 2017-04-26 | 2017-05-09 | CNEXWLS10, CNEXWLS12 | 64d | 58d | COST [10000 h] | 10,000 | WPR |
| CNEXWLS20 |  | Hard Landscape | 30d | 2017-06-12 | 2017-07-18 | CNEXWLS11, CNEXWLS15, EN0PSNM15 FS+14d, EN0PSRA16, EN0PSRA17, EN0PSPR19 FS+14d, EN0PSPR20 FS+14d, CNF19FN10 | 6d | 0d | COST [276100 h] | 276,100 | LDS |
| CNEXWLS22 |  | Irrigation System | 14d | 2017-07-11 | 2017-07-26 | CNEXWLS20 FF+7d | 6d | 0d | COST |  | LDS |
| CNEXWLS23 |  | Soft Lanscape | 20d | 2017-07-27 | 2017-08-19 | CNEXWLS22, CNEXWLS20 FS+7d, EN0PSNM15 FS+14d, CNEXWLS17 FS+7d, CNEXWLS10 FS+7d, EN0PSPR21 SS+35d, EN0PSPR22 FS+14d | 6d | 0d | COST [1777452 h] | 1,777,452 | LDS |

| ID | WBS | Activity | Type | Duration | Start | Finish | Predecessors | Total float | Free float | Resources | Cost | TYPE OF WORK L4 | CATEGORY OF WORK L3 |
| --- | --- | --- | --- | --- | --- | --- | --- | --- | --- | --- | --- | --- | --- |
|  | 1 | **Swimming Pool** |  |  | 2017-06-12 | 2017-09-03 |  |  |  |  |  |  |  |
| CNEXWSP10 |  | Swimming Pool Works |  | 60d | 2017-06-12 | 2017-08-22 | EN0PSRA30, EN0PSPR32 FS+14d, CNF19FN10 | 52d | 0d | COST [102166 h] | 102,165.5 | B1-GNR |  |
| GREQPMP28 |  | Swimming Pool Pumps |  | 7d | 2017-08-23 | 2017-09-03 | CNGF0MP62, CNEXWSP10 | 52d | 27d | COST |  |  | MEP |
|  | 1 | **Health Unit** |  |  | 2016-09-19 | 2017-07-25 |  |  |  |  |  |  |  |
|  | 1 | **Civil** |  |  | 2016-09-19 | 2017-02-06 |  |  |  |  |  |  |  |
| CNHUCV100 |  | Blockwork |  | 12d | 2016-09-19 | 2016-10-03 | CNF04FN27 | 5d | 0d | COST [40000 h]; Helper [192 h]; Mason [288 h]; Block [96 M2] | 40,000 | B4-MAS |  |
| CNHUCV101 |  | Plastering |  | 15d | 2016-10-16 | 2016-11-01 | CNHUCV100, CNHUMP107, CNF04FN30 | 5d | 0d | COST [10000 h]; Helper [120 h]; Mason [240 h] | 10,000 | PLS |  |
| CNHUCV103 |  | Ceiling Finishes |  | 12d | 2016-11-22 | 2016-12-07 | CNF04FN37 FF, CNF04FN37 SS, CNHUMP116 | 21d | 0d | COST [10000 h]; False Ceiling Fixer [192 h] | 10,000 | IDC |  |
| CNHUCV102 |  | Wall Finishes |  | 15d | 2016-12-08 | 2016-12-26 | CNHUCV103, CNF04FN37, CNHUCV101 | 21d | 0d | COST [10000 h]; Helper [120 h]; Mason [120 h] | 10,000 | IDW |  |
| CNHUCV104 |  | Floor Finishes |  | 10d | 2016-12-18 | 2016-12-28 | EN0PSPR25, CNHUCV103 | 52d | 10d | COST [30363 h]; Helper [80 h]; Mason [80 h] | 30,363 | IDF |  |
| CNHUCV105 |  | Doors Shutter |  | 10d | 2017-01-26 | 2017-02-06 | CNHUCV104, CNF04FN42 SS | 29d | 0d | COST [20000 h] | 20,000 | DRI |  |
|  | 2 | **MEP** |  |  | 2016-10-04 | 2017-04-24 |  |  |  |  |  |  |  |
|  | 1 | **1st Fix** |  |  | 2016-10-04 | 2016-10-15 |  |  |  |  |  |  |  |
| CNHUMP100 |  | Civil Clearance To Start 1st Fix | milestone | 0d | 2016-10-04 | 2016-10-04 | CNHUCV100 | 5d | 0d |  |  | MEW | MEP |
| CNHUMP101 |  | Drainage Pipes ( In Walls) |  | 10d | 2016-10-04 | 2016-10-15 | CNHUMP100 | 5d | 0d | COST [4444.2 h]; PLUMBER [80 h] | 4,444.2 | MEW | MEP |
| CNHUMP102 |  | Water Supply Pipes ( In Walls) |  | 10d | 2016-10-04 | 2016-10-15 | CNHUMP100 | 5d | 0d | COST [4444.2 h]; PLUMBER [80 h] | 4,444.2 | MEW | MEP |
| CNHUMP103 |  | Sleeves,Conduites,Gi Box,DB Box In Wall |  | 10d | 2016-10-04 | 2016-10-15 | CNHUMP100 | 5d | 0d | COST [48200.5 h]; ELECTRICIAN [80 h] | 48,200.5 | MEW | MEP |
| CNHUMP107 |  | MEP Clearance To Start Plaster | milestone | 0d | 2016-10-15 | 2016-10-15 | CNHUMP101, CNHUMP102, CNHUMP103 | 5d | 0d |  |  | MEW | MEP |
|  | 2 | **2nd Fix** |  |  | 2016-11-01 | 2016-11-21 |  |  |  |  |  |  |  |
| CNHUMP109 |  | Civil Clearance To Start 2nd Fix | milestone | 0d | 2016-11-01 | 2016-11-01 | CNHUCV101 | 5d | 0d |  |  | MEW | MEP |
| CNHUMP104 |  | Fire Fighting Pipes (Mains/Branches) |  | 10d | 2016-11-02 | 2016-11-13 | CNHUMP109 | 8d | 0d | COST [23525.3 h]; PIPE FITTER [80 h] | 23,525.3 | MEW | MEP |
| CNHUMP105 |  | Ducting Work Including Insulation |  | 10d | 2016-11-02 | 2016-11-13 | CNHUMP100, CNHUMP109 | 8d | 0d | COST [15821.3 h]; DUCTMAN [160 h] | 15,821.3 | MEW | MEP |
| CNHUMP106 |  | Chilled Water Pipes (High L) |  | 10d | 2016-11-02 | 2016-11-13 | CNHUMP109 | 8d | 0d | COST [8943.9 h]; AC TECHNICIAN [80 h] | 8,943.9 | MEW | MEP |
| CNHUMP108 |  | Cable Tray / Trunking |  | 10d | 2016-11-02 | 2016-11-13 | CNHUMP109, CNP03MP11 | 8d | 0d | COST [8938.4 h]; ELECTRICIAN [80 h] | 8,938.4 | MEW | MEP |
| CNHUMP110 |  | Installation of FCUs & Fans |  | 10d | 2016-11-02 | 2016-11-13 | CNHUMP109, CNP03MP22 | 8d | 0d | COST [11554.9 h]; AC TECHNICIAN [80 h] | 11,554.9 | MEW | MEP |
| CNHUMP111 |  | Drainage Pipes (High L) |  | 10d | 2016-11-03 | 2016-11-14 | CNHUMP109 FS+1d, CNHUMP101, CNP03MP18 | 5d | 0d | COST [7599.5 h]; PLUMBER [80 h] | 7,599.5 | MEW | MEP |
| CNHUMP112 |  | Wires |  | 7d | 2016-11-03 | 2016-11-10 | CNHUMP109 FS+1d, CNHUMP103, CNP03MP19 | 13d | 0d | COST [1166.6 h]; ELECTRICIAN [56 h] | 1,166.6 | MEW | MEP |
| CNHUMP113 |  | Water Supply Pipes (High L) |  | 10d | 2016-11-03 | 2016-11-14 | CNHUMP111 FF, CNHUMP102, CNHUMP109, CNP03MP20 | 5d | 0d | COST [6888.5 h]; PLUMBER [80 h] | 6,888.5 | MEW | MEP |
| CNHUMP114 |  | Acoustic Drainage Pipe Insulation |  | 8d | 2016-11-08 | 2016-11-16 | CNHUMP111 FF+2d, CNP03MP26 | 7d | 0d | COST [3444.2 h]; PLUMBER [256 h] | 3,444.2 | MEW | MEP |
| CNHUMP115 |  | Water Heaters Installation&Connection |  | 6d | 2016-11-15 | 2016-11-21 | CNHUMP113, CNHUMP109 | 5d | 0d | COST [558.9 h] | 558.9 | MEW | MEP |
| CNHUMP116 |  | MEP Clearance To Close Health Unit Ceilings | milestone | 0d | 2016-11-21 | 2016-11-21 | CNHUMP113, CNHUMP112, CNHUMP110, CNHUMP111, CNHUMP114, CNHUMP115, CNHUMP105, CNHUMP104, CNHUMP106, CNHUMP108 | 21d | 0d |  |  | MEW | MEP |

| ID | WBS | Activity | Type | Duration | Start | Finish | Predecessors | Total float | Free float | Calendar | Resources | Cost | TYPE OF WORK L4 | CATEGORY OF WORK L3 |
| --- | --- | --- | --- | --- | --- | --- | --- | --- | --- | --- | --- | --- | --- | --- |
|  | 3 | **3rd Fix** |  |  | 2017-02-05 | 2017-04-24 |  |  |  |  |  |  |  |  |
| CNHUMP117 |  | Civil Clearance To Start Final Fix | milestone | 0d | 2017-02-05 | 2017-02-05 | CNHUMP116, CNF04FN42 | 102d | 55d |  |  |  | MEW | MEP |
| CNHUMP125 |  | Vertical Sprinkler Drops |  | 3d | 2017-04-11 | 2017-04-13 | CNHUMP117, CNP03MP10 | 52d | 1d |  | COST [1044.4 h] | 1,044.4 | MEW | MEP |
| CNHUMP118 |  | Hose Reel&Fire Extinguishers & Sprinklers |  | 4d | 2017-04-15 | 2017-04-18 | CNHUMP117, CNP03MP31 | 48d | 0d |  | COST [6666.3 h] | 6,666.3 | MEW | MEP |
| CNHUMP119 |  | Installation of DBS |  | 4d | 2017-04-15 | 2017-04-18 | CNHUMP117, CNP03MP32 | 44d | 0d |  | COST [1777.7 h]; ELECTRICIAN [32 h] | 1,777.7 | MEW | MEP |
| CNHUMP120 |  | Installation of Panels / SmDBS |  | 4d | 2017-04-15 | 2017-04-18 | CNHUMP119 FF, CNP03MP33 | 48d | 0d |  | COST [46476.1 h]; ELECTRICIAN [64 h] | 46,476.1 | MEW | MEP |
| CNHUMP121 |  | Installation of Fire Alarm Panel & Voice Alarm System |  | 4d | 2017-04-15 | 2017-04-18 | CNHUMP117, CNP03MP34 | 48d | 0d |  | COST [4444.2 h]; ELECTRICIAN [32 h] | 4,444.2 | MEW | MEP |
| CNHUMP122 |  | Installation of Light Fitting & E.M Light |  | 4d | 2017-04-15 | 2017-04-18 | CNHUMP117, CNP03MP35 | 48d | 0d |  | COST [4000 h]; ELECTRICIAN [32 h] | 4,000 | LFX | MEP |
| CNHUMP123 |  | Installation of Wiring Accessories |  | 4d | 2017-04-15 | 2017-04-18 | CNHUMP122 FF, CNP03MP36 | 48d | 0d |  | COST [2666.5 h]; ELECTRICIAN [32 h] | 2,666.5 | MEW | MEP |
| CNHUMP124 |  | Installation of Grills&Diffusers |  | 4d | 2017-04-15 | 2017-04-18 | CNHUMP117, CNP03MP37 | 44d | 0d |  | COST [1333.3 h] | 1,333.3 | MEW | MEP |
| CNHUMP126 |  | Installation of Telephone System |  | 4d | 2017-04-19 | 2017-04-24 | CNHUMP119, CNP03MP38 | 44d | 0d |  | COST [1555.5 h]; ELECTRICIAN [64 h] | 1,555.5 | MEW | MEP |
| CNHUMP127 |  | Installation of CCTV System |  | 4d | 2017-04-19 | 2017-04-24 | CNHUMP119, CNP03MP39 | 44d | 0d |  | COST [2277.6 h]; ELECTRICIAN [32 h] | 2,277.6 | MEW | MEP |
| CNHUMP128 |  | Thermostat Fixing |  | 4d | 2017-04-19 | 2017-04-24 | CNHUMP124, CNP03MP40 | 44d | 0d |  | COST [944.4 h]; ELECTRICIAN [32 h] | 944.4 | MEW | MEP |
| CNHUMP129 |  | MEP Final Fix Clearance | milestone | 0d | 2017-04-24 | 2017-04-24 | CNHUMP127, CNHUMP123, CNHUMP124, CNHUMP128, CNHUMP126, CNHUMP122, CNHUMP118, CNHUMP121, CNHUMP120, CNHUMP119, CNHUMP125, CNP03MP41 | 94d | 4d |  |  |  | MEW | MEP |
|  | 3 | **Sauna, Steam and Equipment** |  |  | 2017-07-03 | 2017-07-25 |  |  |  |  |  |  |  |  |
| CNHUGR100 |  | Steam |  | 20d | 2017-07-03 | 2017-07-25 | CNHUMP129, EN0PSRA25, EN0PSPR27 FS+14d | 37d |  |  | COST [74100 h] | 74,100 | STN |  |
| CNHUGR101 |  | Gym Equipment |  | 20d | 2017-07-03 | 2017-07-25 | CNHUMP129, EN0PSPR26 FS+14d | 37d |  |  | COST |  |  |  |
| CNHUGR102 |  | Sauna |  | 20d | 2017-07-03 | 2017-07-25 | CNHUMP129, EN0PSRA26, EN0PSPR28 FS+14d | 37d |  |  | COST [74100 h] | 74,100 | STN |  |
|  | 1.2 | **Authorities Approvals & NOC'S** |  |  | 2016-01-20 | 2017-10-15 |  |  |  |  |  |  |  |  |
|  | 01 | **DEWA** |  |  | 2016-01-20 | 2017-09-07 |  |  |  |  |  |  |  |  |
|  | 1 | **Power** |  |  | 2016-01-20 | 2017-09-07 |  |  |  |  |  |  |  |  |
| ATDEW1000 |  | Receive DEWA Approved Design Drawings/NOC |  | 7d | 2016-01-20 | 2016-01-28 | GRKDS1010 | 48d | 0d | DM/Authority Calendar |  |  |  |  |
| ATDEW1020 |  | Receive DEWA Issued Substation,RMU Layout |  | 14d | 2016-01-31 | 2016-02-17 | ATDEW1000 | 83d | 0d | DM/Authority Calendar |  |  |  |  |
| ATDEW1021 |  | Receive DEWA Approval of LV Room Location |  | 14d | 2016-01-31 | 2016-02-17 | ATDEW1000, ATDEW1000 FF | 48d |  | DM/Authority Calendar |  |  |  |  |
| ATDEW1030 |  | Receive DEWA Approval of Substation Location |  | 14d | 2016-02-18 | 2016-03-08 | ATDEW1020 | 83d | 0d | DM/Authority Calendar |  |  |  |  |
| ATDEW1080 |  | DEWA Approval for Project Detailed Drawings&Load Schedule |  | 30d | 2016-03-09 | 2016-04-19 | ATDEW1030 | 92d | 89d | DM/Authority Calendar |  |  |  |  |
| ATDEW1110 |  | Completion of Civil Works for Sub-Station | milestone | 0d | 2016-08-25 | 2016-08-25 | CNGF0FN82, CNGF0FN79, ATDEW1080 FF | 3d | 0d | DM/Authority Calendar |  |  |  |  |
| ATDEW1120 |  | Inspection & Approval of Sub-Station By DEWA |  | 7d | 2016-08-28 | 2016-09-05 | ATDEW1080, ATDEW1110, ATDEW1030 | 3d | 0d | DM/Authority Calendar |  |  |  |  |
| ATDEW1130 |  | Receive Estimate From DEWA |  | 15d | 2016-09-06 | 2016-09-28 | ATDEW1110, ATDEW1080, ATDEW1120 | 3d | 0d | DM/Authority Calendar |  |  |  |  |
| ATDEW1140 |  | Payment of Power Estimate |  | 5d | 2016-09-29 | 2016-10-06 | ATDEW1130 | 3d | 0d | DM/Authority Calendar |  |  |  |  |
| ATDEW1150 |  | Transformer and Cable Supply By DEWA |  | 220d | 2016-10-09 | 2017-08-17 | ATDEW1110, ATDEW1140, ATDEW1021 | 3d | 0d | DM/Authority Calendar |  |  |  |  |
| ATDEW1180 |  | Transformer and Cable Installation By DEWA |  | 10d | 2017-08-20 | 2017-09-05 | ATDEW1110, ATDEW1150 | 3d | 0d | DM/Authority Calendar |  |  |  |  |
| ATDEW1190 |  | Inspection & Approval of Electrical Installation |  | 2d | 2017-09-06 | 2017-09-07 | GREQPMP18, GREQPMP20, ATDEW1150, GREQPMP22, GREQPMP15, ATDEW1180, GREQPMP13, GREQPMP21 | 9d | 0d | DM/Authority Calendar |  |  |  |  |

| ID | WBS | Activity | Type | Duration | Start | Finish | Predecessors | Total float | Free float | Calendar |
| --- | --- | --- | --- | --- | --- | --- | --- | --- | --- | --- |
|  | 02 | **Water Supply** |  |  | 2016-01-20 | 2017-09-06 |  |  |  |  |
| ATDEW1010 |  | Receive DEWA Approved Design Drawings / NOC |  | 7d | 2016-01-20 | 2016-01-28 | GRKDS1010 | 65d | 47d | DM/Authority Calendar |
| ATDEW1100 |  | Registration With DEWA For Estimate |  | 21d | 2017-01-11 | 2017-02-08 | CNF15CW20, ATDEW1010 | 38d | 0d | DM/Authority Calendar |
| ATDEW1160 |  | DEWA Estimate - Water |  | 120d | 2017-02-09 | 2017-07-30 | ATDEW1100 | 38d | 0d | DM/Authority Calendar |
| ATDEW1220 |  | Water Supply Network And Valve Chamber Installation By DEWA |  | 20d | 2017-06-05 | 2017-07-04 | CNEXWLS11, CNEXWLS16 | 59d | 0d | DM/Authority Calendar |
| ATDEW1230 |  | DEWA Inspection & Approval of Water Supply Installation |  | 2d | 2017-07-05 | 2017-07-06 | ATDEW1220, GREQPMP23, GREQPMP14 | 59d | 21d | DM/Authority Calendar |
| ATDEW1170 |  | Payment of Water Estimate By Client |  | 5d | 2017-07-31 | 2017-08-06 | ATDEW1160, ATDEW1100 | 38d | 0d | DM/Authority Calendar |
| ATDEW1240 |  | Supply & Installation of Water Meter By DEWA |  | 20d | 2017-08-07 | 2017-09-06 | ATDEW1170, ATDEW1230 | 38d | 7d | DM/Authority Calendar |
|  | 03 | **Dubai Civil Defense** |  |  | 2016-01-20 | 2017-10-05 |  |  |  |  |
| ATDCD1000 |  | Receive of Design Approval From DCD |  | 7d | 2016-01-20 | 2016-01-28 | GRKDS1010 | 10d | 0d | DM/Authority Calendar |
| ATDCD1010 |  | Submission of Shop Drawings To DCD |  | 14d | 2016-01-31 | 2016-02-17 | ATDCD1000 | 10d | 0d | DM/Authority Calendar |
| ATDCD1020 |  | DCD Approval of Project Detailed Drawings |  | 30d | 2016-02-18 | 2016-03-30 | ATDCD1010 | 10d |  | DM/Authority Calendar |
| ATDCD1030 |  | Apply for DCD Completion Certificate | milestone | 0d | 2017-09-10 | 2017-09-10 | CNEXWLS11, CNEXWLS15, TS1000000112, CNF04FN46, CNF05FN45, CNF06FN45, CNF07FN45, CNF08FN45, CNF09FN45, CNF10FN45, CNF11FN45, CNF12FN45, CNF13FN45, CNF14FN45, CNF15FN45, CNF16FN45, CNF17FN39, CNF18FN39, CNF19FN39, CNFCGE414 FS+7d, CNFCTE430 FS+7d, CNSPECS12, CNGF0FN201, CNGF0FN150, CNEXWLV104, CNEXWLO115, CNEXWLO28, GRIMS1030, GRIMS1040, GREQPMP10, GREQPMP11, GREQPMP12, CNF19FN99, CNF18FN99, CNF17FN99, CNF16FN11, CNF15FN11, CNF14FN11, CNF13FN11, CNF12FN11, CNF11FN11, CNF10FN11, CNF09FN11, CNF08FN11, CNF07FN11, CNF06FN11, CNF05FN11, CNF04FN37, CNEXWLV57, CNEXWLV53, CNEXWLO113, CNEXWLO120, CNEXWLO111, CNEXWLO52, CNEXWLO40, CNEXWLO75, CNEXWLO84, CNEXWLO69, CNEXWLO108, CNEXWLO90, CNEXWLO101, CNEXWLO105, CNEXWLO99, CNEXWLO94, CNEXWLO32, CNEXWLO117, CNF04FN43, CNF05FN42, CNF06FN42, CNF07FN42, CNF08FN42, CNF09FN42, CNF10FN42, CNF11FN42, CNF12FN42, CNF13FN42, CNF14FN42, CNF15FN42, CNF16FN42, CNF17FN32, CNF18FN32, CNF19FN32, GRIMS1060, CNF04FN47, CNGF0FN48, CNF05FN44, CNF06FN44, CNF07FN44, CNF08FN44, CNF09FN44, CNF10FN44, CNF11FN44, CNF12FN44, CNF13FN44, CNF14FN44, CNF15FN44, CNF16FN44, CNF17FN38, CNF18FN38, CNF19FN38, CNF19FN98, CNF18FN98, CNF17FN98, CNF16FN99, CNF15FN99, CNF14FN99, CNF13FN99, CNF12FN99, CNF11FN99, CNF10FN99, CNF09FN99, CNF08FN99, CNF07FN99, CNF06FN99, CNF05FN99, CNF04FN99, CNP03FN99, CNP02FN99, CNP01FN99, CNGF0FN99, CNROFFN17, CNROFFN23, CNF12FN26, CNF12FN37, CNF12MP41, CNF13FN50, CNF13FN26, CNF13FN37, CNF13MP41, CNF14FN39, CNF14FN50, CNF14FN26, CNF14FN37, CNF14MP41, CNF15FN50, CNF15FN26, CNF15FN37, CNF15MP41, CNF16FN39, CNF16FN50, CNF16FN34, CNF16FN26, CNF16FN37, CNF16MP41, CNF04FN50, CNP01FN55, CNGF0FN10, CNGF0FN44, CNGF0FN37, CNGF0FN20, CNGF0FN22, CNGF0FN23, CNGF0FN24, CNGF0FN25, CNGF0FN26, CNGF0FN27, CNP01FN30, CNP01FN20, CNF04FN16, CNF04FN20, CNGF0FN28, CNF04MP41, CNF05FN50, CNF05FN26, CNF05FN37, CNF05MP41, CNF06FN50, CNF06FN26, CNF06FN37, CNF06MP41, CNF07FN50, CNF07FN26, CNF07FN37, CNF07MP41, CNF08FN39, CNF08FN50, CNF08FN26, CNF08FN37, CNF08MP41, CNF09FN50, CNF09FN26, CNF09FN37, CNF09MP41, CNF10FN50, CNF10FN26, CNF10FN37, CNF10MP41, CNF11FN50, CNF11FN26, CNF11FN37, CNF11MP41, CNF12FN50, CNP02FN19, CNP02FN29, CNP02FN30, CNP02FN31, CNP02FN17, CNP02FN13, CNP03FN19, CNP03FN29, CNP03FN30, CNP03FN31, CNP03FN17, CNP03FN13, CNGF0FN90, CNP01MP41, CNP02MP41, CNP03MP41, CNHUCV105, CNHUGR100, CNHUGR101, CNHUGR102, CNSPEKE10, CNF17FN37, CNF17FN47, CNF17FN35, CNF17FN46, CNF17MP41, CNF18FN37, CNF18FN47, CNF18FN35, CNF18FN46, CNF18MP41, CNF19FN37, CNF19FN47 FF, CNF19FN30, CNF19FN35, CNF19FN46, CNF19MP41, ATDEW1180, CNSPELS10, CNROFMP16, CNROFMP19, CNROFMP17, CNROFMP20, CNROFMP18, CNF04FN48, CNF05FN47, CNF06FN47, CNF07FN47, CNF08FN47, CNF09FN47, CNF10FN47, CNF11FN47, CNF12FN47, CNF13FN47, CNF14FN47, CNF15FN47, CNF16FN47, CNF17FN43, CNF18FN43, CNF19FN43, CNGF0FN84, CNGF0FN49, CNGF0MP61, CNGF0FN83, CNFCWE118, CNSPEGC11, GREQPMP17, GREQPMP16, CNEXWLS24, CNEXWLS10, CNROFUR17, ENCMSPR52, CNGF0FN57, CNF19FN45 | 0d |  | 7-Day work |
| ATDCD1022 |  | DCD Inspection | milestone | 0d | 2017-09-17 | 2017-09-17 | ATDCD1030 FF+7d | 0d |  | DM/Authority Calendar |
| ATDCD1023 |  | DCD Re-inspection | milestone | 0d | 2017-09-24 | 2017-09-24 | ATDCD1022 FF+5d | 0d |  | DM/Authority Calendar |
| ATDCD1024 |  | Apply for Temporary Connection | milestone | 0d | 2017-09-28 | 2017-09-28 | GRKDS1050 FS+1d | 0d |  | DM/Authority Calendar |
| ATDCD1025 |  | Connecting Full Power | milestone | 0d | 2017-10-05 | 2017-10-05 | ATDCD1024 FS+5d | 0d |  | DM/Authority Calendar |
|  | 1 | **TECOM** |  |  | 2017-10-04 | 2017-10-15 |  |  |  |  |
| ATDCD1040 |  | Apply for TECOM Completion Certificate | milestone | 0d | 2017-10-04 | 2017-10-04 | GRKDS1050 FS+7d | 16d | 0d | DM/Authority Calendar |
| ATDCD1041 |  | TECOM Inspection | milestone | 0d | 2017-10-11 | 2017-10-11 | ATDCD1040 FS+5d | 16d | 0d | DM/Authority Calendar |
| ATDCD1042 |  | TECOM Re-inspection | milestone | 0d | 2017-10-15 | 2017-10-15 | ATDCD1041 FS+2d | 16d | 0d | DM/Authority Calendar |
|  | 05 | **Dubai Municipality** |  |  | 2016-01-20 | 2017-09-17 |  |  |  |  |
| AT0DM1000 |  | Receive of DM NOC For Drainage |  | 5d | 2016-01-20 | 2016-01-26 | GRKDS1010 | 56d |  | DM/Authority Calendar |
| AT0DM1010 |  | FIC Installation |  | 5d | 2017-06-05 | 2017-06-11 | CNEXWLS16, AT0DM1000, EN0PSRA68, EN0PSRA69, EN0PSRA70, EN0PSRA71 | 89d | 0d | DM/Authority Calendar |
| AT0DM1020 |  | DM Inspection & Approval of FIC |  | 4d | 2017-06-12 | 2017-06-15 | AT0DM1010 | 89d | 56d | DM/Authority Calendar |
| AT0DM1030 |  | FIC Conn. To The External Network By DM |  | 5d | 2017-09-11 | 2017-09-17 | ATDCD1030, AT0DM1020 | 33d | 0d | DM/Authority Calendar |

| ID | WBS | Activity | Type | Duration | Start | Finish | Predecessors | Total float | Free float | Calendar | Resources |
| --- | --- | --- | --- | --- | --- | --- | --- | --- | --- | --- | --- |
|  | 04 | **Service Providers** |  |  | 2016-01-20 | 2017-10-05 |  |  |  |  |  |
|  | 1 | **DU -TELECOM** |  |  | 2016-01-20 | 2017-10-05 |  |  |  |  |  |
| AT0SP1020 |  | Preperation & Submission of Shop Drawings |  | 14d | 2016-01-20 | 2016-02-08 | GRKDS1010 | 17d | 0d | DM/Authority Calendar |  |
| AT0SP1050 |  | DU Approval of Shop Drawings / Materials |  | 30d | 2016-02-09 | 2016-03-21 | AT0SP1020 | 17d |  | DM/Authority Calendar |  |
| AT0SP1120 |  | DU Inspection of Installation |  | 10d | 2017-06-05 | 2017-06-18 | AT0SP1050, CNEXWLS16 | 63d | 55d | DM/Authority Calendar |  |
| AT0SP1140 |  | Installation of MDF Panels & Main Cable By DU |  | 12d | 2017-09-11 | 2017-09-26 | ATDEW1150, AT0SP1120, AT0SP1050, GRKDS1040, ATDEW1190, ATDCD1030 | 8d | 0d | DM/Authority Calendar |  |
| AT0SP1150 |  | Final Commissioning of MDF Panels By DU |  | 7d | 2017-09-27 | 2017-10-05 | AT0SP1120, AT0SP1140 | 8d | 0d | DM/Authority Calendar |  |
|  | 06 | **EMPOWER** |  |  | 2016-01-20 | 2017-10-03 |  |  |  |  |  |
| AT0SP1000 |  | Design NOC For ETS Room |  | 15d | 2016-01-20 | 2016-02-09 | GRKDS1010 | 29d | 0d | DM/Authority Calendar |  |
| AT0SP1030 |  | Signing Agreement With Empower By Client |  | 7d | 2016-02-10 | 2016-02-18 | AT0SP1000 | 29d | 0d | DM/Authority Calendar |  |
| AT0SP1040 |  | Construction NOC For ETS Room After Client Agreement |  | 10d | 2016-02-21 | 2016-03-03 | AT0SP1030, AT0SP1000 | 29d |  | DM/Authority Calendar |  |
| AT0SP1060 |  | Completion of ETS Room | milestone | 0d | 2016-08-30 | 2016-08-30 | AT0SP1040, CNGF0FN79, CNGF0FN50, CNGF0FN51, CNGF0FN52, CNGF0FN65, CNGF0FN66, CNGF0FN25, CNGF0FN26, CNGF0FN27 | 21d | 0d | DM/Authority Calendar |  |
| AT0SP1070 |  | Inspection / Approval of ETS Room By Empower |  | 14d | 2016-08-31 | 2016-09-21 | AT0SP1060 | 21d | 0d | DM/Authority Calendar |  |
| AT0SP1080 |  | Delivery / Installation of Empower's Primary System |  | 200d | 2016-09-22 | 2017-07-06 | AT0SP1070 | 21d | 0d | DM/Authority Calendar |  |
| AT0SP1090 |  | Valve Chamber Connections |  | 20d | 2017-07-09 | 2017-08-03 | AT0SP1080 | 21d | 0d | DM/Authority Calendar |  |
| AT0SP1110 |  | Empower Inspection ( ETS Room) |  | 14d | 2017-08-06 | 2017-08-23 | AT0SP1090, GREQPMP11, AT0SP1080, GREQPMP12 | 21d | 0d | DM/Authority Calendar |  |
| AT0SP1010 |  | Flushing and Cleaning with Clean Water |  | 7d | 2017-08-24 | 2017-09-06 | ATDEW1150, AT0SP1110 | 21d | 0d | DM/Authority Calendar |  |
| AT0SP1011 |  | Flushing and Cleaning with Cleaning Chemicals |  | 7d | 2017-09-07 | 2017-09-17 | AT0SP1010 | 21d | 0d | DM/Authority Calendar |  |
| AT0SP1012 |  | Addition of Corrosion and scale inhibitors |  | 7d | 2017-09-18 | 2017-09-26 | AT0SP1011 | 21d | 0d | DM/Authority Calendar |  |
| AT0SP1015 |  | Install Meter |  | 3d | 2017-09-27 | 2017-10-01 | AT0SP1012 | 21d | 0d | DM/Authority Calendar |  |
| AT0SP1130 |  | Chilled Water Connection ( By Empower) |  | 2d | 2017-10-02 | 2017-10-03 | AT0SP1015, ATDEW1150, AT0SP1060, AT0SP1090, AT0SP1110, ATDEW1240, GRKDS1040, ATDEW1190, ATDCD1030 | 21d | 0d | DM/Authority Calendar |  |
|  | 1.6 | **Snagging, De-Snagging and Testing & Commissioning** |  |  | 2017-08-06 | 2017-11-02 |  |  |  |  |  |
| TS1000000112 |  | Progress Testing And Commissioning |  | 25d | 2017-08-06 | 2017-08-30 | CNF17MP41, CNF17FN40 | 11d |  | 7-Day work |  |
| DSNG00000011 |  | Snagging |  | 50d | 2017-08-08 | 2017-10-19 | CNF17FN39 | 5d | 0d | The Employer Calendar |  |
| SNG000000111 |  | De-Snagging |  | 70d | 2017-08-10 | 2017-11-02 | DSNG00000011 FF+2d, DSNG00000011 SS+2d | 6d | 0d |  | Helper [11200 h] |
| TS1000000111 |  | Testing And Commissioning |  | 25d | 2017-10-06 | 2017-10-30 | ATDCD1025, GRKDS1040, ATDEW1190, ATDCD1030 | 0d |  | 7-Day work |  |

| ID | WBS | Activity | Duration | Start | Finish | Predecessors | Total float | Free float | Calendar | Resources | Cost | TYPE OF WORK L4 |
| --- | --- | --- | --- | --- | --- | --- | --- | --- | --- | --- | --- | --- |
|  | 1.2.4 | **Handing Over** |  | 2017-09-11 | 2017-11-09 |  |  |  |  |  |  |  |
|  | 1 | **Handing Over Documents** |  | 2017-09-24 | 2017-11-09 |  |  |  |  |  |  |  |
|  | 1.2.4.3 | **CIVIL WORK** |  | 2017-10-14 | 2017-10-21 |  |  |  |  |  |  |  |
| HODOCCV10 |  | Testing And Commissioning Report | 7d | 2017-10-14 | 2017-10-21 | CNGF0FN23 FF+2d, CNGF0FN29 FF+2d, ATDCD1030 FF+2d, ENCMSPR53 FF+2d, CNEXWLV52 FF+2d, GRIMS1030 FF+32d, GRIMS1040 FF+32d, CNEXWLO22 FF+32d, CNEXWLO28 FF+30d, CNEXWLO39 FF+28d, CNEXWLO55 FF+26d, CNEXWLO68 FF+24d, CNEXWLO77 FF+22d, CNEXWLO86 FF+20d, CNEXWLO92 FF+18d, CNEXWLO93 FF+16d, CNEXWLO98 FF+14d, CNEXWLO103 FF+12d, CNEXWLO104 FF+10d, CNEXWLO107 FF+8d, CNEXWLO110 FF+6d, CNEXWLO115 FF+4d, CNEXWLO116 FF+2d, CNEXWLV57 FF+2d, CNFCTE117 FF+2d, CNGF0FN16 FF+2d, CNGF0FN57 FF+2d, CNGF0FN84 FF+2d, CNGF0FN40 FF+2d, CNGF0FN73 FF+2d, CNGF0FN83 FF+2d, CNEXWLV54 FF+2d, CNEXWLV51 FF+2d, CNEXWLV53 FF+2d, CNGF0FN43 FF+2d, CNGF0FN49 FF+2d, CNGF0FN39 FF+2d, CNEXWLV58 FF+2d, CNFCWE117 FF+2d, CNFCWE118 FF+2d, CNGF0FN48 FF+2d, CNGF0FN82 FF+2d, CNGF0FN42 FF+2d, CNROFUR17 FF+2d, CNEXWLS20 FF+22d, CNEXWLS17 FF+22d, CNEXWLS10 FF+22d, CNGF0FN33 FF+2d, CNGF0FN36 FF+2d, CNGF0FN38 FF+2d | 17d |  |  |  |  |  |
| HODOCCV11 |  | As Built Drawing | 7d | 2017-10-14 | 2017-10-21 | CNGF0FN23 FF+2d, CNGF0FN29 FF+2d, ATDCD1030 FF+2d, ENCMSPR53 FF+2d, CNEXWLV52 FF+2d, GRIMS1030 FF+32d, GRIMS1040 FF+32d, CNEXWLO22 FF+32d, CNEXWLO28 FF+30d, CNEXWLO39 FF+28d, CNEXWLO55 FF+26d, CNEXWLO68 FF+24d, CNEXWLO77 FF+22d, CNEXWLO86 FF+20d, CNEXWLO92 FF+18d, CNEXWLO93 FF+16d, CNEXWLO98 FF+14d, CNEXWLO103 FF+12d, CNEXWLO104 FF+10d, CNEXWLO107 FF+8d, CNEXWLO110 FF+6d, CNEXWLO115 FF+4d, CNEXWLO116 FF+2d, CNEXWLV57 FF+2d, CNFCTE117 FF+2d, CNGF0FN16 FF+2d, CNGF0FN57 FF+2d, CNGF0FN84 FF+2d, CNGF0FN40 FF+2d, CNGF0FN73 FF+2d, CNGF0FN83 FF+2d, CNEXWLV54 FF+2d, CNEXWLV51 FF+2d, CNEXWLV53 FF+2d, CNGF0FN43 FF+2d, CNGF0FN49 FF+2d, CNGF0FN39 FF+2d, CNEXWLV58 FF+2d, CNFCWE117 FF+2d, CNFCWE118 FF+2d, CNGF0FN48 FF+2d, CNGF0FN82 FF+2d, CNGF0FN42 FF+2d, CNROFUR17 FF+2d, CNEXWLS20 FF+22d, CNEXWLS17 FF+22d, CNEXWLS10 FF+22d, CNGF0FN33 FF+2d, CNGF0FN36 FF+2d, CNGF0FN38 FF+2d | 17d |  |  | COST [5000 h] | 5,000 | B1-GNR |
|  | 1.2.4.4 | **MEP WORK** |  | 2017-09-24 | 2017-11-09 |  |  |  |  |  |  |  |
| HODOCMP10 |  | As Built Drawing | 16d | 2017-09-24 | 2017-10-11 | ATDCD1030 FF+6d, ATDEW1240 FF+6d, CNEXWLS16 FF+6d, CNGF0MP61 FF+6d, GREQPMP28 FF+6d, GREQPMP16 FF+6d, CNGF0MP73 FF+6d, GREQPMP23 FF+6d, GREQPMP14 FF+6d, CNROFMP15 FF+6d, AT0DM1030 FF+6d, ATDEW1150 FF+6d, GREQPMP22 FF+6d, GREQPMP18 FF+6d, GREQPMP20 FF+6d, GREQPMP13 FF+6d, GREQPMP15 FF+6d, GREQPMP21 FF+6d, GREQPMP10 FF+6d, GREQPMP11 FF+6d, AT0SP1130 FF+6d, GREQPMP12 FF+6d, GRKDS1040 FF+6d, ATDEW1190 FF+6d | 25d |  |  | COST [5000 h] | 5,000 | B1-GNR |
| HODOCMP20 |  | Testing And Commissioning Report | 9d | 2017-10-31 | 2017-11-09 | ATDCD1030 FF+6d, TS1000000111 | 0d |  |  |  |  |  |
|  | 3 | **Furniture** |  | 2017-09-11 | 2017-09-20 |  |  |  |  |  |  |  |
| HODOCFR10 |  | Delivery of Employer's Furniture | 10d | 2017-09-11 | 2017-09-20 | ATDCD1030 | 50d | 0d | 7-Day work |  |  |  |
|  | 2 | **General Cleaning and Handover** |  | 2017-10-07 | 2017-10-29 |  |  |  |  |  |  |  |
| HODOCCL10 |  | General Cleaning & Handover | 20d | 2017-10-07 | 2017-10-29 | AT0SP1150, CNROFUR16, CNP01FN105, CNGF0FN45, CNGF0FN42, CNGF0FN38, ATDCD1030, ATDEW1180, CNGF0FN23 FS+2d, CNGF0FN29 FS+2d, ENCMSPR53 FS+2d, CNEXWLV52 FS+2d, GRIMS1030 FS+32d, GRIMS1040 FS+32d, CNEXWLO22 FS+32d, CNEXWLO28 FS+30d, CNEXWLO39 FS+28d, CNEXWLO55 FS+26d, CNEXWLO68 FS+24d, CNEXWLO77 FS+22d, CNEXWLO86 FS+20d, CNEXWLO92 FS+18d, CNEXWLO93 FS+16d, CNEXWLO98 FS+14d, CNEXWLO103 FS+12d, CNEXWLO104 FS+10d, CNEXWLO107 FS+8d, CNEXWLO110 FS+6d, CNEXWLO115 FS+4d, CNEXWLO116 FS+2d, CNEXWLV57 FS+2d, CNFCTE117 FS+2d, CNGF0FN16 FS+2d, CNGF0FN57 FS+2d, CNGF0FN84 FS+2d, CNGF0FN40 FS+2d, CNGF0FN73 FF+2d, CNGF0FN83 FS+2d, CNEXWLV54 FS+2d, CNEXWLV51 FS+2d, CNEXWLV53 FS+2d, CNGF0FN43 FS+2d, CNGF0FN49 FS+2d, CNGF0FN39 FS+2d, CNEXWLV58 FS+2d, CNFCWE117 FS+2d, CNFCWE118 FS+2d, CNGF0FN48 FS+2d, CNGF0FN82 FS+2d, CNROFUR17 FS+2d, CNEXWLS20 FS+22d, CNEXWLS17 FS+22d, CNEXWLS10 FS+22d, CNGF0FN33 FS+2d, CNGF0FN36 FS+2d, ATDCD1030 FF+6d, ATDEW1240 FF+6d, CNEXWLS16 FF+6d, CNGF0MP61 FF+6d, GREQPMP28 FF+6d, GREQPMP16 FF+6d, CNGF0MP73 FF+6d, GREQPMP23 FF+6d, GREQPMP14 FF+6d, CNROFMP15 FF+6d, AT0DM1030 FF+6d, ATDEW1150 FF, GREQPMP22 FF, GREQPMP18 FF, GREQPMP20 FF, GREQPMP13 FF, GREQPMP15 FF, GREQPMP21 FF, GREQPMP10 FF+6d, GREQPMP11 FF+6d, AT0SP1130 FF+6d, GREQPMP12 FF+6d, GRKDS1040, ATDEW1190 | 10d |  |  | COST [150000 h] | 150,000 | B1-GNR |

## Activity codes

| Code | Value | Meaning |
| --- | --- | --- |
| CATEGORY OF WORK L3 | CON | Concrete |
| CATEGORY OF WORK L3 | FNS | Finishes |
| FLOOR L2 | F04 | Floor 04 |
| FLOOR L2 | F05 | Floor 05 |
| FLOOR L2 | F06 | Floor 06 |
| FLOOR L2 | F07 | Floor 07 |
| FLOOR L2 | F08 | Floor 08 |
| FLOOR L2 | F09 | Floor 09 |
| FLOOR L2 | F10 | Floor 10 |
| FLOOR L2 | F11 | Floor 11 |
| FLOOR L2 | F12 | Floor 12 |
| FLOOR L2 | F13 | Floor 13 |
| FLOOR L2 | F14 | Floor 14 |
| FLOOR L2 | F15 | Floor 15 |
| FLOOR L2 | F16 | Floor 16 |
| FLOOR L2 | F17 | Floor 17 |
| FLOOR L2 | F18 | Floor 18 |
| FLOOR L2 | F19 | Floor 19 |
| FLOOR L2 | GF | Ground Floor |
| FLOOR L2 | LOA | Leave Out Area |
| FLOOR L2 | P01 | Podium 1 |
| FLOOR L2 | P02 | Podium 2 |
| FLOOR L2 | P03 | Podium 3 |
| FLOOR L2 | ROF | Roof |
| TYPE OF WORK L4 | ALD | Aluminium Doors |
| TYPE OF WORK L4 | ALM | Aluminium & Glazing Works |
| TYPE OF WORK L4 | APD | Apartment Doors |
| TYPE OF WORK L4 | B1-GNR | Preliminaries |
| TYPE OF WORK L4 | B2-SWP | Site Work And Preparation |
| TYPE OF WORK L4 | B4-MAS | Masonry |
| TYPE OF WORK L4 | B5-MTW | Metal Works |
| TYPE OF WORK L4 | B6-WDR | Wood Works |
| TYPE OF WORK L4 | BCP | Balconies Ceiling Plaster |
| TYPE OF WORK L4 | BLP | Balconies Ceiling Paint |
| TYPE OF WORK L4 | CPN | Ceiling Paint |
| TYPE OF WORK L4 | CPR | Car Park Accessories |
| TYPE OF WORK L4 | CRB | Anti Carbonation Paint For Walls |
| TYPE OF WORK L4 | CVN | Lifts / Conveying System |
| TYPE OF WORK L4 | CWT | False Ceiling Wet |
| TYPE OF WORK L4 | DEC | Decorations |
| TYPE OF WORK L4 | DMS | Top Signage |
| TYPE OF WORK L4 | DRI | Doors Ironmongeries |
| TYPE OF WORK L4 | EPC | Ceiling Epoxy Paint |
| TYPE OF WORK L4 | EPF | Floor Epoxy Paint |
| TYPE OF WORK L4 | FCD | Facade Lighting System |
| TYPE OF WORK L4 | FLB | Floor Tiles For Balconies |
| TYPE OF WORK L4 | FLW | Floor Tiles For Wet Area |
| TYPE OF WORK L4 | GBR | Gate Barrier |
| TYPE OF WORK L4 | GRB | Garbage Chute |
| TYPE OF WORK L4 | GYP | Gypsum Dry Area |
| TYPE OF WORK L4 | IDC | ID Works for Ceiling |
| TYPE OF WORK L4 | IDF | ID Works for Floor |
| TYPE OF WORK L4 | IDR | ID Works for Carpet |
| TYPE OF WORK L4 | IDW | ID Works for Wall |
| TYPE OF WORK L4 | KCB | Kitchen Cabinet |
| TYPE OF WORK L4 | LDS | Hard And Soft Landscaping |
| TYPE OF WORK L4 | LFX | Light Fixtures |
| TYPE OF WORK L4 | MEW | MEP Works |
| TYPE OF WORK L4 | MKN | Main Kitchen |
| TYPE OF WORK L4 | MRA | Mirrors & Accessories |
| TYPE OF WORK L4 | PFC | Paint Final Coat |
| TYPE OF WORK L4 | PLS | Plastering |
| TYPE OF WORK L4 | PNT | Emulsion Paint For Apartments Walls |
| TYPE OF WORK L4 | RFC | Slab Reinforced Concrete |
| TYPE OF WORK L4 | RFT | Columns Steel Reinforcement |
| TYPE OF WORK L4 | SGN | Signages |
| TYPE OF WORK L4 | SRD | Service Room Doors |
| TYPE OF WORK L4 | SRW | Service Rooms Wall paint |
| TYPE OF WORK L4 | STD | Steel Doors |
| TYPE OF WORK L4 | STN | Steam & Sauna |
| TYPE OF WORK L4 | STR | Columns Shuttering |
| TYPE OF WORK L4 | SWR | Sanitaryware & Accessories |
| TYPE OF WORK L4 | TAP | Floor Tiles For Dry Area |
| TYPE OF WORK L4 | TBH | Tiles For BOH |
| TYPE OF WORK L4 | THI | Thermal Insulation |
| TYPE OF WORK L4 | THR | Thresholds |
| TYPE OF WORK L4 | URF | Slab Unreinforced Concrete |
| TYPE OF WORK L4 | VNC | Vanity Counter |
| TYPE OF WORK L4 | WLW | Wall Tiles For Wet Area |
| TYPE OF WORK L4 | WPR | Water Proofing |
| TYPE OF WORK L4 | WRD | Wardrobes |
| TYPE OF WORK L4 | bth | Bathtubs |
| ZONE L1 | GFP | Ground Floor and Podiums |
| ZONE L1 | SUB | Sub-Structure |
| ZONE L1 | TWR | Tower |
